# CNTT20261_N01 — QL hàng hóa & kho thời trang

Schedule from MS Project, 2026-09-01 to 2027-03-30, costs in ₫.
Xay dung he thong quan ly hang hoa va kho bai san
HUST SOICT
Dự án phần mềm quy mô vừa. Chủ đầu tư: DN thời trang được khảo sát. Ngân sách 408.196.650 VND. 5 thành viên, 07 tháng.

## Calendars

- Standard: Mon-Fri 08:00-12:00, 13:00-17:00; Sat-Sun off.

## Resources

| Resource | Group | Rate | Notes |
| --- | --- | --- | --- |
| Bùi Tuấn Anh | Nhóm 1 | 237188 | Chủ nhiệm / Giám đốc dự án / Định mức 1.897.500 VND/ngày công (lương cơ sở 2.530.000). |
| Bùi Quốc Luýt | Nhóm 1 | 142312 | Trưởng nhóm kỹ thuật / Back-end / Định mức 1.138.500 VND/ngày công (lương cơ sở 2.530.000). |
| Vũ Quang Minh | Nhóm 1 | 142312 | Thành viên chính / Back-end / Định mức 1.138.500 VND/ngày công (lương cơ sở 2.530.000). |
| Bạch Minh Quang | Nhóm 1 | 142312 | Thành viên chính / UI-UX. Front-end / Định mức 1.138.500 VND/ngày công (lương cơ sở 2.530.000). |
| Phạm Đoàn Bảo Thiên | Nhóm 1 | 142312 | Thành viên chính / CSDL. Kiểm thử / Định mức 1.138.500 VND/ngày công (lương cơ sở 2.530.000). |

## Schedule

| ID | WBS | Task | Duration | Start | Finish | Predecessors | Total slack | Free slack | Constraint | Resources | Work | Cost |
| --- | --- | --- | --- | --- | --- | --- | --- | --- | --- | --- | --- | --- |
| 1 | 1 | **A. Khảo sát & yêu cầu** | 17.78d | 2026-09-01 | 2026-09-24 |  | 46.16d |  |  |  | 217.07h | 49,714,350 |
| 2 | 1.1 | 1. Khảo sát quy trình nhập hàng và đổi trả | 3.48d | 2026-09-01 | 2026-09-04 |  | 47.08d | 0.92d |  | Bùi Tuấn Anh | 27.87h | 6,609,625 |
| 3 | 1.2 | 2. Khảo sát quy trình xuất hàng, chuyển kho, hủy hàng | 3.48d | 2026-09-01 | 2026-09-04 |  | 47.08d | 0.92d |  | Bùi Quốc Luýt | 27.87h | 3,965,775 |
| 4 | 1.3 | 3. Khảo sát kiểm kê và thu thập biểu mẫu | 4.4d | 2026-09-01 | 2026-09-07 |  | 46.16d | 0d |  | Phạm Đoàn Bảo Thiên | 35.2h | 5,009,400 |
| 5 | 1.4 | 4. Khảo sát thông tin hàng hóa và biến thể | 2.38d | 2026-09-01 | 2026-09-03 |  | 48.18d | 2.02d |  | Bạch Minh Quang | 19.07h | 2,713,425 |
| 6 | 1.5 | 5. Tổng hợp hiện trạng | 3.3d | 2026-09-07 | 2026-09-10 | 2, 3, 4, 5 | 46.16d | 0d |  | Bùi Tuấn Anh | 26.4h | 6,261,750 |
| 7 | 1.6 | 6. Xác định mục tiêu, phạm vi và quy tắc nghiệp vụ | 3.3d | 2026-09-10 | 2026-09-15 | 6 | 46.16d | 0d |  | Bùi Tuấn Anh | 26.4h | 6,261,750 |
| 8 | 1.7 | 7. Phân tích yêu cầu chức năng và phi chức năng | 4.58d | 2026-09-16 | 2026-09-22 | 7 | 46.16d | 0d |  | Bùi Quốc Luýt | 36.67h | 5,218,125 |
| 9 | 1.8 | 8. Xác nhận/chỉnh sửa yêu cầu | 2.2d | 2026-09-22 | 2026-09-24 | 8 | 46.16d | 1.22d |  | Bùi Tuấn Anh | 17.6h | 4,174,500 |
| 10 | 2 | **B. Phân tích & thiết kế hệ thống** | 28.6d | 2026-09-28 | 2026-11-05 |  | 44.94d |  |  |  | 328.53h | 74,603,400 |
| 11 | 2.1 | 9. Xác định tác nhân và ma trận phân quyền | 2.2d | 2026-09-28 | 2026-09-30 | 9 | 44.94d | 0d | start no earlier than 2026-09-26 | Bùi Tuấn Anh | 17.6h | 4,174,500 |
| 12 | 2.2 | 10. Xây dựng biểu đồ use case | 3.3d | 2026-09-30 | 2026-10-05 | 11 | 44.94d | 0d |  | Bùi Tuấn Anh | 26.4h | 6,261,750 |
| 13 | 2.3 | 11. Đặc tả use case | 6.6d | 2026-10-05 | 2026-10-14 | 12 | 44.94d | 0d |  | Phạm Đoàn Bảo Thiên | 52.8h | 7,514,100 |
| 14 | 2.4 | 12. Mô hình lĩnh vực và biểu đồ lớp phân tích | 5.5d | 2026-10-14 | 2026-10-21 | 13 | 44.94d | 0d |  | Bùi Tuấn Anh | 44h | 10,436,250 |
| 15 | 2.5 | 13. Thiết kế biểu đồ tuần tự | 5.5d | 2026-10-21 | 2026-10-29 | 14 | 44.94d | 0d |  | Vũ Quang Minh | 44h | 6,261,750 |
| 16 | 2.6 | 14. Thiết kế biểu đồ hoạt động và trạng thái | 4.58d | 2026-10-14 | 2026-10-20 | 13 | 114.4d |  |  | Bạch Minh Quang | 36.67h | 5,218,125 |
| 17 | 2.7 | 15. Thiết kế kiến trúc hệ thống | 4.58d | 2026-10-21 | 2026-10-28 | 14 | 45.86d | 0d |  | Bùi Quốc Luýt | 36.67h | 5,218,125 |
| 18 | 2.8 | 16. Thiết kế biểu đồ thành phần và triển khai | 3.3d | 2026-10-28 | 2026-11-02 | 17 | 105.6d |  |  | Vũ Quang Minh | 26.4h | 3,757,050 |
| 19 | 2.9 | 17. Thiết kế lớp chi tiết | 5.5d | 2026-10-29 | 2026-11-05 | 15, 17 | 44.94d | 11.4d |  | Bùi Quốc Luýt | 44h | 6,261,750 |
| 20 | 3 | **C. Thiết kế CSDL & giao diện** | 12.28d | 2026-11-23 | 2026-12-09 |  | 33.54d |  |  |  | 239.07h | 54,322,625 |
| 21 | 3.1 | 18. Thiết kế lược đồ CSDL | 4.58d | 2026-11-23 | 2026-11-27 | 19 | 33.54d | 0d | start no earlier than 2026-11-21 | Phạm Đoàn Bảo Thiên | 36.67h | 5,218,125 |
| 22 | 3.2 | 19. Xây dựng từ điển dữ liệu, ràng buộc và chỉ mục | 4.22d | 2026-11-27 | 2026-12-03 | 21 | 33.54d | 0d |  | Phạm Đoàn Bảo Thiên | 33.73h | 4,800,675 |
| 23 | 3.3 | 20. Tạo script CSDL PostgreSQL và dữ liệu mẫu | 3.48d | 2026-12-03 | 2026-12-09 | 22 | 33.54d | 12.72d |  | Vũ Quang Minh | 27.87h | 3,965,775 |
| 24 | 3.4 | 21. Thiết kế luồng màn hình và bố cục chung | 3.3d | 2026-11-23 | 2026-11-26 | 19 | 46.18d | 0d | start no earlier than 2026-11-21 | Bạch Minh Quang | 26.4h | 3,757,050 |
| 25 | 3.5 | 22. Thiết kế giao diện đăng nhập và tổng quan | 2.2d | 2026-11-26 | 2026-11-30 | 24 | 85.58d |  |  | Bạch Minh Quang | 17.6h | 2,504,700 |
| 26 | 3.6 | 23. Thiết kế giao diện sản phẩm và biến thể | 3.3d | 2026-11-26 | 2026-12-01 | 24 | 84.48d |  |  | Bạch Minh Quang | 26.4h | 3,757,050 |
| 27 | 3.7 | 24. Thiết kế giao diện phiếu nhập, xuất, đổi trả | 4.58d | 2026-11-26 | 2026-12-02 | 24 | 83.2d |  |  | Bạch Minh Quang | 36.67h | 5,218,125 |
| 28 | 3.8 | 25. Thiết kế giao diện kiểm kê, tra cứu, báo cáo | 4.22d | 2026-11-26 | 2026-12-02 | 24 | 46.18d | 25.36d |  | Bùi Tuấn Anh | 33.73h | 8,001,125 |

Notes:
- 1: WBS: 01/09/202625/09/2026. TBVT 4.000.000 + chi khác 5.500.000.
- 2: Sản phẩm: Báo cáo khảo sát & đặc tả yêu cầu / Khảo sát cách kho nhận hàng từ NCC, kiểm tra mẫu mã/màu/size, đối chiếu hóa đơn; tiếp nhận và phân loại hàng khách trả lại.
- 3: Sản phẩm: Báo cáo khảo sát & đặc tả yêu cầu / Khảo sát yêu cầu xuất từ bán hàng, soạn hàng, chuyển kho tổngcửa hàng, xử lý hàng lỗi hỏng.
- 4: Sản phẩm: Báo cáo khảo sát & đặc tả yêu cầu / Khảo sát kiểm kê, đối chiếu sổ sách; thu thập 13 biểu mẫu (7 phiếu chứng từ, 6 mẫu báo cáo).
- 5: Sản phẩm: Báo cáo khảo sát & đặc tả yêu cầu / Khảo sát ghi nhận sản phẩm, loại, màu, size, giá nhập/bán, vị trí; cấp quản lý sản phẩm hay biến thể.
- 6: Sản phẩm: Báo cáo khảo sát & đặc tả yêu cầu / Tổng hợp khảo sát, mô tả 4 quy trình cốt lõi, hạn chế sổ sách/Excel, đối chiếu nhu cầu hệ thống.
- 7: Sản phẩm: Báo cáo khảo sát & đặc tả yêu cầu / Mục tiêu đo được, in/out-scope, tác nhân, quy tắc QT-01 đến QT-06.
- 8: Sản phẩm: Báo cáo khảo sát & đặc tả yêu cầu / 19 FR và 11 NFR kèm tiêu chí đo hiệu năng, toàn vẹn dữ liệu, bảo mật.
- 9: Sản phẩm: Báo cáo khảo sát & đặc tả yêu cầu / Trao đổi với quản lý kho và bộ phận bán hàng, chốt đặc tả yêu cầu.
- 10: WBS: 26/09/202620/11/2026. TBVT 15.000.000 + chi khác 4.500.000.
- 11: Sản phẩm: Báo cáo phân tích thiết kế (UML) / Tác nhân Người dùng, Quản lý, NV kho, NV bán hàng; ma trận vai tròuse case (RBAC).
- 12: Sản phẩm: Báo cáo phân tích thiết kế (UML) / Use case tổng quát và 4 gói: Quản trị, Danh mục, Nghiệp vụ kho, Tồn kho & báo cáo.
- 13: Sản phẩm: Báo cáo phân tích thiết kế (UML) / 19 use case; chi tiết Nhập kho, Xuất kho, Duyệt điều chỉnh tồn, Đổi trả.
- 14: Sản phẩm: Báo cáo phân tích thiết kế (UML) / Mô hình lĩnh vực (sản phẩm, biến thể, kho, tồn, phiếu, thẻ kho) và lớp phân tích BCE.
- 15: Sản phẩm: Báo cáo phân tích thiết kế (UML) / 4 sequence: Nhập kho, Xuất kho, Duyệt điều chỉnh tồn, Xử lý đổi trả.
- 16: Sản phẩm: Báo cáo phân tích thiết kế (UML) / 4 activity (nghiệp vụ, xuất kho, kiểm kê, đổi trả) và 2 state (PhieuKho, PhieuKiemKe).
- 17: Sản phẩm: Báo cáo phân tích thiết kế (UML) / Web 3 tầng ReactSpring BootPostgreSQL, 6 hệ thống con, gói BCE.
- 18: Sản phẩm: Báo cáo phân tích thiết kế (UML) / Thành phần phần mềm, REST API; máy chủ app, CSDL, sao lưu, máy tính bảng tại kho.
- 19: Sản phẩm: Báo cáo phân tích thiết kế (UML) / Kiểu dữ liệu, tầm vực, phương thức: chứng từ kho, tồn/kiểm kê, danh mục, quản trị.
- 20: WBS: 21/11/202625/12/2026. TBVT 9.100.000 + chi khác 8.000.000.
- 21: Sản phẩm: Lược đồ CSDL & từ điển dữ liệu / Ánh xạ 15 bảng, PK/FK, quan hệ sản phẩmbiến thểkhotồnphiếuthẻ kho.
- 22: Sản phẩm: Lược đồ CSDL & từ điển dữ liệu / Cột chi tiết; CHECK tồn ≥ 0; UNIQUE (kho, biến thể); chỉ mục thẻ kho (biến thể, kho, thời gian).
- 23: Sản phẩm: Lược đồ CSDL & từ điển dữ liệu / Migration PostgreSQL 16 và dữ liệu mẫu nhiều màu/size, nhiều kho.
- 24: Sản phẩm: Thiết kế UI/UX hệ thống / 10 màn hình, menu theo quyền, ô tìm SKU quét mã vạch, tablet 10 inch.
- 25: Sản phẩm: Thiết kế UI/UX hệ thống / MH-01 Đăng nhập, MH-02 Tổng quan (cảnh báo hết/sắp hết, phiếu chờ).
- 26: Sản phẩm: Thiết kế UI/UX hệ thống / MH-03 mẫu sản phẩm, ma trận màu × size, giá nhập/bán, tồn tối thiểu.
- 27: Sản phẩm: Thiết kế UI/UX hệ thống / MH-04 nhập, MH-05 xuất, MH-08 đổi trả; quét hàng, tồn khả dụng, thông báo lỗi.
- 28: Sản phẩm: Thiết kế UI/UX hệ thống / MH-06 kiểm kê, MH-07 duyệt, MH-09 tra cứu tồn/thẻ kho, MH-10 báo cáo + Excel.

| ID | WBS | Task | Duration | Start | Finish | Predecessors | Total slack | Free slack | Constraint | Resources | Work | Cost |
| --- | --- | --- | --- | --- | --- | --- | --- | --- | --- | --- | --- | --- |
| 29 | 4 | **D. Xây dựng chương trình** | 31.71d | 2026-12-28 | 2027-02-09 |  | 20.82d |  |  |  | 554.4h | 115,211,700 |
| 30 | 4.1 | 26. Dựng khung dự án và môi trường phát triển | 3.3d | 2026-12-28 | 2026-12-31 | 23 | 20.82d | 0d | start no earlier than 2026-12-26 | Bùi Quốc Luýt | 26.4h | 3,757,050 |
| 31 | 4.2 | 27. Đăng nhập & quản lý tài khoản | 4.58d | 2026-12-31 | 2027-01-06 | 30 | 20.82d | 0d |  | Bùi Quốc Luýt | 36.67h | 5,218,125 |
| 32 | 4.3 | 28. Quản lý danh mục loại, màu, size, NCC, kho | 4.58d | 2026-12-31 | 2027-01-06 | 30 | 34.37d | 0d |  | Vũ Quang Minh | 36.67h | 5,218,125 |
| 33 | 4.4 | 29. Quản lý sản phẩm và biến thể | 5.5d | 2027-01-06 | 2027-01-14 | 32 | 34.37d | 0d |  | Vũ Quang Minh | 44h | 6,261,750 |
| 34 | 4.5 | 30. Dịch vụ tồn kho và thẻ kho | 5.87d | 2027-01-14 | 2027-01-22 | 33 | 34.37d | 0d |  | Bùi Quốc Luýt | 46.93h | 6,679,200 |
| 35 | 4.6 | 31. Nhập kho | 4.58d | 2027-01-22 | 2027-01-28 | 34 | 36.57d | 1.1d |  | Vũ Quang Minh | 36.67h | 5,218,125 |
| 36 | 4.7 | 32. Yêu cầu xuất kho và xuất kho | 5.68d | 2027-01-22 | 2027-01-29 | 34 | 34.37d | 0d |  | Bùi Quốc Luýt | 45.47h | 6,470,475 |
| 37 | 4.8 | 33. Chuyển kho | 3.48d | 2027-01-29 | 2027-02-04 | 36 | 37.67d |  |  | Vũ Quang Minh | 27.87h | 3,965,775 |
| 38 | 4.9 | 34. Kiểm kê và duyệt điều chỉnh tồn kho | 5.68d | 2027-01-22 | 2027-01-29 | 34 | 35.47d | 0d |  | Phạm Đoàn Bảo Thiên | 45.47h | 6,470,475 |
| 39 | 4.10 | 35. Xử lý đổi trả hàng | 4.58d | 2027-01-29 | 2027-02-05 | 36 | 34.37d | 0d |  | Phạm Đoàn Bảo Thiên | 36.67h | 5,218,125 |
| 40 | 4.11 | 36. Hủy hàng | 2.2d | 2027-02-05 | 2027-02-09 | 39 | 34.37d |  |  | Phạm Đoàn Bảo Thiên | 17.6h | 2,504,700 |
| 41 | 4.12 | 37. Tra cứu tồn, cảnh báo tồn thấp, thẻ kho | 4.58d | 2027-01-22 | 2027-01-28 | 34 | 42.25d |  |  | Bạch Minh Quang | 36.67h | 5,218,125 |
| 42 | 4.13 | 38. Báo cáo kho và xuất Excel | 5.68d | 2027-01-29 | 2027-02-08 | 35, 36, 38 | 35.47d |  |  | Bùi Tuấn Anh | 45.47h | 10,784,125 |
| 43 | 4.14 | 39. Lập trình giao diện web | 8.98d | 2027-01-06 | 2027-01-19 | 28, 31 | 20.82d | 19.14d |  | Bạch Minh Quang | 71.87h | 10,227,525 |
| 44 | 5 | **E. Tích hợp & kiểm thử** | 18.32d | 2027-02-16 | 2027-03-12 |  | 1.68d |  |  |  | 328.53h | 75,337,850 |
| 45 | 5.1 | 40. Tích hợp các module | 4.58d | 2027-02-16 | 2027-02-22 | 43 | 1.68d | 0d | start no earlier than 2027-02-16 | Bùi Quốc Luýt | 36.67h | 5,218,125 |
| 46 | 5.2 | 41. Kiểm thử đăng nhập, phân quyền, danh mục | 3.3d | 2027-02-22 | 2027-02-25 | 45 | 2.96d | 1.28d |  | Bạch Minh Quang | 26.4h | 3,757,050 |
| 47 | 5.3 | 42. Kiểm thử nhập, xuất, chuyển kho | 4.58d | 2027-02-22 | 2027-03-01 | 45 | 1.68d | 0d |  | Phạm Đoàn Bảo Thiên | 36.67h | 5,218,125 |
| 48 | 5.4 | 43. Kiểm thử kiểm kê, đổi trả, hủy hàng | 3.48d | 2027-02-22 | 2027-02-26 | 45 | 2.78d | 1.1d |  | Vũ Quang Minh | 27.87h | 3,965,775 |
| 49 | 5.5 | 44. Kiểm thử tra cứu và báo cáo | 3.3d | 2027-02-22 | 2027-02-25 | 45 | 2.96d | 1.28d |  | Bùi Tuấn Anh | 26.4h | 6,261,750 |
| 50 | 5.6 | 45. Kiểm thử hiệu năng và bảo mật | 3.48d | 2027-02-22 | 2027-02-26 | 45 | 2.78d | 1.1d |  | Phạm Đoàn Bảo Thiên | 27.87h | 3,965,775 |
| 51 | 5.7 | 46. Kiểm thử toàn hệ thống (UAT) | 4.58d | 2027-03-01 | 2027-03-05 | 46, 47, 48, 49, 50 | 1.68d | 0d |  | Bùi Tuấn Anh | 36.67h | 8,696,875 |
| 52 | 5.8 | 47. Sửa lỗi & hoàn thiện | 4.58d | 2027-03-05 | 2027-03-12 | 51 | 1.68d |  |  | Bùi Quốc Luýt; Vũ Quang Minh; Bạch Minh Quang | 110h | 15,654,375 |

Notes:
- 29: WBS: 26/12/202615/02/2027. TBVT 21.000.000 + chi khác 11.000.000.
- 30: Sản phẩm: Mã nguồn & module chạy được / Spring Boot 3 + ReactJS/TypeScript, Docker, kho mã, quy ước code, pipeline.
- 31: Sản phẩm: Mã nguồn & module chạy được / JWT, đổi mật khẩu, khóa sau 5 lần sai; vai trò và kho phụ trách (UC-1.1, UC-1.2).
- 32: Sản phẩm: Mã nguồn & module chạy được / CRUD loại, màu, kích thước, NCC, kho, vị trí (UC-2.3, UC-2.4, UC-2.5).
- 33: Sản phẩm: Mã nguồn & module chạy được / Sản phẩm, biến thể màu × size, sinh SKU, tìm/lọc (UC-2.1, UC-2.2).
- 34: Sản phẩm: Mã nguồn & module chạy được / Tăng/trừ/điều chỉnh có khóa dòng FOR UPDATE; thẻ kho chỉ thêm, dùng chung mọi nghiệp vụ.
- 35: Sản phẩm: Mã nguồn & module chạy được / Phiếu nhập theo NCC, quét SKU, giao dịch nguyên tử cộng tồn + thẻ kho (UC-3.1).
- 36: Sản phẩm: Mã nguồn & module chạy được / Yêu cầu xuất kèm mã đơn; không cho tồn âm (UC-3.2, UC-3.3).
- 37: Sản phẩm: Mã nguồn & module chạy được / Hai bước xuất đi và xác nhận nhận tại kho đích (UC-3.4).
- 38: Sản phẩm: Mã nguồn & module chạy được / Phiếu kiểm kê, chênh lệch = thực tế − hệ thống; duyệt mới sinh phiếu điều chỉnh (UC-3.5, UC-3.6).
- 39: Sản phẩm: Mã nguồn & module chạy được / Nhập lại hàng tốt, tách hàng lỗi, xuất hàng đổi, tiền chênh lệch (UC-3.7).
- 40: Sản phẩm: Mã nguồn & module chạy được / Phiếu hủy hàng lỗi/hỏng; chỉ trừ tồn sau khi Quản lý duyệt (UC-3.8).
- 41: Sản phẩm: Mã nguồn & module chạy được / Tra cứu theo kho/SP/màu/size/vị trí; cảnh báo hết/sắp hết; lịch sử biến động (UC-4.1, 4.2, 4.4).
- 42: Sản phẩm: Mã nguồn & module chạy được / 6 báo cáo: tồn, nhập, xuất, NXT, kiểm kê, tồn lâu; xuất .xlsx Apache POI (UC-4.3).
- 43: Sản phẩm: Mã nguồn & module chạy được / 10 màn hình ReactJS, menu theo quyền, máy quét mã vạch, REST API.
- 44: WBS: 16/02/202715/03/2027. TBVT 11.600.000 + chi khác 11.000.000.
- 45: Sản phẩm: Báo cáo kiểm thử / Kết nối UIdịch vụ; kho/kiểm kê/báo cáo đều đổi tồn qua dịch vụ Tồn kho và thẻ kho.
- 46: Sản phẩm: Báo cáo kiểm thử / Đăng nhập, khóa tài khoản, RBAC; CRUD danh mục, sinh SKU không trùng.
- 47: Sản phẩm: Báo cáo kiểm thử / Cộng/trừ tồn, thẻ kho; hai phiếu xuất đồng thời không làm tồn âm (NFR-04).
- 48: Sản phẩm: Báo cáo kiểm thử / Chênh lệch, duyệt điều chỉnh, phân loại hàng trả, hủy hàng chỉ sau duyệt.
- 49: Sản phẩm: Báo cáo kiểm thử / Tồn cuối = tồn đầu + nhập − xuất ± điều chỉnh; cảnh báo tồn thấp; file Excel.
- 50: Sản phẩm: Báo cáo kiểm thử / Tra cứu < 2s / 50.000 biến thể / 100 user; NXT tháng < 10s; HTTPS, hết phiên, bcrypt.
- 51: Sản phẩm: Báo cáo kiểm thử / User doanh nghiệp chạy nhậpxuấtkiểm kêbáo cáo; ghi nhận lỗi và góp ý.
- 52: Sản phẩm: Báo cáo kiểm thử / 3 thành viên song song (mỗi người 4,583 manday): sửa lỗi kiểm thử, hoàn thiện trước nghiệm thu.

| ID | WBS | Task | Duration | Start | Finish | Predecessors | Total slack | Constraint | Deadline | Resources | Work | Cost |
| --- | --- | --- | --- | --- | --- | --- | --- | --- | --- | --- | --- | --- |
| 53 | 6 | **F. Triển khai & bàn giao** | 10.08d | 2027-03-16 | 2027-03-30 |  | 0d |  |  |  | 107.07h | 39,006,725 |
| 54 | 6.1 | 48. Chuẩn bị môi trường triển khai | 2.2d | 2027-03-16 | 2027-03-18 | 52 | 0d | start no earlier than 2027-03-16 |  | Bùi Quốc Luýt | 17.6h | 2,504,700 |
| 55 | 6.2 | 49. Chuyển đổi dữ liệu và triển khai hệ thống | 3.48d | 2027-03-18 | 2027-03-23 | 54 | 0d |  |  | Vũ Quang Minh | 27.87h | 3,965,775 |
| 56 | 6.3 | 50. Viết tài liệu hướng dẫn | 3.3d | 2027-03-18 | 2027-03-23 | 54 | 0.18d |  |  | Phạm Đoàn Bảo Thiên | 26.4h | 3,757,050 |
| 57 | 6.4 | 51. Báo cáo nghiệm thu | 2.2d | 2027-03-23 | 2027-03-25 | 55, 56 | 0d |  |  | Bùi Tuấn Anh | 17.6h | 4,174,500 |
| 58 | 6.5 | 52. Đào tạo người dùng | 2.2d | 2027-03-25 | 2027-03-30 | 57 | 0d |  | 2027-03-31 | Bạch Minh Quang | 17.6h | 2,504,700 |

Notes:
- 53: WBS: 16/03/202731/03/2027. TBVT 13.100.000 + chi khác 9.000.000.
- 54: Sản phẩm: Tài liệu cấu hình hệ thống / Máy chủ app, CSDL, Nginx HTTPS, sao lưu hằng ngày giữ 30 bản.
- 55: Sản phẩm: Biên bản nghiệm thu / Chuyển danh mục và tồn đầu kỳ từ Excel; triển khai kho tổng và cửa hàng.
- 56: Sản phẩm: Tài liệu hướng dẫn / Hướng dẫn theo vai trò Quản lý, NV kho, NV bán hàng và tài liệu vận hành.
- 57: Sản phẩm: Báo cáo nghiệm thu / Tổng hợp kết quả, kiểm thử, đối chiếu mục tiêu, hồ sơ nghiệm thu.
- 58: Sản phẩm: Xác nhận bàn giao / Hướng dẫn NV kho/cửa hàng, máy quét mã vạch; hỗ trợ vận hành ban đầu.
