# CNTT20261_N01 — QL hàng hóa & kho thời trang

Schedule from MS Project, 2026-09-01 to 2027-01-28, costs in ₫.
Xay dung he thong quan ly hang hoa va kho bai san
HUST SOICT
Dự án phần mềm quy mô vừa. Chủ đầu tư: DN thời trang được khảo sát. Ngân sách 408.196.650 VND. 5 thành viên, 07 tháng.

## Calendars

- Standard: Mon-Fri 08:00-12:00, 13:00-17:00; Sat-Sun off.

## Resources

| Resource | Group | Rate | Notes |
| --- | --- | --- | --- |
| Bùi Tuấn Anh | Nhóm 1 | 237188 | Chủ nhiệm / Giám đốc dự án / Định mức 1.897.500 VND/ngày công (lương cơ sở 2.530.000). |
| Bùi Quốc Luýt | Nhóm 1 | 142312 | Trưởng nhóm kỹ thuật / Back-end / Định mức 1.138.500 VND/ngày công (lương cơ sở 2.530.000). |
| Vũ Quang Minh | Nhóm 1 | 142312 | Thành viên chính / Back-end / Định mức 1.138.500 VND/ngày công (lương cơ sở 2.530.000). |
| Bạch Minh Quang | Nhóm 1 | 142312 | Thành viên chính / UI-UX. Front-end / Định mức 1.138.500 VND/ngày công (lương cơ sở 2.530.000). |
| Phạm Đoàn Bảo Thiên | Nhóm 1 | 142312 | Thành viên chính / CSDL. Kiểm thử / Định mức 1.138.500 VND/ngày công (lương cơ sở 2.530.000). |
| Thiết bị vật tư |  |  | Phụ lục 2 dự toán: 73.800.000 VND. Gán vào từng giai đoạn (Fixed Cost). |
| Chi khác |  |  | Phụ lục 3 dự toán: 49.000.000 VND (VPP, đi lại, workshop, OT, đào tạo). |

## Schedule

| ID | WBS | Task | Duration | Start | Finish | Predecessors | Total slack | Free slack | Resources | Work | Cost | Text1 | Text2 | Text3 |
| --- | --- | --- | --- | --- | --- | --- | --- | --- | --- | --- | --- | --- | --- | --- |
| 1 | 1 | **A. Khảo sát & yêu cầu** | 17.78d | 2026-09-01 | 2026-09-24 |  | 0d |  |  | 217.07h | 49,714,350 |  |  |  |
| 2 | 1.1 | 01. Khảo sát quy trình nhập hàng và đổi trả | 3.48d | 2026-09-01 | 2026-09-04 |  | 0.92d |  | Bùi Tuấn Anh | 27.87h | 6,609,625 | Task 1 | Báo cáo khảo sát & đặc tả yêu cầu | Bùi Tuấn Anh |
| 3 | 1.2 | 02. Khảo sát quy trình xuất hàng, chuyển kho, hủy hàng | 3.48d | 2026-09-01 | 2026-09-04 |  | 0.92d |  | Bùi Quốc Luýt | 27.87h | 3,965,775 | Task 2 | Báo cáo khảo sát & đặc tả yêu cầu | Bùi Quốc Luýt |
| 4 | 1.3 | 03. Khảo sát kiểm kê và thu thập biểu mẫu | 4.4d | 2026-09-01 | 2026-09-07 |  | 0d |  | Phạm Đoàn Bảo Thiên | 35.2h | 5,009,400 | Task 3 | Báo cáo khảo sát & đặc tả yêu cầu | Phạm Đoàn Bảo Thiên |
| 5 | 1.4 | 04. Khảo sát thông tin hàng hóa và biến thể | 2.38d | 2026-09-01 | 2026-09-03 |  | 2.02d |  | Bạch Minh Quang | 19.07h | 2,713,425 | Task 4 | Báo cáo khảo sát & đặc tả yêu cầu | Bạch Minh Quang |
| 6 | 1.5 | 05. Tổng hợp hiện trạng | 3.3d | 2026-09-07 | 2026-09-10 | 2, 3, 4, 5 | 0d |  | Bùi Tuấn Anh | 26.4h | 6,261,750 | Task 5 | Báo cáo khảo sát & đặc tả yêu cầu | Bùi Tuấn Anh |
| 7 | 1.6 | 06. Xác định mục tiêu, phạm vi và quy tắc nghiệp vụ | 3.3d | 2026-09-10 | 2026-09-15 | 6 | 0d |  | Bùi Tuấn Anh | 26.4h | 6,261,750 | Task 6 | Báo cáo khảo sát & đặc tả yêu cầu | Bùi Tuấn Anh |
| 8 | 1.7 | 07. Phân tích yêu cầu chức năng và phi chức năng | 4.58d | 2026-09-16 | 2026-09-22 | 7 | 0d |  | Bùi Quốc Luýt | 36.67h | 5,218,125 | Task 7 | Báo cáo khảo sát & đặc tả yêu cầu | Bùi Quốc Luýt |
| 9 | 1.8 | 08. Xác nhận/chỉnh sửa yêu cầu | 2.2d | 2026-09-22 | 2026-09-24 | 8 | 0d |  | Bùi Tuấn Anh | 17.6h | 4,174,500 | Task 8 | Báo cáo khảo sát & đặc tả yêu cầu | Bùi Tuấn Anh |
| 10 | 2 | **B. Phân tích & thiết kế hệ thống** | 28.6d | 2026-09-24 | 2026-11-04 |  | 0d |  |  | 328.53h | 74,603,400 |  |  |  |
| 11 | 2.1 | 09. Xác định tác nhân và ma trận phân quyền | 2.2d | 2026-09-24 | 2026-09-28 | 9 | 0d |  | Bùi Tuấn Anh | 17.6h | 4,174,500 | Task 9 | Báo cáo phân tích thiết kế (UML) | Bùi Tuấn Anh |
| 12 | 2.2 | 10. Xây dựng biểu đồ use case | 3.3d | 2026-09-28 | 2026-10-02 | 11 | 0d |  | Bùi Tuấn Anh | 26.4h | 6,261,750 | Task 10 | Báo cáo phân tích thiết kế (UML) | Bùi Tuấn Anh |
| 13 | 2.3 | 11. Đặc tả use case | 6.6d | 2026-10-02 | 2026-10-12 | 12 | 0d |  | Phạm Đoàn Bảo Thiên | 52.8h | 7,514,100 | Task 11 | Báo cáo phân tích thiết kế (UML) | Phạm Đoàn Bảo Thiên |
| 14 | 2.4 | 12. Mô hình lĩnh vực và biểu đồ lớp phân tích | 5.5d | 2026-10-12 | 2026-10-20 | 13 | 0d |  | Bùi Tuấn Anh | 44h | 10,436,250 | Task 12 | Báo cáo phân tích thiết kế (UML) | Bùi Tuấn Anh |
| 15 | 2.5 | 13. Thiết kế biểu đồ tuần tự | 5.5d | 2026-10-20 | 2026-10-27 | 14 | 0d |  | Vũ Quang Minh | 44h | 6,261,750 | Task 13 | Báo cáo phân tích thiết kế (UML) | Vũ Quang Minh |
| 16 | 2.6 | 14. Thiết kế biểu đồ hoạt động và trạng thái | 4.58d | 2026-10-12 | 2026-10-19 | 13 | 72.94d |  | Bạch Minh Quang | 36.67h | 5,218,125 | Task 14 | Báo cáo phân tích thiết kế (UML) | Bạch Minh Quang |
| 17 | 2.7 | 15. Thiết kế kiến trúc hệ thống | 4.58d | 2026-10-20 | 2026-10-26 | 14 | 0.92d |  | Bùi Quốc Luýt | 36.67h | 5,218,125 | Task 15 | Báo cáo phân tích thiết kế (UML) | Bùi Quốc Luýt |
| 18 | 2.8 | 16. Thiết kế biểu đồ thành phần và triển khai | 3.3d | 2026-10-27 | 2026-11-02 | 17, 15 | 63.22d |  | Vũ Quang Minh | 26.4h | 3,757,050 | Task 16 | Báo cáo phân tích thiết kế (UML) | Vũ Quang Minh |
| 19 | 2.9 | 17. Thiết kế lớp chi tiết | 5.5d | 2026-10-27 | 2026-11-04 | 15, 17 | 0d |  | Bùi Quốc Luýt | 44h | 6,261,750 | Task 17 | Báo cáo phân tích thiết kế (UML) | Bùi Quốc Luýt |
| 20 | 3 | **C. Thiết kế CSDL & giao diện** | 13.38d | 2026-11-04 | 2026-11-23 |  | 0d |  |  | 239.07h | 54,322,625 |  |  |  |
| 21 | 3.1 | 18. Thiết kế lược đồ CSDL | 4.58d | 2026-11-04 | 2026-11-10 | 19 | 0d |  | Phạm Đoàn Bảo Thiên | 36.67h | 5,218,125 | Task 18 | Lược đồ CSDL & từ điển dữ liệu | Phạm Đoàn Bảo Thiên |
| 22 | 3.2 | 19. Xây dựng từ điển dữ liệu, ràng buộc và chỉ mục | 4.22d | 2026-11-10 | 2026-11-17 | 21 | 0d |  | Phạm Đoàn Bảo Thiên | 33.73h | 4,800,675 | Task 19 | Lược đồ CSDL & từ điển dữ liệu | Phạm Đoàn Bảo Thiên |
| 23 | 3.3 | 20. Tạo script CSDL PostgreSQL và dữ liệu mẫu | 3.48d | 2026-11-17 | 2026-11-20 | 22 | 0d |  | Vũ Quang Minh | 27.87h | 3,965,775 | Task 20 | Lược đồ CSDL & từ điển dữ liệu | Vũ Quang Minh |
| 24 | 3.4 | 21. Thiết kế luồng màn hình và bố cục chung | 3.3d | 2026-11-04 | 2026-11-09 | 19 | 12.64d | 0d | Bạch Minh Quang | 26.4h | 3,757,050 | Task 21 | Thiết kế UI/UX hệ thống | Bạch Minh Quang |
| 25 | 3.5 | 22. Thiết kế giao diện đăng nhập và tổng quan | 2.2d | 2026-11-09 | 2026-11-11 | 24 | 47.64d | 0d | Bạch Minh Quang | 17.6h | 2,504,700 | Task 22 | Thiết kế UI/UX hệ thống | Bạch Minh Quang |
| 26 | 3.6 | 23. Thiết kế giao diện sản phẩm và biến thể | 3.3d | 2026-11-11 | 2026-11-17 | 24, 25 | 47.64d | 0d | Bạch Minh Quang | 26.4h | 3,757,050 | Task 23 | Thiết kế UI/UX hệ thống | Bạch Minh Quang |
| 27 | 3.7 | 24. Thiết kế giao diện phiếu nhập, xuất, đổi trả | 4.58d | 2026-11-17 | 2026-11-23 | 24, 26 | 47.64d |  | Bạch Minh Quang | 36.67h | 5,218,125 | Task 24 | Thiết kế UI/UX hệ thống | Bạch Minh Quang |
| 28 | 3.8 | 25. Thiết kế giao diện kiểm kê, tra cứu, báo cáo | 4.22d | 2026-11-09 | 2026-11-13 | 24 | 12.64d |  | Bùi Tuấn Anh | 33.73h | 8,001,125 | Task 25 | Thiết kế UI/UX hệ thống | Bùi Tuấn Anh |

Notes:
- 1: Cửa sổ 01/09/202625/09/2026. / TBVT: thuê laptop khảo sát 2 bộ x 2.000.000 = 4.000.000. / Chi khác: VPP 1.500.000 + đi lại/workshop 4.000.000 = 5.500.000.
- 2: Khảo sát cách kho nhận hàng từ NCC, kiểm tra mẫu mã/màu/size, đối chiếu hóa đơn; tiếp nhận và phân loại hàng khách trả lại.
- 3: Khảo sát yêu cầu xuất từ bán hàng, soạn hàng, chuyển kho tổngcửa hàng, xử lý hàng lỗi hỏng.
- 4: Khảo sát kiểm kê, đối chiếu sổ sách; thu thập 13 biểu mẫu (7 phiếu chứng từ, 6 mẫu báo cáo).
- 5: Khảo sát ghi nhận sản phẩm, loại, màu, size, giá nhập/bán, vị trí; cấp quản lý sản phẩm hay biến thể.
- 6: Tổng hợp khảo sát, mô tả 4 quy trình cốt lõi, hạn chế sổ sách/Excel, đối chiếu nhu cầu hệ thống.
- 7: Mục tiêu đo được, in/out-scope, tác nhân, quy tắc QT-01 đến QT-06.
- 8: 19 FR và 11 NFR kèm tiêu chí đo hiệu năng, toàn vẹn dữ liệu, bảo mật.
- 9: Trao đổi với quản lý kho và bộ phận bán hàng, chốt đặc tả yêu cầu.
- 10: Cửa sổ 26/09/202620/11/2026. / TBVT: thuê máy tính nhóm 10 bộ-tháng x 1.500.000 = 15.000.000. / Chi khác: VPP 1.500.000 + workshop QT-01..QT-06 3.000.000 = 4.500.000.
- 11: Tác nhân Người dùng, Quản lý, NV kho, NV bán hàng; ma trận vai tròuse case (RBAC).
- 12: Use case tổng quát và 4 gói: Quản trị, Danh mục, Nghiệp vụ kho, Tồn kho & báo cáo.
- 13: 19 use case; chi tiết Nhập kho, Xuất kho, Duyệt điều chỉnh tồn, Đổi trả.
- 14: Mô hình lĩnh vực (sản phẩm, biến thể, kho, tồn, phiếu, thẻ kho) và lớp phân tích BCE.
- 15: 4 sequence: Nhập kho, Xuất kho, Duyệt điều chỉnh tồn, Xử lý đổi trả.
- 16: 4 activity (nghiệp vụ, xuất kho, kiểm kê, đổi trả) và 2 state (PhieuKho, PhieuKiemKe).
- 17: Web 3 tầng ReactSpring BootPostgreSQL, 6 hệ thống con, gói BCE.
- 18: Thành phần phần mềm, REST API; máy chủ app, CSDL, sao lưu, máy tính bảng tại kho.
- 19: Kiểu dữ liệu, tầm vực, phương thức: chứng từ kho, tồn/kiểm kê, danh mục, quản trị.
- 20: Cửa sổ 21/11/202625/12/2026. / TBVT: máy tính 7.500.000 + Figma Pro 1.600.000 = 9.100.000. / Chi khác: duyệt prototype 3.000.000 + OT 5.000.000 = 8.000.000.
- 21: Ánh xạ 15 bảng, PK/FK, quan hệ sản phẩmbiến thểkhotồnphiếuthẻ kho.
- 22: Cột chi tiết; CHECK tồn ≥ 0; UNIQUE (kho, biến thể); chỉ mục thẻ kho (biến thể, kho, thời gian).
- 23: Migration PostgreSQL 16 và dữ liệu mẫu nhiều màu/size, nhiều kho.
- 24: 10 màn hình, menu theo quyền, ô tìm SKU quét mã vạch, tablet 10 inch.
- 25: MH-01 Đăng nhập, MH-02 Tổng quan (cảnh báo hết/sắp hết, phiếu chờ).
- 26: MH-03 mẫu sản phẩm, ma trận màu × size, giá nhập/bán, tồn tối thiểu.
- 27: MH-04 nhập, MH-05 xuất, MH-08 đổi trả; quét hàng, tồn khả dụng, thông báo lỗi.
- 28: MH-06 kiểm kê, MH-07 duyệt, MH-09 tra cứu tồn/thẻ kho, MH-10 báo cáo + Excel.

| ID | WBS | Task | Duration | Start | Finish | Predecessors | Total slack | Free slack | Resources | Work | Cost | Text1 | Text2 | Text3 |
| --- | --- | --- | --- | --- | --- | --- | --- | --- | --- | --- | --- | --- | --- | --- |
| 29 | 4 | **D. Xây dựng chương trình** | 31.71d | 2026-11-20 | 2027-01-05 |  | 0d |  |  | 554.4h | 115,211,700 |  |  |  |
| 30 | 4.1 | 26. Dựng khung dự án và môi trường phát triển | 3.3d | 2026-11-20 | 2026-11-25 | 23 | 0d |  | Bùi Quốc Luýt | 26.4h | 3,757,050 | Task 26 | Mã nguồn & module chạy được | Bùi Quốc Luýt |
| 31 | 4.2 | 27. Đăng nhập & quản lý tài khoản | 4.58d | 2026-11-25 | 2026-12-02 | 30 | 0d |  | Bùi Quốc Luýt | 36.67h | 5,218,125 | Task 27 | Mã nguồn & module chạy được | Bùi Quốc Luýt |
| 32 | 4.3 | 28. Quản lý danh mục loại, màu, size, NCC, kho | 4.58d | 2026-11-25 | 2026-12-02 | 30 | 17.03d | 0d | Vũ Quang Minh | 36.67h | 5,218,125 | Task 28 | Mã nguồn & module chạy được | Vũ Quang Minh |
| 33 | 4.4 | 29. Quản lý sản phẩm và biến thể | 5.5d | 2026-12-02 | 2026-12-10 | 32 | 17.03d | 0d | Vũ Quang Minh | 44h | 6,261,750 | Task 29 | Mã nguồn & module chạy được | Vũ Quang Minh |
| 34 | 4.5 | 30. Dịch vụ tồn kho và thẻ kho | 5.87d | 2026-12-10 | 2026-12-17 | 33 | 17.03d | 0d | Bùi Quốc Luýt | 46.93h | 6,679,200 | Task 30 | Mã nguồn & module chạy được | Bùi Quốc Luýt |
| 35 | 4.6 | 31. Nhập kho | 4.58d | 2026-12-17 | 2026-12-24 | 34 | 19.23d | 1.1d | Vũ Quang Minh | 36.67h | 5,218,125 | Task 31 | Mã nguồn & module chạy được | Vũ Quang Minh |
| 36 | 4.7 | 32. Yêu cầu xuất kho và xuất kho | 5.68d | 2026-12-17 | 2026-12-25 | 34 | 17.03d | 0d | Bùi Quốc Luýt | 45.47h | 6,470,475 | Task 32 | Mã nguồn & module chạy được | Bùi Quốc Luýt |
| 37 | 4.8 | 33. Chuyển kho | 3.48d | 2026-12-25 | 2026-12-31 | 36 | 20.33d |  | Vũ Quang Minh | 27.87h | 3,965,775 | Task 33 | Mã nguồn & module chạy được | Vũ Quang Minh |
| 38 | 4.9 | 34. Kiểm kê và duyệt điều chỉnh tồn kho | 5.68d | 2026-12-17 | 2026-12-25 | 34 | 18.13d | 0d | Phạm Đoàn Bảo Thiên | 45.47h | 6,470,475 | Task 34 | Mã nguồn & module chạy được | Phạm Đoàn Bảo Thiên |
| 39 | 4.10 | 35. Xử lý đổi trả hàng | 4.58d | 2026-12-25 | 2027-01-01 | 36 | 17.03d | 0d | Phạm Đoàn Bảo Thiên | 36.67h | 5,218,125 | Task 35 | Mã nguồn & module chạy được | Phạm Đoàn Bảo Thiên |
| 40 | 4.11 | 36. Hủy hàng | 2.2d | 2027-01-01 | 2027-01-05 | 39 | 17.03d |  | Phạm Đoàn Bảo Thiên | 17.6h | 2,504,700 | Task 36 | Mã nguồn & module chạy được | Phạm Đoàn Bảo Thiên |
| 41 | 4.12 | 37. Tra cứu tồn, cảnh báo tồn thấp, thẻ kho | 4.58d | 2026-12-17 | 2026-12-24 | 34 | 24.91d |  | Bạch Minh Quang | 36.67h | 5,218,125 | Task 37 | Mã nguồn & module chạy được | Bạch Minh Quang |
| 42 | 4.13 | 38. Báo cáo kho và xuất Excel | 5.68d | 2026-12-25 | 2027-01-04 | 35, 36, 38 | 18.13d |  | Bùi Tuấn Anh | 45.47h | 10,784,125 | Task 38 | Mã nguồn & module chạy được | Bùi Tuấn Anh |
| 43 | 4.14 | 39. Lập trình giao diện web | 8.98d | 2026-12-02 | 2026-12-15 | 28, 31 | 0d |  | Bạch Minh Quang | 71.87h | 10,227,525 | Task 39 | Mã nguồn & module chạy được | Bạch Minh Quang |
| 44 | 5 | **E. Tích hợp & kiểm thử** | 21.8d | 2026-12-15 | 2027-01-14 |  | 0d |  |  | 328.53h | 75,337,850 |  |  |  |
| 45 | 5.1 | 40. Tích hợp các module | 4.58d | 2026-12-15 | 2026-12-22 | 43 | 0d |  | Bùi Quốc Luýt | 36.67h | 5,218,125 | Task 40 | Báo cáo kiểm thử | Bùi Quốc Luýt |
| 46 | 5.2 | 41. Kiểm thử đăng nhập, phân quyền, danh mục | 3.3d | 2026-12-22 | 2026-12-25 | 45 | 4.76d |  | Bạch Minh Quang | 26.4h | 3,757,050 | Task 41 | Báo cáo kiểm thử | Bạch Minh Quang |
| 47 | 5.3 | 42. Kiểm thử nhập, xuất, chuyển kho | 4.58d | 2026-12-22 | 2026-12-28 | 45 | 0d |  | Phạm Đoàn Bảo Thiên | 36.67h | 5,218,125 | Task 42 | Báo cáo kiểm thử | Phạm Đoàn Bảo Thiên |
| 48 | 5.4 | 43. Kiểm thử kiểm kê, đổi trả, hủy hàng | 3.48d | 2026-12-22 | 2026-12-25 | 45 | 4.58d |  | Vũ Quang Minh | 27.87h | 3,965,775 | Task 43 | Báo cáo kiểm thử | Vũ Quang Minh |
| 49 | 5.5 | 44. Kiểm thử tra cứu và báo cáo | 3.3d | 2026-12-22 | 2026-12-25 | 45 | 4.76d |  | Bùi Tuấn Anh | 26.4h | 6,261,750 | Task 44 | Báo cáo kiểm thử | Bùi Tuấn Anh |
| 50 | 5.6 | 45. Kiểm thử hiệu năng và bảo mật | 3.48d | 2026-12-28 | 2027-01-01 | 45, 47 | 0d |  | Phạm Đoàn Bảo Thiên | 27.87h | 3,965,775 | Task 45 | Báo cáo kiểm thử | Phạm Đoàn Bảo Thiên |
| 51 | 5.7 | 46. Kiểm thử toàn hệ thống (UAT) | 4.58d | 2027-01-01 | 2027-01-07 | 46, 47, 48, 49, 50 | 0d |  | Bùi Tuấn Anh | 36.67h | 8,696,875 | Task 46 | Báo cáo kiểm thử | Bùi Tuấn Anh |
| 52 | 5.8 | 47. Sửa lỗi & hoàn thiện | 4.58d | 2027-01-07 | 2027-01-14 | 51 | 0d |  | Bùi Quốc Luýt; Vũ Quang Minh; Bạch Minh Quang | 110h | 15,654,375 | Task 47 | Báo cáo kiểm thử | Bùi Quốc Luýt, Vũ Quang Minh, Bạch Minh Quang |

Notes:
- 29: Cửa sổ 26/12/202615/02/2027. / TBVT: máy tính 15.000.000 + Cloud Dev/Staging 3.600.000 + máy quét 2.400.000 = 21.000.000. / Chi khác: tem mã vạch 1.000.000 + OT 10.000.000 = 11.000.000.
- 30: Spring Boot 3 + ReactJS/TypeScript, Docker, kho mã, quy ước code, pipeline.
- 31: JWT, đổi mật khẩu, khóa sau 5 lần sai; vai trò và kho phụ trách (UC-1.1, UC-1.2).
- 32: CRUD loại, màu, kích thước, NCC, kho, vị trí (UC-2.3, UC-2.4, UC-2.5).
- 33: Sản phẩm, biến thể màu × size, sinh SKU, tìm/lọc (UC-2.1, UC-2.2).
- 34: Tăng/trừ/điều chỉnh có khóa dòng FOR UPDATE; thẻ kho chỉ thêm, dùng chung mọi nghiệp vụ.
- 35: Phiếu nhập theo NCC, quét SKU, giao dịch nguyên tử cộng tồn + thẻ kho (UC-3.1).
- 36: Yêu cầu xuất kèm mã đơn; không cho tồn âm (UC-3.2, UC-3.3).
- 37: Hai bước xuất đi và xác nhận nhận tại kho đích (UC-3.4).
- 38: Phiếu kiểm kê, chênh lệch = thực tế − hệ thống; duyệt mới sinh phiếu điều chỉnh (UC-3.5, UC-3.6).
- 39: Nhập lại hàng tốt, tách hàng lỗi, xuất hàng đổi, tiền chênh lệch (UC-3.7).
- 40: Phiếu hủy hàng lỗi/hỏng; chỉ trừ tồn sau khi Quản lý duyệt (UC-3.8).
- 41: Tra cứu theo kho/SP/màu/size/vị trí; cảnh báo hết/sắp hết; lịch sử biến động (UC-4.1, 4.2, 4.4).
- 42: 6 báo cáo: tồn, nhập, xuất, NXT, kiểm kê, tồn lâu; xuất .xlsx Apache POI (UC-4.3).
- 43: 10 màn hình ReactJS, menu theo quyền, máy quét mã vạch, REST API.
- 44: Cửa sổ 16/02/202715/03/2027. / TBVT: máy tính 7.500.000 + Cloud Testing 2.500.000 + máy tính bảng 1.600.000 = 11.600.000. / Chi khác: UAT 3.000.000 + OT sửa lỗi 8.000.000 = 11.000.000.
- 45: Kết nối UIdịch vụ; kho/kiểm kê/báo cáo đều đổi tồn qua dịch vụ Tồn kho và thẻ kho.
- 46: Đăng nhập, khóa tài khoản, RBAC; CRUD danh mục, sinh SKU không trùng.
- 47: Cộng/trừ tồn, thẻ kho; hai phiếu xuất đồng thời không làm tồn âm (NFR-04).
- 48: Chênh lệch, duyệt điều chỉnh, phân loại hàng trả, hủy hàng chỉ sau duyệt.
- 49: Tồn cuối = tồn đầu + nhập − xuất ± điều chỉnh; cảnh báo tồn thấp; file Excel.
- 50: Tra cứu < 2s / 50.000 biến thể / 100 user; NXT tháng < 10s; HTTPS, hết phiên, bcrypt.
- 51: User doanh nghiệp chạy nhậpxuấtkiểm kêbáo cáo; ghi nhận lỗi và góp ý.
- 52: 3 thành viên song song (mỗi người 4,583 manday): sửa lỗi kiểm thử, hoàn thiện trước nghiệm thu.

| ID | WBS | Task | Duration | Start | Finish | Predecessors | Total slack | Deadline | Resources | Work | Cost | Text1 | Text2 | Text3 |
| --- | --- | --- | --- | --- | --- | --- | --- | --- | --- | --- | --- | --- | --- | --- |
| 53 | 6 | **F. Triển khai & bàn giao** | 10.08d | 2027-01-14 | 2027-01-28 |  | 0d |  |  | 107.07h | 39,006,725 |  |  |  |
| 54 | 6.1 | 48. Chuẩn bị môi trường triển khai | 2.2d | 2027-01-14 | 2027-01-18 | 52 | 0d |  | Bùi Quốc Luýt | 17.6h | 2,504,700 | Task 48 | Tài liệu cấu hình hệ thống | Bùi Quốc Luýt |
| 55 | 6.2 | 49. Chuyển đổi dữ liệu và triển khai hệ thống | 3.48d | 2027-01-18 | 2027-01-21 | 54 | 0d |  | Vũ Quang Minh | 27.87h | 3,965,775 | Task 49 | Biên bản nghiệm thu | Vũ Quang Minh |
| 56 | 6.3 | 50. Viết tài liệu hướng dẫn | 3.3d | 2027-01-18 | 2027-01-21 | 54 | 0.18d |  | Phạm Đoàn Bảo Thiên | 26.4h | 3,757,050 | Task 50 | Tài liệu hướng dẫn | Phạm Đoàn Bảo Thiên |
| 57 | 6.4 | 51. Báo cáo nghiệm thu | 2.2d | 2027-01-22 | 2027-01-26 | 55, 56 | 0d |  | Bùi Tuấn Anh | 17.6h | 4,174,500 | Task 51 | Báo cáo nghiệm thu | Bùi Tuấn Anh |
| 58 | 6.5 | 52. Đào tạo người dùng | 2.2d | 2027-01-26 | 2027-01-28 | 57 | 0d | 2027-03-31 | Bạch Minh Quang | 17.6h | 2,504,700 | Task 52 | Xác nhận bàn giao | Bạch Minh Quang |

Notes:
- 53: Cửa sổ 16/03/202731/03/2027. / TBVT: máy tính 3.750.000 + máy chủ app 3.500.000 + CSDL 4.500.000 + lưu trữ 500.000 + tên miền 850.000 = 13.100.000. / Chi khác: in tài liệu 2.000.000 + đào tạo 4.000.000 + OT chuyển đổi 3.000.000 = 9.000.000.
- 54: Máy chủ app, CSDL, Nginx HTTPS, sao lưu hằng ngày giữ 30 bản.
- 55: Chuyển danh mục và tồn đầu kỳ từ Excel; triển khai kho tổng và cửa hàng.
- 56: Hướng dẫn theo vai trò Quản lý, NV kho, NV bán hàng và tài liệu vận hành.
- 57: Tổng hợp kết quả, kiểm thử, đối chiếu mục tiêu, hồ sơ nghiệm thu.
- 58: Hướng dẫn NV kho/cửa hàng, máy quét mã vạch; hỗ trợ vận hành ban đầu.
