# Xây dựng hệ thống quản trị nhân sự (HRMS) cho SME

Schedule from MS Project, 2026-09-01 to 2027-02-26, costs in đ.
VB2-CNTT-K69(1)-N02
Nhóm 02 - B2CQ-CNTT-K69(01)
Tổng kinh phí được duyệt 640.000.000 đ. Chi phí trong file = công lao động + vật tư thiết bị + chi khác (không gồm Dự phòng 57.025.550 đ - quỹ dự phòng quản lý).

## Calendars

- Standard: Mon-Fri 08:00-12:00, 13:00-17:00; Sat-Sun off.

## Resources

| Resource | Group | Rate | Notes |
| --- | --- | --- | --- |
| Trần Đức Cường | Chủ nhiệm dự án (Giám đốc dự án) | 237188 | Hệ số nhiệm vụ 0.75 × 2.530.000 đ = 1,897,500 đ/ngày công. Trần tải 60 person-day. |
| Lê Xuân Bách | Thành viên chính (Kiến trúc sư trưởng) | 189750 | Hệ số nhiệm vụ 0.6 × 2.530.000 đ = 1,518,000 đ/ngày công. Trần tải 60 person-day. |
| Bùi Tiến Thành | Thành viên chính (DevOps & Test Lead) | 189750 | Hệ số nhiệm vụ 0.6 × 2.530.000 đ = 1,518,000 đ/ngày công. Trần tải 60 person-day. |
| Nguyễn Phương Thảo | Thành viên (Phân tích nghiệp vụ - SRS) | 173938 | Hệ số nhiệm vụ 0.55 × 2.530.000 đ = 1,391,500 đ/ngày công. Trần tải 60 person-day. |
| Mai Công Trà Giang | Thành viên (Phân tích nghiệp vụ - Khảo sát) | 173938 | Hệ số nhiệm vụ 0.55 × 2.530.000 đ = 1,391,500 đ/ngày công. Trần tải 60 person-day. |
| Cloud môi trường Development | Vật tư thiết bị |  |  |
| Cloud môi trường Staging | Vật tư thiết bị |  |  |
| License Jira/Confluence | Vật tư thiết bị |  |  |
| License Figma | Vật tư thiết bị |  |  |
| License SonarQube | Vật tư thiết bị |  |  |
| License công cụ kiểm thử hiệu năng & bảo mật | Vật tư thiết bị |  |  |
| Cloud môi trường Production | Vật tư thiết bị |  |  |
| Dịch vụ sao lưu & giám sát | Vật tư thiết bị |  |  |
| Chứng thư số SSL | Vật tư thiết bị |  |  |
| Thiết bị tích hợp máy chấm công | Vật tư thiết bị |  |  |
| Đi lại khảo sát As-Is | Chi khác |  |  |
| Đi lại hỗ trợ UAT & đào tạo | Chi khác |  |  |
| Đi lại hỗ trợ hyper-care | Chi khác |  |  |
| Công tác phí khảo sát chốt công | Chi khác |  |  |
| Workshop xác nhận SRS | Chi khác |  |  |
| Hội nghị đào tạo | Chi khác |  |  |
| Tổ chức demo | Chi khác |  |  |
| Họp Ban Chỉ đạo - CCB - nghiệm thu | Chi khác |  |  |
| In ấn hồ sơ quản trị dự án | Chi khác |  |  |
| In tài liệu đào tạo - User/Admin Guide | Chi khác |  |  |
| Văn phòng phẩm | Chi khác |  |  |
| Chi phí quản lý dự án (5%) | Chi khác |  |  |

## Schedule

| ID | WBS | Task | Type | Duration | Start | Finish | Predecessors | Total slack | Free slack | Deadline | Resources | Work | Cost | Người thực hiện |
| --- | --- | --- | --- | --- | --- | --- | --- | --- | --- | --- | --- | --- | --- | --- |
| 1 | A | **A. NHÓM QUY TRÌNH KHỞI TẠO (INITIATING PROCESS GROUP)** |  | 6.7d | 2026-09-01 | 2026-09-09 |  | 0d |  |  |  | 63.2h | 14,383,050 |  |
| 2 | A.1 | **A.1. Khởi tạo dự án và phê duyệt Project Charter** |  | 6.7d | 2026-09-01 | 2026-09-09 |  | 0d |  |  |  | 63.2h | 14,383,050 |  |
| 3 | 1 | Xác định Sponsor và Ban Chỉ đạo |  | 1.2d | 2026-09-01 | 2026-09-02 |  | 0d |  |  | Trần Đức Cường | 9.6h | 2,277,000 | Trần Đức Cường |
| 4 | 2 | Soạn thảo Project Charter (Tôn chỉ dự án) |  | 2.1d | 2026-09-02 | 2026-09-04 | 3 | 0d |  |  | Trần Đức Cường | 16.8h | 3,984,750 | Trần Đức Cường |
| 5 | 3 | Lập Stakeholder Register v1.0 |  | 1.2d | 2026-09-02 | 2026-09-03 | 3 | 3.1d |  |  | Mai Công Trà Giang | 9.6h | 1,669,800 | Mai Công Trà Giang |
| 6 | 4 | Hoàn thiện Thuyết minh đề tài |  | 2.2d | 2026-09-04 | 2026-09-08 | 4 | 0d |  |  | Trần Đức Cường | 17.6h | 4,174,500 | Trần Đức Cường |
| 7 | 5 | Trình bày và phê duyệt hồ sơ khởi tạo (M1) |  | 1.2d | 2026-09-08 | 2026-09-09 | 5, 6 | 0d |  |  | Trần Đức Cường | 9.6h | 2,277,000 | Trần Đức Cường |
| 8 | M1 | M1 - Phê duyệt Project Charter | milestone | 0d | 2026-09-09 | 2026-09-09 | 7 | 0d |  | 2026-09-11 |  |  |  |  |
| 9 | B | **B. NHÓM QUY TRÌNH LẬP KẾ HOẠCH (PLANNING PROCESS GROUP)** |  | 15.1d | 2026-09-09 | 2026-09-30 |  | 0d |  |  |  | 274.4h | 59,923,050 |  |
| 10 | B.1 | **B.1. Lập kế hoạch quản trị lõi (Project Management Plan)** |  | 15.1d | 2026-09-09 | 2026-09-30 |  | 0d |  |  |  | 183.2h | 41,580,550 |  |
| 11 | 6 | Phân rã cấu trúc công việc (WBS + Dictionary) |  | 3.5d | 2026-09-09 | 2026-09-15 | 8 | 0d |  |  | Trần Đức Cường | 28h | 6,641,250 | Trần Đức Cường |
| 12 | 7 | Ước lượng PERT cho các work package |  | 2d | 2026-09-15 | 2026-09-17 | 11 | 0d |  |  | Trần Đức Cường | 16h | 3,795,000 | Trần Đức Cường |
| 13 | 8 | Lập sơ đồ mạng và xác định đường găng (CPM) |  | 2.2d | 2026-09-17 | 2026-09-21 | 12 | 0d |  |  | Trần Đức Cường | 17.6h | 4,174,500 | Trần Đức Cường |
| 14 | 9 | Lập sơ đồ Gantt và các cột mốc M1-M8 |  | 2d | 2026-09-21 | 2026-09-23 | 13 | 0d |  |  | Trần Đức Cường | 16h | 3,795,000 | Trần Đức Cường |
| 15 | 10 | Lập Cost Baseline và biểu đồ S-curve |  | 2.2d | 2026-09-23 | 2026-09-25 | 14 | 0d |  |  | Trần Đức Cường | 17.6h | 4,174,500 | Trần Đức Cường |
| 16 | 11 | Lập Quality Management Plan |  | 1.6d | 2026-09-15 | 2026-09-16 | 11 | 7.8d | 0d |  | Nguyễn Phương Thảo | 12.8h | 2,226,400 | Nguyễn Phương Thảo |
| 17 | 12 | Lập Resource Management Plan + Ma trận RACI |  | 1.7d | 2026-09-15 | 2026-09-16 | 11 | 5.6d | 0d |  | Trần Đức Cường | 13.6h | 3,225,750 | Trần Đức Cường |
| 18 | 13 | Lập Communication Management Plan |  | 1.1d | 2026-09-16 | 2026-09-17 | 5, 17 | 5.6d | 0d |  | Mai Công Trà Giang | 8.8h | 1,530,650 | Mai Công Trà Giang |
| 19 | 14 | Lập Risk Management Plan + Risk Register v1.0 |  | 2.4d | 2026-09-17 | 2026-09-21 | 12 | 5d |  |  | Trần Đức Cường | 19.2h | 4,554,000 | Trần Đức Cường |
| 20 | 15 | Lập Procurement Management Plan |  | 1d | 2026-09-25 | 2026-09-28 | 15 | 0d |  |  | Trần Đức Cường | 8h | 1,897,500 | Trần Đức Cường |
| 21 | 16 | Lập Stakeholder Engagement Plan |  | 1d | 2026-09-18 | 2026-09-18 | 18 | 5.6d |  |  | Mai Công Trà Giang | 8h | 1,391,500 | Mai Công Trà Giang |
| 22 | 17 | Tích hợp thành Project Management Plan |  | 2.2d | 2026-09-28 | 2026-09-30 | 14, 15, 16, 17, 18, 19, 20, 21 | 0d |  |  | Trần Đức Cường | 17.6h | 4,174,500 | Trần Đức Cường |
| 23 | B.2 | **B.2. Lập kế hoạch quản lý cấu hình và thay đổi** |  | 4.2d | 2026-09-15 | 2026-09-21 |  | 7.4d |  |  |  | 38.4h | 8,880,300 |  |
| 24 | 18 | Lập Configuration Management Plan |  | 1.6d | 2026-09-15 | 2026-09-16 | 11 | 7.4d | 0d |  | Trần Đức Cường | 12.8h | 3,036,000 | Trần Đức Cường |
| 25 | 19 | Lập Change Management Plan |  | 1.6d | 2026-09-16 | 2026-09-18 | 24 | 7.4d | 0d |  | Trần Đức Cường | 12.8h | 3,036,000 | Trần Đức Cường |
| 26 | 20 | Soạn Điều lệ Change Control Board (CCB Charter) |  | 1d | 2026-09-18 | 2026-09-21 | 25 | 7.4d |  |  | Trần Đức Cường | 8h | 1,897,500 | Trần Đức Cường |
| 27 | 21 | Thiết kế mẫu Change Request Form |  | 0.6d | 2026-09-18 | 2026-09-18 | 25 | 7.8d |  |  | Bùi Tiến Thành | 4.8h | 910,800 | Bùi Tiến Thành |

Notes:
- 2: Phân công: Trần Đức Cường (chủ trì) / Mai Công Trà Giang (phối hợp Stakeholder Register)
- 3: Mô tả: Nhận diện Sponsor, Ban Chỉ đạo dự án, các bên liên quan cấp cao (khách hàng, đội IT vận hành) / Sản phẩm bàn giao: Danh sách Sponsor và Ban Chỉ đạo / (Sponsor & Steering Committee List) / PERT (person-day): MO=1, ML=1, MP=2, EST=1.2, Tăng thêm=0, EST chốt=1.2 / Thời gian theo WBS: 02/09/2026 - 03/09/2026 / Sản phẩm bàn giao: Danh sách Sponsor và Ban Chỉ đạo (Sponsor & Steering Committee List)
- 4: Mô tả: Định nghĩa mục tiêu, phạm vi cấp cao, ràng buộc, tiêu chí thành công, quyền hạn Giám đốc dự án / Sản phẩm bàn giao: Tôn chỉ dự án / (Project Charter) / PERT (person-day): MO=1, ML=2, MP=3, EST=2, Tăng thêm=0.1, EST chốt=2.1 / Thời gian theo WBS: 03/09/2026 - 05/09/2026 / Sản phẩm bàn giao: Tôn chỉ dự án (Project Charter)
- 5: Mô tả: Danh sách stakeholder + phân loại theo ma trận Quyền lực/Quan tâm (Power/Interest Grid) / Sản phẩm bàn giao: Sổ đăng ký các bên liên quan / (Stakeholder Register v1.0) / PERT (person-day): MO=1, ML=1, MP=2, EST=1.2, Tăng thêm=0, EST chốt=1.2 / Thời gian theo WBS: 05/09/2026 - 07/09/2026 / Sản phẩm bàn giao: Sổ đăng ký các bên liên quan (Stakeholder Register v1.0)
- 6: Mô tả: Rà soát và hoàn thiện thuyết minh đề tài để trình Trường CNTT&TT phê duyệt / Sản phẩm bàn giao: Thuyết minh đề tài / (Project Proposal / Research Proposal) / PERT (person-day): MO=1, ML=2, MP=3, EST=2, Tăng thêm=0.2, EST chốt=2.2 / Thời gian theo WBS: 08/09/2026 - 10/09/2026 / Sản phẩm bàn giao: Thuyết minh đề tài (Project Proposal / Research Proposal)
- 7: Mô tả: Trình bày Project Charter với Ban Chỉ đạo, xử lý phản hồi, ký duyệt cột mốc M1 / Sản phẩm bàn giao: Biên bản phê duyệt Project Charter / (Charter Approval Minutes) / PERT (person-day): MO=0.5, ML=1, MP=2, EST=1.1, Tăng thêm=0.1, EST chốt=1.2 / Thời gian theo WBS: 10/09/2026 - 11/09/2026 / Sản phẩm bàn giao: Biên bản phê duyệt Project Charter (Charter Approval Minutes)
- 8: Cột mốc dự án. Mốc cam kết (Deadline): 11/09/2026.
- 10: Phân công: Trần Đức Cường (chủ trì) / Mai Công Trà Giang (phối hợp truyền thông & stakeholder) / Nguyễn Phương Thảo (phối hợp chất lượng)
- 11: Mô tả: Phân rã đến work package ≤ 40 giờ, có định nghĩa từng gói trong WBS Dictionary / Sản phẩm bàn giao: Bảng phân rã công việc + Từ điển WBS / (Work Breakdown Structure + WBS Dictionary) / PERT (person-day): MO=2, ML=3, MP=5, EST=3.2, Tăng thêm=0.3, EST chốt=3.5 / Thời gian theo WBS: 14/09/2026 - 17/09/2026 / Sản phẩm bàn giao: Bảng phân rã công việc + Từ điển WBS (Work Breakdown Structure + WBS Dictionary)
- 12: Mô tả: Ước lượng ba điểm (MO/ML/MP) cho thời gian và chi phí; xác định EST theo công thức PERT / Sản phẩm bàn giao: Bảng ước lượng PERT / (PERT Estimation Sheet) / PERT (person-day): MO=1, ML=2, MP=3, EST=2, Tăng thêm=0, EST chốt=2.0 / Thời gian theo WBS: 17/09/2026 - 19/09/2026 / Sản phẩm bàn giao: Bảng ước lượng PERT (PERT Estimation Sheet)
- 13: Mô tả: Xác định quan hệ trước-sau giữa work package, tính đường găng và độ trôi (float/slack) / Sản phẩm bàn giao: Sơ đồ mạng và đường găng / (Network Diagram & Critical Path) / PERT (person-day): MO=1, ML=2, MP=3, EST=2, Tăng thêm=0.2, EST chốt=2.2 / Thời gian theo WBS: 19/09/2026 - 22/09/2026 / Sản phẩm bàn giao: Sơ đồ mạng và đường găng (Network Diagram & Critical Path)
- 14: Mô tả: Trình bày lịch biểu tổng thể trên MS Project, đánh dấu 8 milestone chính của dự án / Sản phẩm bàn giao: Sơ đồ Gantt và danh mục cột mốc / (Gantt Chart & Milestone Schedule) / PERT (person-day): MO=1, ML=2, MP=3, EST=2, Tăng thêm=0, EST chốt=2.0 / Thời gian theo WBS: 22/09/2026 - 24/09/2026 / Sản phẩm bàn giao: Sơ đồ Gantt và danh mục cột mốc (Gantt Chart & Milestone Schedule)
- 15: Mô tả: Phân bổ 640 triệu đồng theo 6 tháng làm cơ sở cho EVM; vẽ S-curve Planned Value / Sản phẩm bàn giao: Đường cơ sở chi phí và S-curve / (Cost Baseline & S-curve) / PERT (person-day): MO=1, ML=2, MP=3, EST=2, Tăng thêm=0.2, EST chốt=2.2 / Thời gian theo WBS: 24/09/2026 - 26/09/2026 / Sản phẩm bàn giao: Đường cơ sở chi phí và S-curve (Cost Baseline & S-curve)
- 16: Mô tả: Xác lập tiêu chuẩn chất lượng theo ISO/IEC 25010, checklist nghiệm thu deliverable / Sản phẩm bàn giao: Kế hoạch quản lý chất lượng / (Quality Management Plan) / PERT (person-day): MO=1, ML=1.5, MP=2.5, EST=1.6, Tăng thêm=0, EST chốt=1.6 / Thời gian theo WBS: 25/09/2026 - 27/09/2026 / Sản phẩm bàn giao: Kế hoạch quản lý chất lượng (Quality Management Plan)
- 17: Mô tả: Cơ cấu nhóm, phân vai trò theo person-month, ma trận RACI cho toàn bộ WBS / Sản phẩm bàn giao: Kế hoạch quản lý nguồn lực + Ma trận RACI / (Resource Management Plan + RACI Matrix) / PERT (person-day): MO=1, ML=1.5, MP=2.5, EST=1.6, Tăng thêm=0.1, EST chốt=1.7 / Thời gian theo WBS: 26/09/2026 - 28/09/2026 / Sản phẩm bàn giao: Kế hoạch quản lý nguồn lực + Ma trận RACI (Resource Management Plan + RACI Matrix)
- 18: Mô tả: Ma trận truyền thông: ai nhận báo cáo nào, tần suất, kênh, người phê duyệt / Sản phẩm bàn giao: Kế hoạch quản lý truyền thông / (Communication Management Plan) / PERT (person-day): MO=0.5, ML=1, MP=2, EST=1.1, Tăng thêm=0, EST chốt=1.1 / Thời gian theo WBS: 28/09/2026 - 29/09/2026 / Sản phẩm bàn giao: Kế hoạch quản lý truyền thông (Communication Management Plan)
- 19: Mô tả: RBS 4 nhóm, ma trận 5x5, phương án ứng phó AT/TR/MI/AC, đăng ký ban đầu ~15 rủi ro / Sản phẩm bàn giao: Kế hoạch quản lý rủi ro + Sổ đăng ký rủi ro / (Risk Management Plan + Risk Register v1.0) / PERT (person-day): MO=1, ML=2, MP=4, EST=2.2, Tăng thêm=0.2, EST chốt=2.4 / Thời gian theo WBS: 29/09/2026 - 02/10/2026 / Sản phẩm bàn giao: Kế hoạch quản lý rủi ro + Sổ đăng ký rủi ro (Risk Management Plan + Risk Register v1.0)
- 20: Mô tả: Kế hoạch mua sắm hạ tầng cloud, license công cụ QLDA và công cụ phát triển / Sản phẩm bàn giao: Kế hoạch quản lý mua sắm / (Procurement Management Plan) / PERT (person-day): MO=0.5, ML=1, MP=1.5, EST=1, Tăng thêm=0, EST chốt=1.0 / Thời gian theo WBS: 02/10/2026 - 03/10/2026 / Sản phẩm bàn giao: Kế hoạch quản lý mua sắm (Procurement Management Plan)
- 21: Mô tả: Chiến lược tương tác với từng nhóm stakeholder theo Power/Interest Grid / Sản phẩm bàn giao: Kế hoạch tương tác các bên liên quan / (Stakeholder Engagement Plan) / PERT (person-day): MO=0.5, ML=1, MP=1.5, EST=1, Tăng thêm=0, EST chốt=1.0 / Thời gian theo WBS: 03/10/2026 - 05/10/2026 / Sản phẩm bàn giao: Kế hoạch tương tác các bên liên quan (Stakeholder Engagement Plan)
- 22: Mô tả: Đóng gói 10 Management Plan thành hồ sơ thống nhất, trình Ban Chỉ đạo phê duyệt (M2) / Sản phẩm bàn giao: Kế hoạch quản trị dự án tổng thể / (Integrated Project Management Plan) / PERT (person-day): MO=1, ML=2, MP=3, EST=2, Tăng thêm=0.2, EST chốt=2.2 / Thời gian theo WBS: 05/10/2026 - 08/10/2026 / Sản phẩm bàn giao: Kế hoạch quản trị dự án tổng thể (Integrated Project Management Plan)
- 23: Phân công: Trần Đức Cường (chủ trì) / Bùi Tiến Thành (phối hợp biểu mẫu Change Request)
- 24: Mô tả: Quy định version control, môi trường Dev/Staging/Prod, chiến lược backup và sao lưu / Sản phẩm bàn giao: Kế hoạch quản lý cấu hình / (Configuration Management Plan) / PERT (person-day): MO=1, ML=1.5, MP=2.5, EST=1.6, Tăng thêm=0, EST chốt=1.6 / Thời gian theo WBS: 05/10/2026 - 07/10/2026 / Sản phẩm bàn giao: Kế hoạch quản lý cấu hình (Configuration Management Plan)
- 25: Mô tả: Quy trình xử lý CR: Change Request → Impact Analysis → CCB → Baseline Update / Sản phẩm bàn giao: Kế hoạch quản lý thay đổi / (Change Management Plan) / PERT (person-day): MO=1, ML=1.5, MP=2.5, EST=1.6, Tăng thêm=0, EST chốt=1.6 / Thời gian theo WBS: 06/10/2026 - 08/10/2026 / Sản phẩm bàn giao: Kế hoạch quản lý thay đổi (Change Management Plan)
- 26: Mô tả: Thành phần CCB, quyền hạn, quy trình họp, ngưỡng thay đổi cần phê duyệt / Sản phẩm bàn giao: Điều lệ CCB / (CCB Charter) / PERT (person-day): MO=0.5, ML=1, MP=1.5, EST=1, Tăng thêm=0, EST chốt=1.0 / Thời gian theo WBS: 08/10/2026 - 09/10/2026 / Sản phẩm bàn giao: Điều lệ CCB (CCB Charter)
- 27: Mô tả: Biểu mẫu chuẩn tiếp nhận và xử lý Change Request trong suốt dự án / Sản phẩm bàn giao: Mẫu Yêu cầu thay đổi / (Change Request Form Template) / PERT (person-day): MO=0.5, ML=0.5, MP=1, EST=0.6, Tăng thêm=0, EST chốt=0.6 / Thời gian theo WBS: 09/10/2026 - 09/10/2026 / Sản phẩm bàn giao: Mẫu Yêu cầu thay đổi (Change Request Form Template)

| ID | WBS | Task | Type | Duration | Start | Finish | Predecessors | Total slack | Free slack | Deadline | Resources | Work | Cost | Người thực hiện |
| --- | --- | --- | --- | --- | --- | --- | --- | --- | --- | --- | --- | --- | --- | --- |
| 28 | B.3 | **B.3. Chi tiết hóa kế hoạch các giai đoạn SDLC (Rolling Wave Planning)** |  | 10d | 2026-09-16 | 2026-09-30 |  | 0d |  |  |  | 52.8h | 9,462,200 |  |
| 29 | 22 | Lập Development Plan |  | 2.2d | 2026-09-16 | 2026-09-18 | 24 | 7.8d |  |  | Bùi Tiến Thành | 17.6h | 3,339,600 | Bùi Tiến Thành |
| 30 | 23 | Lập Test Plan (V-Model 4 tầng) |  | 2.2d | 2026-09-16 | 2026-09-18 | 16 | 7.8d |  |  | Nguyễn Phương Thảo | 17.6h | 3,061,300 | Nguyễn Phương Thảo |
| 31 | 24 | Lập Deployment Plan (Phased Rollout) |  | 2.2d | 2026-09-23 | 2026-09-25 | 14 | 3.2d |  |  | Mai Công Trà Giang | 17.6h | 3,061,300 | Mai Công Trà Giang |
| 32 | M2 | M2 - Phê duyệt các Baseline | milestone | 0d | 2026-09-30 | 2026-09-30 | 22, 26, 27, 29, 30, 31 | 0d |  | 2026-10-09 |  |  |  |  |
| 33 | C | **C. NHÓM QUY TRÌNH THỰC HIỆN (EXECUTING) — SDLC 6 GIAI ĐOẠN** |  | 106.7d | 2026-09-30 | 2027-02-26 |  | 0d |  |  |  | 1753.6h | 323,896,150 |  |
| 34 | C.1 | **C.1. [SDLC-Scope] Khảo sát công nghệ và thiết lập môi trường** |  | 11.1d | 2026-09-30 | 2026-10-15 |  | 69d |  |  |  | 119.2h | 23,644,900 |  |
| 35 | 25 | Khảo sát công nghệ (framework, DB, cloud) |  | 3.5d | 2026-09-30 | 2026-10-06 | 32 | 69d | 0d |  | Bùi Tiến Thành | 28h | 5,313,000 | Bùi Tiến Thành |
| 36 | 26 | So sánh và lựa chọn công nghệ |  | 2.2d | 2026-10-06 | 2026-10-08 | 35 | 69d | 0d |  | Lê Xuân Bách | 17.6h | 3,339,600 | Lê Xuân Bách |
| 37 | 27 | Thiết lập môi trường Development |  | 1.1d | 2026-10-08 | 2026-10-09 | 36 | 69d | 0d |  | Bùi Tiến Thành; Cloud môi trường Development | 8.8h | 1,679,800 | Bùi Tiến Thành |
| 38 | 28 | Thiết lập môi trường Staging |  | 1.1d | 2026-10-09 | 2026-10-12 | 37 | 69d | 0d |  | Bùi Tiến Thành; Cloud môi trường Staging | 8.8h | 1,679,800 | Bùi Tiến Thành |
| 39 | 29 | Thiết lập môi trường Production |  | 2.2d | 2026-10-12 | 2026-10-14 | 38 | 96.7d |  |  | Lê Xuân Bách; Chứng thư số SSL | 17.6h | 3,349,600 | Lê Xuân Bách |
| 40 | 30 | Thiết lập bộ công cụ QLDA |  | 1.6d | 2026-09-30 | 2026-10-02 | 32 | 77.5d | 8.5d |  | Trần Đức Cường; License Jira/Confluence | 12.8h | 3,046,000 | Trần Đức Cường |
| 41 | 31 | Thiết lập CI/CD pipeline sơ bộ |  | 2.2d | 2026-10-12 | 2026-10-14 | 38 | 69d | 0d |  | Bùi Tiến Thành | 17.6h | 3,339,600 | Bùi Tiến Thành |
| 42 | 32 | Ban hành quy định vận hành công cụ |  | 1d | 2026-10-14 | 2026-10-15 | 40, 41 | 69d |  |  | Trần Đức Cường | 8h | 1,897,500 | Trần Đức Cường |
| 43 | C.2 | **C.2. [SDLC-Analysis] Khảo sát hiện trạng As-Is** |  | 12.9d | 2026-09-30 | 2026-10-19 |  | 0d |  |  |  | 159.2h | 27,710,850 |  |
| 44 | 33 | Xây dựng bộ câu hỏi phỏng vấn |  | 1d | 2026-09-30 | 2026-10-01 | 32 | 0d |  |  | Mai Công Trà Giang | 8h | 1,391,500 | Mai Công Trà Giang |
| 45 | 34 | Phỏng vấn nhóm HR (3-5 người) |  | 2.2d | 2026-10-01 | 2026-10-05 | 44 | 0d |  |  | Mai Công Trà Giang; Đi lại khảo sát As-Is | 17.6h | 3,071,300 | Mai Công Trà Giang |
| 46 | 35 | Phỏng vấn nhóm Quản lý phòng ban (3-5 người) |  | 2.2d | 2026-10-06 | 2026-10-08 | 45 | 0d |  |  | Mai Công Trà Giang | 17.6h | 3,061,300 | Mai Công Trà Giang |
| 47 | 36 | Phỏng vấn nhóm Nhân viên (3-5 người) |  | 1.7d | 2026-10-01 | 2026-10-05 | 44 | 2.7d |  |  | Nguyễn Phương Thảo | 13.6h | 2,365,550 | Nguyễn Phương Thảo |
| 48 | 37 | Quan sát chu kỳ chấm công - chốt công |  | 3.3d | 2026-10-01 | 2026-10-07 | 44 | 1.1d |  |  | Mai Công Trà Giang; Công tác phí khảo sát chốt công | 26.4h | 4,601,950 | Mai Công Trà Giang |
| 49 | 38 | Phân tích tài liệu nghiệp vụ hiện có |  | 2d | 2026-10-01 | 2026-10-05 | 44 | 2.4d |  |  | Nguyễn Phương Thảo | 16h | 2,783,000 | Nguyễn Phương Thảo |
| 50 | 39 | Mô hình hóa quy trình BPMN As-Is |  | 3.5d | 2026-10-08 | 2026-10-13 | 46, 47, 48, 49 | 0d |  |  | Mai Công Trà Giang | 28h | 4,870,250 | Mai Công Trà Giang |
| 51 | 40 | Xác định và lượng hóa điểm nghẽn |  | 2d | 2026-10-13 | 2026-10-15 | 50 | 0d |  |  | Mai Công Trà Giang | 16h | 2,783,000 | Mai Công Trà Giang |
| 52 | 41 | Lập báo cáo khảo sát hiện trạng As-Is |  | 2d | 2026-10-15 | 2026-10-19 | 51 | 0d |  |  | Nguyễn Phương Thảo | 16h | 2,783,000 | Nguyễn Phương Thảo |

Notes:
- 28: Phân công: Bùi Tiến Thành (chủ trì Development Plan) / Nguyễn Phương Thảo (phối hợp Test Plan) / Mai Công Trà Giang (phối hợp Deployment Plan)
- 29: Mô tả: Kiến trúc CI/CD, coding standard, quy định branching (Git Flow), quy trình code review, cấu trúc sprint Incremental / Sản phẩm bàn giao: Kế hoạch phát triển phần mềm / (Development Plan) / PERT (person-day): MO=1, ML=2, MP=3, EST=2, Tăng thêm=0.2, EST chốt=2.2 / Thời gian theo WBS: 08/10/2026 - 09/10/2026 / Sản phẩm bàn giao: Kế hoạch phát triển phần mềm (Development Plan)
- 30: Mô tả: Chiến lược 4 tầng Unit-Integration-System-UAT, tiêu chí Entry/Exit từng tầng, ma trận acceptance / Sản phẩm bàn giao: Kế hoạch kiểm thử / (Test Plan) / PERT (person-day): MO=1, ML=2, MP=3, EST=2, Tăng thêm=0.2, EST chốt=2.2 / Thời gian theo WBS: 08/10/2026 - 09/10/2026 / Sản phẩm bàn giao: Kế hoạch kiểm thử (Test Plan)
- 31: Mô tả: Chiến lược M0→M1→M2, kế hoạch Migration, Train-the-Trainer, hyper-care sau go-live / Sản phẩm bàn giao: Kế hoạch triển khai / (Deployment Plan) / PERT (person-day): MO=1, ML=2, MP=3, EST=2, Tăng thêm=0.2, EST chốt=2.2 / Thời gian theo WBS: 08/10/2026 - 09/10/2026 / Sản phẩm bàn giao: Kế hoạch triển khai (Deployment Plan)
- 32: Cột mốc dự án. Mốc cam kết (Deadline): 09/10/2026.
- 34: Phân công: Bùi Tiến Thành (chủ trì) / Lê Xuân Bách (phối hợp kiến trúc & môi trường Production) / Trần Đức Cường (phối hợp công cụ QLDA)
- 35: Mô tả: Nghiên cứu các phương án công nghệ phù hợp SME: React/Vue/Angular; Spring/Node/.NET; PostgreSQL/MySQL; AWS/Azure/GCP / Sản phẩm bàn giao: Báo cáo khảo sát công nghệ / (Technology Survey Report) / PERT (person-day): MO=2, ML=3, MP=5, EST=3.2, Tăng thêm=0.3, EST chốt=3.5 / Thời gian theo WBS: 12/10/2026 - 14/10/2026 / Sản phẩm bàn giao: Báo cáo khảo sát công nghệ (Technology Survey Report)
- 36: Mô tả: So sánh phương án theo chi phí, cộng đồng VN, khả năng mở rộng, bảo mật; kết luận có lập luận / Sản phẩm bàn giao: Báo cáo lựa chọn công nghệ / (Technology Selection Report) / PERT (person-day): MO=1, ML=2, MP=3, EST=2, Tăng thêm=0.2, EST chốt=2.2 / Thời gian theo WBS: 14/10/2026 - 16/10/2026 / Sản phẩm bàn giao: Báo cáo lựa chọn công nghệ (Technology Selection Report)
- 37: Mô tả: Cấu hình VPS/container cho môi trường phát triển của nhóm / Sản phẩm bàn giao: Môi trường Development đã cấu hình / (Development Environment) / PERT (person-day): MO=0.5, ML=1, MP=2, EST=1.1, Tăng thêm=0, EST chốt=1.1 / Thời gian theo WBS: 16/10/2026 - 17/10/2026 / Sản phẩm bàn giao: Môi trường Development đã cấu hình (Development Environment)
- 38: Mô tả: Cấu hình môi trường Staging trên cloud, gần giống Production để kiểm thử tích hợp / Sản phẩm bàn giao: Môi trường Staging đã cấu hình / (Staging Environment) / PERT (person-day): MO=0.5, ML=1, MP=2, EST=1.1, Tăng thêm=0, EST chốt=1.1 / Thời gian theo WBS: 17/10/2026 - 19/10/2026 / Sản phẩm bàn giao: Môi trường Staging đã cấu hình (Staging Environment)
- 39: Mô tả: Cấu hình môi trường Production trên cloud khách hàng, có backup và monitoring / Sản phẩm bàn giao: Môi trường Production đã cấu hình / (Production Environment) / PERT (person-day): MO=1, ML=2, MP=3, EST=2, Tăng thêm=0.2, EST chốt=2.2 / Thời gian theo WBS: 19/10/2026 - 21/10/2026 / Sản phẩm bàn giao: Môi trường Production đã cấu hình (Production Environment)
- 40: Mô tả: Cấu hình Jira/Trello, Git repository, Confluence workspace, Draw.io workspace dùng chung / Sản phẩm bàn giao: Bộ công cụ QLDA đã cấu hình / (PM Toolset) / PERT (person-day): MO=1, ML=1.5, MP=2.5, EST=1.6, Tăng thêm=0, EST chốt=1.6 / Thời gian theo WBS: 20/10/2026 - 22/10/2026 / Sản phẩm bàn giao: Bộ công cụ QLDA đã cấu hình (PM Toolset)
- 41: Mô tả: Cấu hình pipeline build-test-deploy tự động cho 3 môi trường Dev/Staging/Prod / Sản phẩm bàn giao: Đường ống CI/CD sơ bộ / (Initial CI/CD Pipeline) / PERT (person-day): MO=1, ML=2, MP=3, EST=2, Tăng thêm=0.2, EST chốt=2.2 / Thời gian theo WBS: 21/10/2026 - 23/10/2026 / Sản phẩm bàn giao: Đường ống CI/CD sơ bộ (Initial CI/CD Pipeline)
- 42: Mô tả: Quy định naming convention, branching strategy (Git Flow), review process, backup schedule / Sản phẩm bàn giao: Quy định vận hành công cụ / (Tool Governance Standards) / PERT (person-day): MO=0.5, ML=1, MP=1.5, EST=1, Tăng thêm=0, EST chốt=1.0 / Thời gian theo WBS: 23/10/2026 - 24/10/2026 / Sản phẩm bàn giao: Quy định vận hành công cụ (Tool Governance Standards)
- 43: Phân công: Mai Công Trà Giang (chủ trì) / Nguyễn Phương Thảo (phối hợp phỏng vấn & báo cáo)
- 44: Mô tả: Thiết kế bảng hỏi bán cấu trúc cho 3 nhóm HR/Manager/Employee / Sản phẩm bàn giao: Bộ câu hỏi phỏng vấn / (Interview Questionnaire) / PERT (person-day): MO=0.5, ML=1, MP=1.5, EST=1, Tăng thêm=0, EST chốt=1.0 / Thời gian theo WBS: 26/10/2026 - 27/10/2026 / Sản phẩm bàn giao: Bộ câu hỏi phỏng vấn (Interview Questionnaire)
- 45: Mô tả: Phỏng vấn Trưởng phòng HR và chuyên viên HR về quy trình hiện tại / Sản phẩm bàn giao: Biên bản phỏng vấn nhóm HR (ẩn danh) / (HR Group Interview Notes) / PERT (person-day): MO=1, ML=2, MP=3, EST=2, Tăng thêm=0.2, EST chốt=2.2 / Thời gian theo WBS: 27/10/2026 - 29/10/2026 / Sản phẩm bàn giao: Biên bản phỏng vấn nhóm HR (ẩn danh) (HR Group Interview Notes)
- 46: Mô tả: Phỏng vấn các trưởng phòng về nhu cầu duyệt nghỉ phép/OT, xem báo cáo nhân sự / Sản phẩm bàn giao: Biên bản phỏng vấn nhóm Manager (ẩn danh) / (Manager Group Interview Notes) / PERT (person-day): MO=1, ML=2, MP=3, EST=2, Tăng thêm=0.2, EST chốt=2.2 / Thời gian theo WBS: 29/10/2026 - 31/10/2026 / Sản phẩm bàn giao: Biên bản phỏng vấn nhóm Manager (ẩn danh) (Manager Group Interview Notes)
- 47: Mô tả: Phỏng vấn nhân viên các cấp về trải nghiệm chấm công, xin nghỉ, tra cứu thông tin / Sản phẩm bàn giao: Biên bản phỏng vấn nhóm Employee (ẩn danh) / (Employee Group Interview Notes) / PERT (person-day): MO=1, ML=1.5, MP=2.5, EST=1.6, Tăng thêm=0.1, EST chốt=1.7 / Thời gian theo WBS: 31/10/2026 - 03/11/2026 / Sản phẩm bàn giao: Biên bản phỏng vấn nhóm Employee (ẩn danh) (Employee Group Interview Notes)
- 48: Mô tả: Tham dự trực tiếp một chu kỳ chốt công tháng để hiểu quy trình end-to-end / Sản phẩm bàn giao: Nhật ký quan sát nghiệp vụ / (Observation Journal) / PERT (person-day): MO=2, ML=3, MP=4, EST=3, Tăng thêm=0.3, EST chốt=3.3 / Thời gian theo WBS: 03/11/2026 - 06/11/2026 / Sản phẩm bàn giao: Nhật ký quan sát nghiệp vụ (Observation Journal)
- 49: Mô tả: Phân tích biểu mẫu, sổ tay quy trình, báo cáo nhân sự mẫu của khách hàng / Sản phẩm bàn giao: Báo cáo phân tích tài liệu nghiệp vụ / (Document Analysis Report) / PERT (person-day): MO=1, ML=2, MP=3, EST=2, Tăng thêm=0, EST chốt=2.0 / Thời gian theo WBS: 05/11/2026 - 08/11/2026 / Sản phẩm bàn giao: Báo cáo phân tích tài liệu nghiệp vụ (Document Analysis Report)
- 50: Mô tả: Vẽ mô hình BPMN 2.0 cho các quy trình hiện tại: chấm công, đơn nghỉ, chốt công / Sản phẩm bàn giao: Mô hình BPMN As-Is / (BPMN As-Is Models) / PERT (person-day): MO=2, ML=3, MP=5, EST=3.2, Tăng thêm=0.3, EST chốt=3.5 / Thời gian theo WBS: 08/11/2026 - 12/11/2026 / Sản phẩm bàn giao: Mô hình BPMN As-Is (BPMN As-Is Models)
- 51: Mô tả: Xác định số giờ mất, tần suất sai sót, chi phí ẩn của từng điểm nghẽn trong quy trình / Sản phẩm bàn giao: Danh mục điểm nghẽn có lượng hóa / (Quantified Pain Points List) / PERT (person-day): MO=1, ML=2, MP=3, EST=2, Tăng thêm=0, EST chốt=2.0 / Thời gian theo WBS: 10/11/2026 - 13/11/2026 / Sản phẩm bàn giao: Danh mục điểm nghẽn có lượng hóa (Quantified Pain Points List)
- 52: Mô tả: Tổng hợp báo cáo có BPMN As-Is, điểm nghẽn lượng hóa, danh mục input/output, dữ liệu cần quản lý / Sản phẩm bàn giao: Báo cáo khảo sát hiện trạng As-Is / (As-Is Assessment Report) / PERT (person-day): MO=1, ML=2, MP=3, EST=2, Tăng thêm=0, EST chốt=2.0 / Thời gian theo WBS: 12/11/2026 - 14/11/2026 / Sản phẩm bàn giao: Báo cáo khảo sát hiện trạng As-Is (As-Is Assessment Report)

| ID | WBS | Task | Type | Duration | Start | Finish | Predecessors | Total slack | Free slack | Deadline | Resources | Work | Cost | Người thực hiện |
| --- | --- | --- | --- | --- | --- | --- | --- | --- | --- | --- | --- | --- | --- | --- |
| 53 | C.3 | **C.3. [SDLC-Analysis] Đặc tả yêu cầu (SRS) và mô hình To-Be** |  | 15.5d | 2026-10-19 | 2026-11-10 |  | 0d |  |  |  | 168.8h | 29,927,250 |  |
| 54 | 42 | Chuẩn hóa bộ biểu mẫu nghiệp vụ |  | 2d | 2026-10-19 | 2026-10-21 | 52 | 12.4d |  |  | Nguyễn Phương Thảo | 16h | 2,783,000 | Nguyễn Phương Thảo |
| 55 | 43 | Đặc tả yêu cầu chức năng module M0 |  | 2d | 2026-10-19 | 2026-10-21 | 52 | 0d |  |  | Nguyễn Phương Thảo | 16h | 2,783,000 | Nguyễn Phương Thảo |
| 56 | 44 | Đặc tả yêu cầu chức năng module M1 |  | 3.5d | 2026-10-21 | 2026-10-27 | 55 | 0d |  |  | Nguyễn Phương Thảo | 28h | 4,870,250 | Nguyễn Phương Thảo |
| 57 | 45 | Đặc tả yêu cầu chức năng module M2 |  | 4.4d | 2026-10-27 | 2026-11-02 | 56 | 0d |  |  | Nguyễn Phương Thảo | 35.2h | 6,122,600 | Nguyễn Phương Thảo |
| 58 | 46 | Đặc tả yêu cầu phi chức năng |  | 2d | 2026-10-19 | 2026-10-21 | 52 | 9.6d | 7.9d |  | Nguyễn Phương Thảo | 16h | 2,783,000 | Nguyễn Phương Thảo |
| 59 | 47 | Mô hình hóa quy trình BPMN To-Be |  | 3.3d | 2026-11-02 | 2026-11-05 | 57 | 0d |  |  | Nguyễn Phương Thảo | 26.4h | 4,591,950 | Nguyễn Phương Thảo |
| 60 | 48 | Xây dựng Requirements Traceability Matrix v1.0 |  | 1.6d | 2026-11-02 | 2026-11-04 | 57, 58 | 1.7d |  |  | Nguyễn Phương Thảo | 12.8h | 2,226,400 | Nguyễn Phương Thảo |
| 61 | 49 | Workshop xác nhận SRS với khách hàng |  | 1.2d | 2026-11-05 | 2026-11-09 | 59, 60 | 0d |  |  | Mai Công Trà Giang; Workshop xác nhận SRS | 9.6h | 1,679,800 | Mai Công Trà Giang |
| 62 | 50 | Tổng hợp và trình duyệt SRS chính thức (M3) |  | 1.1d | 2026-11-09 | 2026-11-10 | 54, 61 | 0d |  |  | Trần Đức Cường | 8.8h | 2,087,250 | Trần Đức Cường |
| 63 | M3 | M3 - Ký xác nhận SRS | milestone | 0d | 2026-11-10 | 2026-11-10 | 62 | 0d |  | 2026-12-04 |  |  |  |  |
| 64 | C.4 | **C.4. [SDLC-Design] Phân tích và thiết kế hệ thống** |  | 20.2d | 2026-11-10 | 2026-12-08 |  | 0d |  |  |  | 292.8h | 54,291,150 |  |
| 65 | 51 | Xây dựng biểu đồ Use Case tổng quát |  | 2d | 2026-11-10 | 2026-11-12 | 63 | 0d |  |  | Mai Công Trà Giang | 16h | 2,783,000 | Mai Công Trà Giang |
| 66 | 52 | Đặc tả Use Case chi tiết cho M0/M1/M2 |  | 3.5d | 2026-11-12 | 2026-11-17 | 65 | 0d |  |  | Lê Xuân Bách | 28h | 5,313,000 | Lê Xuân Bách |
| 67 | 53 | Xây dựng biểu đồ Lớp (Class Diagram) |  | 3.3d | 2026-11-17 | 2026-11-20 | 66 | 0d |  |  | Lê Xuân Bách | 26.4h | 5,009,400 | Lê Xuân Bách |
| 68 | 54 | Xây dựng biểu đồ Tuần tự (Sequence Diagram) |  | 3d | 2026-11-23 | 2026-11-25 | 67 | 3.2d |  |  | Lê Xuân Bách | 24h | 4,554,000 | Lê Xuân Bách |
| 69 | 55 | Xây dựng biểu đồ Hoạt động (Activity Diagram) |  | 2d | 2026-11-17 | 2026-11-19 | 66 | 7.5d |  |  | Nguyễn Phương Thảo | 16h | 2,783,000 | Nguyễn Phương Thảo |
| 70 | 56 | Xây dựng biểu đồ Thành phần (Component Diagram) |  | 2d | 2026-11-23 | 2026-11-24 | 67 | 0d |  |  | Bùi Tiến Thành | 16h | 3,036,000 | Bùi Tiến Thành |
| 71 | 57 | Xây dựng biểu đồ Triển khai (Deployment Diagram) |  | 2d | 2026-11-25 | 2026-11-26 | 70 | 0d |  |  | Bùi Tiến Thành | 16h | 3,036,000 | Bùi Tiến Thành |
| 72 | 58 | Xây dựng ERD và Data Dictionary |  | 3.5d | 2026-11-17 | 2026-11-23 | 66 | 3.8d | 1.8d |  | Lê Xuân Bách | 28h | 5,313,000 | Lê Xuân Bách |
| 73 | 59 | Thiết kế kiến trúc phân tầng |  | 2.2d | 2026-11-25 | 2026-11-27 | 70, 72 | 2d |  |  | Lê Xuân Bách | 17.6h | 3,339,600 | Lê Xuân Bách |
| 74 | 60 | Thiết kế tích hợp máy chấm công |  | 2.2d | 2026-11-27 | 2026-12-01 | 71 | 0d |  |  | Bùi Tiến Thành | 17.6h | 3,339,600 | Bùi Tiến Thành |
| 75 | 61 | Thiết kế giao diện (wireframe → mockup → prototype) |  | 5.7d | 2026-11-12 | 2026-11-19 | 65 | 7.3d |  |  | Mai Công Trà Giang; License Figma | 45.6h | 7,941,550 | Mai Công Trà Giang |
| 76 | 62 | Design specification cho M0/M1/M2 |  | 3d | 2026-12-01 | 2026-12-04 | 68, 69, 73, 74, 75 | 0d |  |  | Mai Công Trà Giang | 24h | 4,174,500 | Mai Công Trà Giang |
| 77 | 63 | Cập nhật RTM v2.0 (mapping design) |  | 1d | 2026-12-04 | 2026-12-07 | 76 | 0d |  |  | Nguyễn Phương Thảo | 8h | 1,391,500 | Nguyễn Phương Thảo |
| 78 | 64 | Trình duyệt Design Baseline (M4) |  | 1.2d | 2026-12-07 | 2026-12-08 | 77 | 0d |  |  | Trần Đức Cường | 9.6h | 2,277,000 | Trần Đức Cường |
| 79 | M4 | M4 - Nghiệm thu Design Baseline | milestone | 0d | 2026-12-08 | 2026-12-08 | 78 | 0d |  | 2026-12-25 |  |  |  |  |

Notes:
- 53: Phân công: Nguyễn Phương Thảo (chủ trì) / Mai Công Trà Giang (phối hợp workshop) / Trần Đức Cường (phối hợp phê duyệt cột mốc M3)
- 54: Mô tả: Chuẩn hóa hồ sơ nhân viên, hợp đồng lao động, bảng chấm công, đơn nghỉ/OT/giải trình / Sản phẩm bàn giao: Bộ biểu mẫu nghiệp vụ chuẩn hóa / (Standardized Business Form Set) / PERT (person-day): MO=1, ML=2, MP=3, EST=2, Tăng thêm=0, EST chốt=2.0 / Thời gian theo WBS: 16/11/2026 - 18/11/2026 / Sản phẩm bàn giao: Bộ biểu mẫu nghiệp vụ chuẩn hóa (Standardized Business Form Set)
- 55: Mô tả: FR M0 (Đăng nhập/phân quyền): đăng nhập/xuất, user, role, phân quyền chức năng và dữ liệu, 2FA / Sản phẩm bàn giao: Đặc tả FR M0 (Đăng nhập & phân quyền) / (Functional Requirements M0) / PERT (person-day): MO=1, ML=2, MP=3, EST=2, Tăng thêm=0, EST chốt=2.0 / Thời gian theo WBS: 18/11/2026 - 20/11/2026 / Sản phẩm bàn giao: Đặc tả FR M0 (Đăng nhập & phân quyền) (Functional Requirements M0)
- 56: Mô tả: FR M1 (Nhân sự & hợp đồng): hồ sơ NV, HĐLĐ 3 loại, gia hạn/chấm dứt, cảnh báo hạn HĐ, tuân thủ Bộ luật LĐ 2019 / Sản phẩm bàn giao: Đặc tả FR M1 (Nhân sự & hợp đồng) / (Functional Requirements M1) / PERT (person-day): MO=2, ML=3, MP=5, EST=3.2, Tăng thêm=0.3, EST chốt=3.5 / Thời gian theo WBS: 20/11/2026 - 24/11/2026 / Sản phẩm bàn giao: Đặc tả FR M1 (Nhân sự & hợp đồng) (Functional Requirements M1)
- 57: Mô tả: FR M2 (Ca làm việc & chấm công): cấu hình ca, tích hợp máy chấm công, đơn nghỉ/OT/giải trình, chốt bảng công, xuất file cho Kế toán / Sản phẩm bàn giao: Đặc tả FR M2 (Ca làm việc & chấm công) / (Functional Requirements M2) / PERT (person-day): MO=2, ML=4, MP=6, EST=4, Tăng thêm=0.4, EST chốt=4.4 / Thời gian theo WBS: 23/11/2026 - 28/11/2026 / Sản phẩm bàn giao: Đặc tả FR M2 (Ca làm việc & chấm công) (Functional Requirements M2)
- 58: Mô tả: NFR: hiệu năng (<2s với 200 người dùng đồng thời), bảo mật OWASP Top 10, tỷ lệ sẵn sàng ≥99% trong 30 ngày hyper-care, tuân thủ Nghị định 13/2023 về dữ liệu cá nhân / Sản phẩm bàn giao: Đặc tả yêu cầu phi chức năng / (Non-Functional Requirements Specification) / PERT (person-day): MO=1, ML=2, MP=3, EST=2, Tăng thêm=0, EST chốt=2.0 / Thời gian theo WBS: 25/11/2026 - 28/11/2026 / Sản phẩm bàn giao: Đặc tả yêu cầu phi chức năng (Non-Functional Requirements Specification)
- 59: Mô tả: Vẽ BPMN 2.0 cho các quy trình To-Be sau khi có hệ thống HRMS / Sản phẩm bàn giao: Mô hình BPMN To-Be / (BPMN To-Be Models) / PERT (person-day): MO=2, ML=3, MP=4, EST=3, Tăng thêm=0.3, EST chốt=3.3 / Thời gian theo WBS: 27/11/2026 - 01/12/2026 / Sản phẩm bàn giao: Mô hình BPMN To-Be (BPMN To-Be Models)
- 60: Mô tả: RTM từ FR và NFR, có cột trạng thái và cột trống chờ mapping design/test/deploy / Sản phẩm bàn giao: Ma trận truy vết yêu cầu v1.0 / (Requirements Traceability Matrix v1.0) / PERT (person-day): MO=1, ML=1.5, MP=2.5, EST=1.6, Tăng thêm=0, EST chốt=1.6 / Thời gian theo WBS: 30/11/2026 - 02/12/2026 / Sản phẩm bàn giao: Ma trận truy vết yêu cầu v1.0 (Requirements Traceability Matrix v1.0)
- 61: Mô tả: Tổ chức workshop 1 ngày với khách hàng để review và ký nháp SRS / Sản phẩm bàn giao: Biên bản workshop xác nhận SRS / (SRS Workshop Minutes) / PERT (person-day): MO=0.5, ML=1, MP=2, EST=1.1, Tăng thêm=0.1, EST chốt=1.2 / Thời gian theo WBS: 02/12/2026 - 03/12/2026 / Sản phẩm bàn giao: Biên bản workshop xác nhận SRS (SRS Workshop Minutes)
- 62: Mô tả: Tổng hợp SRS v1.0 sau workshop, xử lý feedback cuối, ký duyệt cột mốc M3 / Sản phẩm bàn giao: Tài liệu Đặc tả yêu cầu phần mềm v1.0 / (Software Requirements Specification v1.0) / PERT (person-day): MO=0.5, ML=1, MP=1.5, EST=1, Tăng thêm=0.1, EST chốt=1.1 / Thời gian theo WBS: 03/12/2026 - 04/12/2026 / Sản phẩm bàn giao: Tài liệu Đặc tả yêu cầu phần mềm v1.0 (Software Requirements Specification v1.0)
- 63: Cột mốc dự án. Mốc cam kết (Deadline): 04/12/2026.
- 64: Phân công: Lê Xuân Bách (chủ trì) / Mai Công Trà Giang (phối hợp UI/UX & đặc tả thiết kế) / Bùi Tiến Thành (phối hợp kiến trúc triển khai) / Nguyễn Phương Thảo (phối hợp mô hình hóa & RTM) / Trần Đức Cường (phối hợp phê duyệt cột mốc M4)
- 65: Mô tả: Xác định 3 actor người dùng, 2 actor phi người dùng, tổng thể use case cho 3 module / Sản phẩm bàn giao: Biểu đồ Use Case tổng quát / (Use Case Diagram - Overview) / PERT (person-day): MO=1, ML=2, MP=3, EST=2, Tăng thêm=0, EST chốt=2.0 / Thời gian theo WBS: 07/12/2026 - 09/12/2026 / Sản phẩm bàn giao: Biểu đồ Use Case tổng quát (Use Case Diagram - Overview)
- 66: Mô tả: Đặc tả từng use case với luồng chính, luồng phụ, exception, precondition, postcondition / Sản phẩm bàn giao: Đặc tả Use Case chi tiết / (Use Case Specifications) / PERT (person-day): MO=2, ML=3, MP=5, EST=3.2, Tăng thêm=0.3, EST chốt=3.5 / Thời gian theo WBS: 09/12/2026 - 12/12/2026 / Sản phẩm bàn giao: Đặc tả Use Case chi tiết (Use Case Specifications)
- 67: Mô tả: Class diagram cho toàn hệ thống, đầy đủ thuộc tính, phương thức, quan hệ / Sản phẩm bàn giao: Biểu đồ Lớp / (Class Diagram) / PERT (person-day): MO=2, ML=3, MP=4, EST=3, Tăng thêm=0.3, EST chốt=3.3 / Thời gian theo WBS: 11/12/2026 - 14/12/2026 / Sản phẩm bàn giao: Biểu đồ Lớp (Class Diagram)
- 68: Mô tả: Sequence diagram cho các luồng nghiệp vụ chính: đăng nhập, chốt công, duyệt nghỉ phép / Sản phẩm bàn giao: Biểu đồ Tuần tự / (Sequence Diagrams) / PERT (person-day): MO=2, ML=3, MP=4, EST=3, Tăng thêm=0, EST chốt=3.0 / Thời gian theo WBS: 13/12/2026 - 16/12/2026 / Sản phẩm bàn giao: Biểu đồ Tuần tự (Sequence Diagrams)
- 69: Mô tả: Activity diagram cho các quy trình phức tạp: chốt bảng công tháng, xử lý đơn nghỉ phép / Sản phẩm bàn giao: Biểu đồ Hoạt động / (Activity Diagrams) / PERT (person-day): MO=1, ML=2, MP=3, EST=2, Tăng thêm=0, EST chốt=2.0 / Thời gian theo WBS: 15/12/2026 - 17/12/2026 / Sản phẩm bàn giao: Biểu đồ Hoạt động (Activity Diagrams)
- 70: Mô tả: Component diagram cho kiến trúc phân tầng và các module M0/M1/M2 / Sản phẩm bàn giao: Biểu đồ Thành phần / (Component Diagram) / PERT (person-day): MO=1, ML=2, MP=3, EST=2, Tăng thêm=0, EST chốt=2.0 / Thời gian theo WBS: 16/12/2026 - 18/12/2026 / Sản phẩm bàn giao: Biểu đồ Thành phần (Component Diagram)
- 71: Mô tả: Deployment diagram thể hiện sơ đồ triển khai trên cloud, tích hợp máy chấm công / Sản phẩm bàn giao: Biểu đồ Triển khai / (Deployment Diagram) / PERT (person-day): MO=1, ML=2, MP=3, EST=2, Tăng thêm=0, EST chốt=2.0 / Thời gian theo WBS: 17/12/2026 - 19/12/2026 / Sản phẩm bàn giao: Biểu đồ Triển khai (Deployment Diagram)
- 72: Mô tả: ERD đầy đủ các thực thể, quan hệ (Crows Foot); Data Dictionary định nghĩa từng bảng và trường / Sản phẩm bàn giao: Mô hình ERD + Từ điển dữ liệu / (Entity-Relationship Diagram + Data Dictionary) / PERT (person-day): MO=2, ML=3, MP=5, EST=3.2, Tăng thêm=0.3, EST chốt=3.5 / Thời gian theo WBS: 15/12/2026 - 19/12/2026 / Sản phẩm bàn giao: Mô hình ERD + Từ điển dữ liệu (Entity-Relationship Diagram + Data Dictionary)
- 73: Mô tả: Thiết kế Presentation-Business-Data với patterns MVC/MVVM, DTO, DAO / Sản phẩm bàn giao: Bản thiết kế kiến trúc / (Architecture Design Document) / PERT (person-day): MO=1, ML=2, MP=3, EST=2, Tăng thêm=0.2, EST chốt=2.2 / Thời gian theo WBS: 18/12/2026 - 21/12/2026 / Sản phẩm bàn giao: Bản thiết kế kiến trúc (Architecture Design Document)
- 74: Mô tả: Thiết kế luồng nhập tệp CSV từ 03 máy Ronald Jack U160 (kiểm tra, chống trùng, ghi nhận lô); kết nối REST/SDK chỉ áp dụng nếu thiết bị hỗ trợ / Sản phẩm bàn giao: Bản thiết kế tích hợp máy chấm công / (Attendance Device Integration Design) / PERT (person-day): MO=1, ML=2, MP=3, EST=2, Tăng thêm=0.2, EST chốt=2.2 / Thời gian theo WBS: 19/12/2026 - 22/12/2026 / Sản phẩm bàn giao: Bản thiết kế tích hợp máy chấm công (Attendance Device Integration Design)
- 75: Mô tả: Thiết kế UI/UX cho các luồng chính của 3 module, có prototype tương tác / Sản phẩm bàn giao: Bản thiết kế giao diện / (UI/UX Design & Interactive Prototype) / PERT (person-day): MO=3, ML=5, MP=8, EST=5.2, Tăng thêm=0.5, EST chốt=5.7 / Thời gian theo WBS: 17/12/2026 - 23/12/2026 / Sản phẩm bàn giao: Bản thiết kế giao diện (UI/UX Design & Interactive Prototype)
- 76: Mô tả: Design spec chi tiết cho từng module, ready cho Development bắt đầu / Sản phẩm bàn giao: Đặc tả thiết kế module M0/M1/M2 / (Design Specifications M0/M1/M2) / PERT (person-day): MO=2, ML=3, MP=4, EST=3, Tăng thêm=0, EST chốt=3.0 / Thời gian theo WBS: 21/12/2026 - 24/12/2026 / Sản phẩm bàn giao: Đặc tả thiết kế module M0/M1/M2 (Design Specifications M0/M1/M2)
- 77: Mô tả: Bổ sung liên kết yêu cầu → thành phần thiết kế vào RTM / Sản phẩm bàn giao: Ma trận truy vết yêu cầu v2.0 / (Requirements Traceability Matrix v2.0) / PERT (person-day): MO=0.5, ML=1, MP=1.5, EST=1, Tăng thêm=0, EST chốt=1.0 / Thời gian theo WBS: 24/12/2026 - 25/12/2026 / Sản phẩm bàn giao: Ma trận truy vết yêu cầu v2.0 (Requirements Traceability Matrix v2.0)
- 78: Mô tả: Trình bày Design Baseline với Ban Chỉ đạo, xử lý feedback, ký duyệt cột mốc M4 / Sản phẩm bàn giao: Biên bản phê duyệt Design Baseline / (Design Baseline Approval Minutes) / PERT (person-day): MO=0.5, ML=1, MP=2, EST=1.1, Tăng thêm=0.1, EST chốt=1.2 / Thời gian theo WBS: 24/12/2026 - 25/12/2026 / Sản phẩm bàn giao: Biên bản phê duyệt Design Baseline (Design Baseline Approval Minutes)
- 79: Cột mốc dự án. Mốc cam kết (Deadline): 25/12/2026.

| ID | WBS | Task | Type | Duration | Start | Finish | Predecessors | Total slack | Free slack | Deadline | Resources | Work | Cost | Người thực hiện |
| --- | --- | --- | --- | --- | --- | --- | --- | --- | --- | --- | --- | --- | --- | --- |
| 80 | C.5 | **C.5. [SDLC-Development] Phát triển phần mềm (Incremental 3 increment)** |  | 32.5d | 2026-12-08 | 2027-01-21 |  | 0d |  |  |  | 483.2h | 90,594,000 |  |
| 81 | 65 | Phát triển Backend Increment 1 (M0) |  | 5.7d | 2026-12-08 | 2026-12-16 | 79 | 0d |  |  | Lê Xuân Bách | 45.6h | 8,652,600 | Lê Xuân Bách |
| 82 | 66 | Phát triển Frontend Increment 1 (M0) |  | 4.4d | 2026-12-08 | 2026-12-14 | 79 | 1.3d |  |  | Bùi Tiến Thành | 35.2h | 6,679,200 | Bùi Tiến Thành |
| 83 | 67 | Unit test và code review Increment 1 |  | 2d | 2026-12-16 | 2026-12-18 | 81, 82 | 0d |  |  | Nguyễn Phương Thảo | 16h | 2,783,000 | Nguyễn Phương Thảo |
| 84 | 68 | Deploy M0 lên Staging và internal demo |  | 1.1d | 2026-12-18 | 2026-12-21 | 83 | 49.4d |  |  | Bùi Tiến Thành | 8.8h | 1,669,800 | Bùi Tiến Thành |
| 85 | 69 | Phát triển Backend Increment 2 (M1) |  | 8d | 2026-12-18 | 2026-12-30 | 83 | 0d |  |  | Lê Xuân Bách | 64h | 12,144,000 | Lê Xuân Bách |
| 86 | 70 | Phát triển Frontend Increment 2 (M1) |  | 5.7d | 2026-12-18 | 2026-12-25 | 83 | 2.3d |  |  | Bùi Tiến Thành | 45.6h | 8,652,600 | Bùi Tiến Thành |
| 87 | 71 | Unit test và code review Increment 2 |  | 2.8d | 2026-12-30 | 2027-01-01 | 85, 86 | 0d |  |  | Nguyễn Phương Thảo | 22.4h | 3,896,200 | Nguyễn Phương Thảo |
| 88 | 72 | Deploy M1 lên Staging và internal demo |  | 1.1d | 2027-01-01 | 2027-01-04 | 87 | 8.7d | 0d |  | Bùi Tiến Thành | 8.8h | 1,669,800 | Bùi Tiến Thành |
| 89 | 73 | Phát triển Backend Increment 3 (M2) |  | 9.1d | 2027-01-01 | 2027-01-14 | 87 | 0d |  |  | Lê Xuân Bách | 72.8h | 13,813,800 | Lê Xuân Bách |
| 90 | 74 | Phát triển Frontend Increment 3 (M2) |  | 6.9d | 2027-01-01 | 2027-01-12 | 87 | 2.2d |  |  | Bùi Tiến Thành | 55.2h | 10,474,200 | Bùi Tiến Thành |
| 91 | 75 | Tích hợp máy chấm công vật lý |  | 3.5d | 2027-01-01 | 2027-01-07 | 87 | 5.6d |  |  | Bùi Tiến Thành; Thiết bị tích hợp máy chấm công | 28h | 5,323,000 | Bùi Tiến Thành |
| 92 | 76 | Unit test và code review Increment 3 |  | 2.8d | 2027-01-15 | 2027-01-19 | 89, 90, 91 | 0d |  |  | Nguyễn Phương Thảo | 22.4h | 3,896,200 | Nguyễn Phương Thảo |
| 93 | 77 | Deploy M2 lên Staging và internal demo |  | 1.1d | 2027-01-19 | 2027-01-20 | 92 | 0d |  |  | Bùi Tiến Thành | 8.8h | 1,669,800 | Bùi Tiến Thành |
| 94 | 78 | Phân tích tĩnh mã nguồn (SonarQube) |  | 1d | 2027-01-19 | 2027-01-20 | 92 | 0.1d |  |  | Bùi Tiến Thành; License SonarQube | 8h | 1,528,000 | Bùi Tiến Thành |
| 95 | 79 | Cập nhật RTM v3.0 (mapping code) |  | 1d | 2027-01-19 | 2027-01-20 | 92 | 0.1d |  |  | Nguyễn Phương Thảo | 8h | 1,391,500 | Nguyễn Phương Thảo |
| 96 | 80 | Biên soạn tài liệu người dùng |  | 3.2d | 2027-01-05 | 2027-01-08 | 88 | 8.7d | 0d |  | Mai Công Trà Giang | 25.6h | 4,452,800 | Mai Công Trà Giang |
| 97 | 81 | Code Freeze và bàn giao Testing (M5) |  | 1d | 2027-01-20 | 2027-01-21 | 42, 93, 94, 95, 96 | 0d |  |  | Trần Đức Cường | 8h | 1,897,500 | Trần Đức Cường |
| 98 | M5 | M5 - Code Freeze | milestone | 0d | 2027-01-21 | 2027-01-21 | 97 | 0d |  | 2027-01-29 |  |  |  |  |
| 99 | C.6 | **C.6. [SDLC-Testing] Kiểm thử hệ thống (System Test)** |  | 19.4d | 2027-01-05 | 2027-02-01 |  | 0d |  |  |  | 132h | 24,411,850 |  |
| 100 | 82 | Xây dựng bộ test case System Test |  | 2.6d | 2027-01-05 | 2027-01-07 | 88 | 10.3d | 0d |  | Nguyễn Phương Thảo | 20.8h | 3,617,900 | Nguyễn Phương Thảo |
| 101 | 83 | Kiểm thử chức năng end-to-end |  | 3.5d | 2027-01-21 | 2027-01-27 | 98, 100 | 0d |  |  | Bùi Tiến Thành | 28h | 5,313,000 | Bùi Tiến Thành |
| 102 | 84 | Kiểm thử hiệu năng (Load/Stress test) |  | 2.2d | 2027-01-21 | 2027-01-26 | 98 | 3.3d |  |  | Bùi Tiến Thành; License công cụ kiểm thử hiệu năng & bảo mật | 17.6h | 3,349,600 | Bùi Tiến Thành |
| 103 | 85 | Kiểm thử bảo mật (OWASP Top 10) |  | 2.2d | 2027-01-21 | 2027-01-26 | 98 | 3.3d |  |  | Bùi Tiến Thành | 17.6h | 3,339,600 | Bùi Tiến Thành |
| 104 | 86 | Regression test |  | 1.5d | 2027-01-25 | 2027-01-27 | 101SS+2d | 2d |  |  | Nguyễn Phương Thảo | 12h | 2,087,250 | Nguyễn Phương Thảo |
| 105 | 87 | Sửa lỗi phát sinh và verify |  | 3.5d | 2027-01-25 | 2027-01-29 | 101SS+2d | 0d |  |  | Lê Xuân Bách | 28h | 5,313,000 | Lê Xuân Bách |
| 106 | 88 | Lập báo cáo System Test tổng hợp |  | 1d | 2027-01-29 | 2027-02-01 | 101, 102, 103, 104, 105 | 0d |  |  | Nguyễn Phương Thảo | 8h | 1,391,500 | Nguyễn Phương Thảo |

Notes:
- 80: Phân công: Lê Xuân Bách (chủ trì Backend) / Bùi Tiến Thành (phối hợp Frontend & CI/CD) / Nguyễn Phương Thảo (phối hợp kiểm thử đơn vị) / Mai Công Trà Giang (phối hợp tài liệu người dùng) / Trần Đức Cường (phối hợp nghiệm thu cột mốc M5)
- 81: Mô tả: Implement API cho đăng nhập/xuất, quản lý user/role/permission, 2FA cho tài khoản admin / Sản phẩm bàn giao: Mã nguồn Backend M0 + API docs / (Backend Source Code M0 + API Documentation) / PERT (person-day): MO=3, ML=5, MP=8, EST=5.2, Tăng thêm=0.5, EST chốt=5.7 / Thời gian theo WBS: 28/12/2026 - 02/01/2027 / Sản phẩm bàn giao: Mã nguồn Backend M0 + API docs (Backend Source Code M0 + API Documentation)
- 82: Mô tả: Implement UI cho đăng nhập, quản lý user, phân quyền / Sản phẩm bàn giao: Mã nguồn Frontend M0 / (Frontend Source Code M0) / PERT (person-day): MO=2, ML=4, MP=6, EST=4, Tăng thêm=0.4, EST chốt=4.4 / Thời gian theo WBS: 29/12/2026 - 03/01/2027 / Sản phẩm bàn giao: Mã nguồn Frontend M0 (Frontend Source Code M0)
- 83: Mô tả: Viết unit test coverage ≥70% cho M0, code review 100% pull request / Sản phẩm bàn giao: Bộ unit test M0 + báo cáo code review / (Unit Test Suite M0 + Code Review Log) / PERT (person-day): MO=1, ML=2, MP=3, EST=2, Tăng thêm=0, EST chốt=2.0 / Thời gian theo WBS: 03/01/2027 - 05/01/2027 / Sản phẩm bàn giao: Bộ unit test M0 + báo cáo code review (Unit Test Suite M0 + Code Review Log)
- 84: Mô tả: Deploy M0 lên Staging qua CI/CD, tổ chức demo lấy feedback từ khách hàng / Sản phẩm bàn giao: Bản build M0 trên Staging + Biên bản demo / (M0 Staging Build + Demo Minutes) / PERT (person-day): MO=0.5, ML=1, MP=2, EST=1.1, Tăng thêm=0, EST chốt=1.1 / Thời gian theo WBS: 06/01/2027 - 07/01/2027 / Sản phẩm bàn giao: Bản build M0 trên Staging + Biên bản demo (M0 Staging Build + Demo Minutes)
- 85: Mô tả: Implement API cho hồ sơ nhân viên, HĐLĐ, gia hạn/chấm dứt, scheduler cảnh báo hạn HĐ / Sản phẩm bàn giao: Mã nguồn Backend M1 + API docs / (Backend Source Code M1 + API Documentation) / PERT (person-day): MO=4, ML=7, MP=12, EST=7.3, Tăng thêm=0.7, EST chốt=8.0 / Thời gian theo WBS: 07/01/2027 - 13/01/2027 / Sản phẩm bàn giao: Mã nguồn Backend M1 + API docs (Backend Source Code M1 + API Documentation)
- 86: Mô tả: Implement UI cho quản lý hồ sơ nhân viên, danh sách hợp đồng, dashboard cảnh báo / Sản phẩm bàn giao: Mã nguồn Frontend M1 / (Frontend Source Code M1) / PERT (person-day): MO=3, ML=5, MP=8, EST=5.2, Tăng thêm=0.5, EST chốt=5.7 / Thời gian theo WBS: 08/01/2027 - 14/01/2027 / Sản phẩm bàn giao: Mã nguồn Frontend M1 (Frontend Source Code M1)
- 87: Mô tả: Viết unit test coverage ≥70% cho M1, code review 100% pull request / Sản phẩm bàn giao: Bộ unit test M1 + báo cáo code review / (Unit Test Suite M1 + Code Review Log) / PERT (person-day): MO=1.5, ML=2.5, MP=4, EST=2.6, Tăng thêm=0.2, EST chốt=2.8 / Thời gian theo WBS: 14/01/2027 - 16/01/2027 / Sản phẩm bàn giao: Bộ unit test M1 + báo cáo code review (Unit Test Suite M1 + Code Review Log)
- 88: Mô tả: Deploy M1 lên Staging qua CI/CD, demo lấy feedback từ khách hàng / Sản phẩm bàn giao: Bản build M1 trên Staging + Biên bản demo / (M1 Staging Build + Demo Minutes) / PERT (person-day): MO=0.5, ML=1, MP=2, EST=1.1, Tăng thêm=0, EST chốt=1.1 / Thời gian theo WBS: 16/01/2027 - 18/01/2027 / Sản phẩm bàn giao: Bản build M1 trên Staging + Biên bản demo (M1 Staging Build + Demo Minutes)
- 89: Mô tả: Implement API cho ca làm việc, chấm công, đơn từ, chốt bảng công tháng / Sản phẩm bàn giao: Mã nguồn Backend M2 + API docs / (Backend Source Code M2 + API Documentation) / PERT (person-day): MO=5, ML=8, MP=13, EST=8.3, Tăng thêm=0.8, EST chốt=9.1 / Thời gian theo WBS: 18/01/2027 - 25/01/2027 / Sản phẩm bàn giao: Mã nguồn Backend M2 + API docs (Backend Source Code M2 + API Documentation)
- 90: Mô tả: Implement UI cho cấu hình ca, bảng chấm công, xử lý đơn, chốt bảng công tháng / Sản phẩm bàn giao: Mã nguồn Frontend M2 / (Frontend Source Code M2) / PERT (person-day): MO=4, ML=6, MP=10, EST=6.3, Tăng thêm=0.6, EST chốt=6.9 / Thời gian theo WBS: 19/01/2027 - 25/01/2027 / Sản phẩm bàn giao: Mã nguồn Frontend M2 (Frontend Source Code M2)
- 91: Mô tả: Xây dựng chức năng nhập CSV từ máy chấm công, đồng bộ dữ liệu vào DB, cách ly dòng lỗi; bổ sung adapter REST/SDK nếu thiết bị hỗ trợ / Sản phẩm bàn giao: Module tích hợp máy chấm công / (Attendance Device Integration Module) / PERT (person-day): MO=2, ML=3, MP=5, EST=3.2, Tăng thêm=0.3, EST chốt=3.5 / Thời gian theo WBS: 20/01/2027 - 24/01/2027 / Sản phẩm bàn giao: Module tích hợp máy chấm công (Attendance Device Integration Module)
- 92: Mô tả: Viết unit test coverage ≥70% cho M2, code review 100% pull request / Sản phẩm bàn giao: Bộ unit test M2 + báo cáo code review / (Unit Test Suite M2 + Code Review Log) / PERT (person-day): MO=1.5, ML=2.5, MP=4, EST=2.6, Tăng thêm=0.2, EST chốt=2.8 / Thời gian theo WBS: 25/01/2027 - 27/01/2027 / Sản phẩm bàn giao: Bộ unit test M2 + báo cáo code review (Unit Test Suite M2 + Code Review Log)
- 93: Mô tả: Deploy M2 lên Staging qua CI/CD, demo tổng thể cho khách hàng / Sản phẩm bàn giao: Bản build M2 trên Staging + Biên bản demo / (M2 Staging Build + Demo Minutes) / PERT (person-day): MO=0.5, ML=1, MP=2, EST=1.1, Tăng thêm=0, EST chốt=1.1 / Thời gian theo WBS: 27/01/2027 - 28/01/2027 / Sản phẩm bàn giao: Bản build M2 trên Staging + Biên bản demo (M2 Staging Build + Demo Minutes)
- 94: Mô tả: Chạy SonarQube trên toàn codebase, đảm bảo 0 lỗi Critical/Blocker / Sản phẩm bàn giao: Báo cáo phân tích tĩnh mã nguồn / (Static Code Analysis Report) / PERT (person-day): MO=0.5, ML=1, MP=1.5, EST=1, Tăng thêm=0, EST chốt=1.0 / Thời gian theo WBS: 28/01/2027 - 29/01/2027 / Sản phẩm bàn giao: Báo cáo phân tích tĩnh mã nguồn (Static Code Analysis Report)
- 95: Mô tả: Bổ sung liên kết yêu cầu → module → commit vào RTM / Sản phẩm bàn giao: Ma trận truy vết yêu cầu v3.0 / (Requirements Traceability Matrix v3.0) / PERT (person-day): MO=0.5, ML=1, MP=1.5, EST=1, Tăng thêm=0, EST chốt=1.0 / Thời gian theo WBS: 28/01/2027 - 29/01/2027 / Sản phẩm bàn giao: Ma trận truy vết yêu cầu v3.0 (Requirements Traceability Matrix v3.0)
- 96: Mô tả: Soạn User Guide cho 3 vai trò HR Admin, Manager, Employee / Sản phẩm bàn giao: Tài liệu hướng dẫn người dùng / (User Guide by Role) / PERT (person-day): MO=2, ML=3, MP=5, EST=3.2, Tăng thêm=0, EST chốt=3.2 / Thời gian theo WBS: 18/01/2027 - 24/01/2027 / Sản phẩm bàn giao: Tài liệu hướng dẫn người dùng (User Guide by Role)
- 97: Mô tả: Đóng branch develop, tag release candidate, bàn giao Testing chính thức - cột mốc M5 / Sản phẩm bàn giao: Bản Release Candidate + Biên bản bàn giao / (Release Candidate + Handover Minutes) / PERT (person-day): MO=0.5, ML=1, MP=1.5, EST=1, Tăng thêm=0, EST chốt=1.0 / Thời gian theo WBS: 28/01/2027 - 29/01/2027 / Sản phẩm bàn giao: Bản Release Candidate + Biên bản bàn giao (Release Candidate + Handover Minutes)
- 98: Cột mốc dự án. Mốc cam kết (Deadline): 29/01/2027.
- 99: Phân công: Bùi Tiến Thành (chủ trì) / Nguyễn Phương Thảo (phối hợp test case & regression) / Lê Xuân Bách (phối hợp sửa lỗi)
- 100: Mô tả: Test case truy vết từ RTM, phủ đủ FR/NFR của M0/M1/M2 / Sản phẩm bàn giao: Bộ kịch bản kiểm thử hệ thống / (System Test Case Suite) / PERT (person-day): MO=1.5, ML=2.5, MP=4, EST=2.6, Tăng thêm=0, EST chốt=2.6 / Thời gian theo WBS: 25/01/2027 - 28/01/2027 / Sản phẩm bàn giao: Bộ kịch bản kiểm thử hệ thống (System Test Case Suite)
- 101: Mô tả: Chạy test suite end-to-end trên Staging, pass rate ≥95% cho 3 module / Sản phẩm bàn giao: Báo cáo kiểm thử chức năng / (Functional Test Report) / PERT (person-day): MO=2, ML=3, MP=5, EST=3.2, Tăng thêm=0.3, EST chốt=3.5 / Thời gian theo WBS: 30/01/2027 - 02/02/2027 / Sản phẩm bàn giao: Báo cáo kiểm thử chức năng (Functional Test Report)
- 102: Mô tả: Đảm bảo thời gian phản hồi trung bình <2s với 200 người dùng đồng thời trên Staging; ghi nhận cấu hình và tỷ lệ lỗi dưới tải / Sản phẩm bàn giao: Báo cáo kiểm thử hiệu năng / (Performance Test Report) / PERT (person-day): MO=1, ML=2, MP=3, EST=2, Tăng thêm=0.2, EST chốt=2.2 / Thời gian theo WBS: 01/02/2027 - 03/02/2027 / Sản phẩm bàn giao: Báo cáo kiểm thử hiệu năng (Performance Test Report)
- 103: Mô tả: Quét bảo mật, đảm bảo 0 lỗ hổng High/Critical theo OWASP Top 10 (2021) / Sản phẩm bàn giao: Báo cáo kiểm thử bảo mật / (Security Test Report) / PERT (person-day): MO=1, ML=2, MP=3, EST=2, Tăng thêm=0.2, EST chốt=2.2 / Thời gian theo WBS: 02/02/2027 - 04/02/2027 / Sản phẩm bàn giao: Báo cáo kiểm thử bảo mật (Security Test Report)
- 104: Mô tả: Chạy regression sau mỗi fix để đảm bảo không tạo lỗi mới / Sản phẩm bàn giao: Báo cáo regression test / (Regression Test Report) / PERT (person-day): MO=1, ML=1.5, MP=2, EST=1.5, Tăng thêm=0, EST chốt=1.5 / Thời gian theo WBS: 03/02/2027 - 05/02/2027 / Sản phẩm bàn giao: Báo cáo regression test (Regression Test Report)
- 105: Mô tả: Fix defect và verify lại; đảm bảo 0 defect Sev 1 tồn đọng khi kết thúc System Test / Sản phẩm bàn giao: Bản build đã fix defect + Verify log / (Fixed Build + Verification Log) / PERT (person-day): MO=2, ML=3, MP=5, EST=3.2, Tăng thêm=0.3, EST chốt=3.5 / Thời gian theo WBS: 02/02/2027 - 06/02/2027 / Sản phẩm bàn giao: Bản build đã fix defect + Verify log (Fixed Build + Verification Log)
- 106: Mô tả: Báo cáo pass rate ≥95%, defect log, khuyến nghị cho UAT / Sản phẩm bàn giao: Báo cáo tổng hợp kiểm thử hệ thống / (System Test Summary Report) / PERT (person-day): MO=0.5, ML=1, MP=1.5, EST=1, Tăng thêm=0, EST chốt=1.0 / Thời gian theo WBS: 06/02/2027 - 07/02/2027 / Sản phẩm bàn giao: Báo cáo tổng hợp kiểm thử hệ thống (System Test Summary Report)

| ID | WBS | Task | Type | Duration | Start | Finish | Predecessors | Total slack | Free slack | Deadline | Resources | Work | Cost | Người thực hiện |
| --- | --- | --- | --- | --- | --- | --- | --- | --- | --- | --- | --- | --- | --- | --- |
| 107 | C.7 | **C.7. [SDLC-Testing] Kiểm thử chấp nhận (User Acceptance Test)** |  | 24.4d | 2027-01-07 | 2027-02-10 |  | 0d |  |  |  | 98.4h | 18,074,200 |  |
| 108 | 89 | Xây dựng kịch bản UAT cùng khách hàng |  | 2.2d | 2027-01-07 | 2027-01-11 | 100 | 14.6d |  |  | Mai Công Trà Giang | 17.6h | 3,061,300 | Mai Công Trà Giang |
| 109 | 90 | Onboarding khách hàng chạy UAT |  | 1d | 2027-02-01 | 2027-02-02 | 106, 108 | 0d |  |  | Mai Công Trà Giang | 8h | 1,391,500 | Mai Công Trà Giang |
| 110 | 91 | Hỗ trợ khách hàng chạy UAT on-site |  | 3.5d | 2027-02-02 | 2027-02-05 | 109 | 0d |  |  | Mai Công Trà Giang; Đi lại hỗ trợ UAT & đào tạo | 28h | 4,880,250 | Mai Công Trà Giang |
| 111 | 92 | Xử lý defect phát sinh trong UAT |  | 3.5d | 2027-02-03 | 2027-02-08 | 110SS+1d | 0d |  |  | Lê Xuân Bách | 28h | 5,313,000 | Lê Xuân Bách |
| 112 | 93 | Lập biên bản UAT có khách hàng ký |  | 1.1d | 2027-02-08 | 2027-02-09 | 110, 111 | 0d |  |  | Nguyễn Phương Thảo | 8.8h | 1,530,650 | Nguyễn Phương Thảo |
| 113 | 94 | Phê duyệt UAT với Ban Chỉ đạo (M6) |  | 1d | 2027-02-10 | 2027-02-10 | 112 | 0d |  |  | Trần Đức Cường | 8h | 1,897,500 | Trần Đức Cường |
| 114 | M6 | M6 - UAT đạt | milestone | 0d | 2027-02-10 | 2027-02-10 | 113 | 0d |  | 2027-02-12 |  |  |  |  |
| 115 | C.8 | **C.8. [SDLC-Deployment] Chuyển đổi dữ liệu (Data Migration)** |  | 9.6d | 2027-01-21 | 2027-02-04 |  | 4.6d |  |  |  | 76.8h | 13,801,150 |  |
| 116 | 95 | Phân tích dữ liệu nguồn Excel/giấy |  | 2.2d | 2027-01-21 | 2027-01-26 | 98 | 4.6d | 0d |  | Nguyễn Phương Thảo | 17.6h | 3,061,300 | Nguyễn Phương Thảo |
| 117 | 96 | Xây dựng script ETL |  | 3.5d | 2027-01-26 | 2027-01-29 | 116 | 4.6d | 0d |  | Lê Xuân Bách | 28h | 5,313,000 | Lê Xuân Bách |
| 118 | 97 | Chạy Data Quality Check |  | 1.7d | 2027-01-29 | 2027-02-02 | 117 | 4.6d | 0d |  | Nguyễn Phương Thảo | 13.6h | 2,365,550 | Nguyễn Phương Thảo |
| 119 | 98 | Đối chiếu Reconciliation với khách hàng |  | 2.2d | 2027-02-02 | 2027-02-04 | 118 | 4.6d | 4.5d |  | Nguyễn Phương Thảo | 17.6h | 3,061,300 | Nguyễn Phương Thảo |
| 120 | C.9 | **C.9. [SDLC-Deployment] Đào tạo người dùng (Train-the-Trainer)** |  | 30.7d | 2027-01-08 | 2027-02-19 |  | 0d |  |  |  | 92.8h | 16,161,400 |  |
| 121 | 99 | Soạn tài liệu đào tạo (slide, video, cheatsheet) |  | 3.2d | 2027-01-08 | 2027-01-13 | 96 | 19.1d | 0d |  | Mai Công Trà Giang; In tài liệu đào tạo - User/Admin Guide | 25.6h | 4,462,800 | Mai Công Trà Giang |
| 122 | 100 | Xây dựng kịch bản đào tạo |  | 1.5d | 2027-01-13 | 2027-01-14 | 121 | 19.1d |  |  | Mai Công Trà Giang | 12h | 2,087,250 | Mai Công Trà Giang |
| 123 | 101 | Đào tạo super users (nhóm HR core) |  | 2.4d | 2027-02-11 | 2027-02-15 | 122, 114 | 0d |  |  | Nguyễn Phương Thảo; Hội nghị đào tạo | 19.2h | 3,349,600 | Nguyễn Phương Thảo |
| 124 | 102 | Đào tạo người dùng cuối |  | 3.5d | 2027-02-15 | 2027-02-18 | 123 | 0d |  |  | Mai Công Trà Giang | 28h | 4,870,250 | Mai Công Trà Giang |
| 125 | 103 | Tổng hợp biên bản đào tạo |  | 1d | 2027-02-18 | 2027-02-19 | 124 | 0d |  |  | Mai Công Trà Giang | 8h | 1,391,500 | Mai Công Trà Giang |
| 126 | C.10 | **C.10. [SDLC-Deployment] Go-live (Phased Rollout) + Hyper-care** |  | 35.3d | 2027-01-08 | 2027-02-26 |  | 0.1d |  |  |  | 130.4h | 25,279,400 |  |
| 127 | 104 | Deploy M0 lên Production và go-live |  | 1.2d | 2027-02-11 | 2027-02-12 | 114, 119 | 0.1d | 0d |  | Lê Xuân Bách | 9.6h | 1,821,600 | Lê Xuân Bách |
| 128 | 105 | Deploy M1 lên Production và go-live |  | 1.2d | 2027-02-12 | 2027-02-15 | 127 | 0.1d | 0d |  | Lê Xuân Bách | 9.6h | 1,821,600 | Lê Xuân Bách |
| 129 | 106 | Deploy M2 lên Production và go-live (M7) |  | 1.2d | 2027-02-15 | 2027-02-16 | 128 | 0.1d | 0d |  | Lê Xuân Bách; Cloud môi trường Production | 9.6h | 1,831,600 | Lê Xuân Bách |
| 130 | M7 | M7 - Go-live | milestone | 0d | 2027-02-16 | 2027-02-16 | 129 | 0.1d | 0d | 2027-02-19 |  |  |  |  |
| 131 | 107 | Hyper-care 2 tuần đầu (on-site support) |  | 7.9d | 2027-02-16 | 2027-02-26 | 130 | 0.1d |  |  | Bùi Tiến Thành; Dịch vụ sao lưu & giám sát; Đi lại hỗ trợ hyper-care | 63.2h | 12,012,200 | Bùi Tiến Thành |
| 132 | 108 | Bàn giao vận hành cho đội IT khách hàng |  | 2.2d | 2027-02-16 | 2027-02-18 | 130, 133 | 3.8d |  |  | Trần Đức Cường | 17.6h | 4,174,500 | Trần Đức Cường |
| 133 | 109 | Soạn Admin Guide và Operation Runbook |  | 2.6d | 2027-01-08 | 2027-01-12 | 96 | 28.6d | 24.8d |  | Mai Công Trà Giang | 20.8h | 3,617,900 | Mai Công Trà Giang |

Notes:
- 107: Phân công: Mai Công Trà Giang (chủ trì) / Lê Xuân Bách (phối hợp xử lý defect) / Nguyễn Phương Thảo (phối hợp lập biên bản) / Trần Đức Cường (phối hợp phê duyệt cột mốc M6)
- 108: Mô tả: Soạn kịch bản UAT theo luồng nghiệp vụ, ký thống nhất với Product Owner của khách hàng / Sản phẩm bàn giao: Kịch bản UAT đã ký thống nhất / (Signed UAT Test Script) / PERT (person-day): MO=1, ML=2, MP=3, EST=2, Tăng thêm=0.2, EST chốt=2.2 / Thời gian theo WBS: 05/02/2027 - 07/02/2027 / Sản phẩm bàn giao: Kịch bản UAT đã ký thống nhất (Signed UAT Test Script)
- 109: Mô tả: Onboarding khách hàng, training 1 buổi về cách chạy UAT và ghi defect / Sản phẩm bàn giao: Biên bản onboarding UAT + Tài liệu hướng dẫn / (UAT Onboarding Minutes + Guide) / PERT (person-day): MO=0.5, ML=1, MP=1.5, EST=1, Tăng thêm=0, EST chốt=1.0 / Thời gian theo WBS: 08/02/2027 - 08/02/2027 / Sản phẩm bàn giao: Biên bản onboarding UAT + Tài liệu hướng dẫn (UAT Onboarding Minutes + Guide)
- 110: Mô tả: Support tại chỗ khi khách hàng chạy UAT, giải đáp thắc mắc / Sản phẩm bàn giao: Nhật ký hỗ trợ UAT / (UAT Support Log) / PERT (person-day): MO=2, ML=3, MP=5, EST=3.2, Tăng thêm=0.3, EST chốt=3.5 / Thời gian theo WBS: 09/02/2027 - 12/02/2027 / Sản phẩm bàn giao: Nhật ký hỗ trợ UAT (UAT Support Log)
- 111: Mô tả: Fix defect phát sinh trong UAT theo SLA đã cam kết (Sev 1 ≤ 4h) / Sản phẩm bàn giao: Defect Log UAT + Bản build đã fix / (UAT Defect Log + Fixed Build) / PERT (person-day): MO=2, ML=3, MP=5, EST=3.2, Tăng thêm=0.3, EST chốt=3.5 / Thời gian theo WBS: 09/02/2027 - 12/02/2027 / Sản phẩm bàn giao: Defect Log UAT + Bản build đã fix (UAT Defect Log + Fixed Build)
- 112: Mô tả: Tổng hợp biên bản UAT với pass rate ≥95%, 0 defect Sev 1 tồn đọng, có khách hàng ký / Sản phẩm bàn giao: Biên bản UAT có ký của khách hàng / (Signed UAT Sign-off Report) / PERT (person-day): MO=0.5, ML=1, MP=1.5, EST=1, Tăng thêm=0.1, EST chốt=1.1 / Thời gian theo WBS: 11/02/2027 - 12/02/2027 / Sản phẩm bàn giao: Biên bản UAT có ký của khách hàng (Signed UAT Sign-off Report)
- 113: Mô tả: Trình biên bản UAT cho Ban Chỉ đạo ký duyệt cột mốc M6 / Sản phẩm bàn giao: Biên bản phê duyệt UAT / (UAT Approval Minutes) / PERT (person-day): MO=0.5, ML=1, MP=1.5, EST=1, Tăng thêm=0, EST chốt=1.0 / Thời gian theo WBS: 12/02/2027 - 12/02/2027 / Sản phẩm bàn giao: Biên bản phê duyệt UAT (UAT Approval Minutes)
- 114: Cột mốc dự án. Mốc cam kết (Deadline): 12/02/2027.
- 115: Phân công: Nguyễn Phương Thảo (chủ trì) / Lê Xuân Bách (phối hợp kỹ thuật ETL)
- 116: Mô tả: Khảo sát chi tiết cấu trúc dữ liệu hiện có của khách hàng, mapping với schema mới / Sản phẩm bàn giao: Báo cáo phân tích dữ liệu nguồn + Mapping / (Source Data Analysis + Mapping Document) / PERT (person-day): MO=1, ML=2, MP=3, EST=2, Tăng thêm=0.2, EST chốt=2.2 / Thời gian theo WBS: 08/02/2027 - 10/02/2027 / Sản phẩm bàn giao: Báo cáo phân tích dữ liệu nguồn + Mapping (Source Data Analysis + Mapping Document)
- 117: Mô tả: Viết script Python/SQL để ETL từ Excel sang PostgreSQL, có validation và log / Sản phẩm bàn giao: Bộ script ETL / (ETL Script Suite) / PERT (person-day): MO=2, ML=3, MP=5, EST=3.2, Tăng thêm=0.3, EST chốt=3.5 / Thời gian theo WBS: 10/02/2027 - 13/02/2027 / Sản phẩm bàn giao: Bộ script ETL (ETL Script Suite)
- 118: Mô tả: Chạy DQ check trên dữ liệu đã migrate, đảm bảo tỷ lệ dữ liệu sạch ≥98% / Sản phẩm bàn giao: Báo cáo Data Quality Check / (Data Quality Check Report) / PERT (person-day): MO=1, ML=1.5, MP=2.5, EST=1.6, Tăng thêm=0.1, EST chốt=1.7 / Thời gian theo WBS: 13/02/2027 - 14/02/2027 / Sản phẩm bàn giao: Báo cáo Data Quality Check (Data Quality Check Report)
- 119: Mô tả: Đối chiếu 100% dữ liệu nhân sự và hợp đồng, có ký xác nhận khách hàng / Sản phẩm bàn giao: Báo cáo Reconciliation có ký nhận / (Signed Reconciliation Report) / PERT (person-day): MO=1, ML=2, MP=3, EST=2, Tăng thêm=0.2, EST chốt=2.2 / Thời gian theo WBS: 14/02/2027 - 16/02/2027 / Sản phẩm bàn giao: Báo cáo Reconciliation có ký nhận (Signed Reconciliation Report)
- 120: Phân công: Mai Công Trà Giang (chủ trì) / Nguyễn Phương Thảo (phối hợp đào tạo super users)
- 121: Mô tả: Bộ tài liệu đào tạo cho 3 vai trò HR Admin/Manager/Employee, kèm video hướng dẫn và cheatsheet / Sản phẩm bàn giao: Bộ tài liệu đào tạo / (Training Materials: Slides, Videos, Cheatsheets) / PERT (person-day): MO=2, ML=3, MP=5, EST=3.2, Tăng thêm=0, EST chốt=3.2 / Thời gian theo WBS: 08/02/2027 - 12/02/2027 / Sản phẩm bàn giao: Bộ tài liệu đào tạo (Training Materials: Slides, Videos, Cheatsheets)
- 122: Mô tả: Kịch bản đào tạo cho super users (chi tiết) và người dùng cuối (căn bản) / Sản phẩm bàn giao: Kịch bản đào tạo / (Training Script) / PERT (person-day): MO=1, ML=1.5, MP=2, EST=1.5, Tăng thêm=0, EST chốt=1.5 / Thời gian theo WBS: 13/02/2027 - 14/02/2027 / Sản phẩm bàn giao: Kịch bản đào tạo (Training Script)
- 123: Mô tả: Đào tạo trực tiếp super users 2 ngày, đảm bảo 100% super users pass bài kiểm tra vận hành / Sản phẩm bàn giao: Biên bản đào tạo super users + Kết quả kiểm tra / (Super User Training Minutes + Test Results) / PERT (person-day): MO=2, ML=2, MP=3, EST=2.2, Tăng thêm=0.2, EST chốt=2.4 / Thời gian theo WBS: 15/02/2027 - 17/02/2027 / Sản phẩm bàn giao: Biên bản đào tạo super users + Kết quả kiểm tra (Super User Training Minutes + Test Results)
- 124: Mô tả: Super users đào tạo người dùng cuối, nhóm dự án hỗ trợ; ≥90% người dùng hoàn thành đào tạo trong tuần đầu / Sản phẩm bàn giao: Biên bản đào tạo người dùng cuối / (End User Training Minutes) / PERT (person-day): MO=2, ML=3, MP=5, EST=3.2, Tăng thêm=0.3, EST chốt=3.5 / Thời gian theo WBS: 17/02/2027 - 21/02/2027 / Sản phẩm bàn giao: Biên bản đào tạo người dùng cuối (End User Training Minutes)
- 125: Mô tả: Biên bản đào tạo có danh sách hoàn thành, kết quả kiểm tra, chữ ký khách hàng / Sản phẩm bàn giao: Biên bản đào tạo tổng hợp / (Consolidated Training Report) / PERT (person-day): MO=0.5, ML=1, MP=1.5, EST=1, Tăng thêm=0, EST chốt=1.0 / Thời gian theo WBS: 21/02/2027 - 22/02/2027 / Sản phẩm bàn giao: Biên bản đào tạo tổng hợp (Consolidated Training Report)
- 126: Phân công: Lê Xuân Bách (chủ trì) / Bùi Tiến Thành (phối hợp hyper-care & monitoring) / Mai Công Trà Giang (phối hợp tài liệu vận hành) / Trần Đức Cường (phối hợp bàn giao)
- 127: Mô tả: Deploy M0 lên Production qua CI/CD, chạy smoke test, go-live module M0 / Sản phẩm bàn giao: Bản build M0 trên Production + Biên bản Go-live M0 / (M0 Production Build + Go-live Minutes) / PERT (person-day): MO=0.5, ML=1, MP=2, EST=1.1, Tăng thêm=0.1, EST chốt=1.2 / Thời gian theo WBS: 17/02/2027 - 17/02/2027 / Sản phẩm bàn giao: Bản build M0 trên Production + Biên bản Go-live M0 (M0 Production Build + Go-live Minutes)
- 128: Mô tả: Deploy M1 lên Production, chạy smoke test, go-live M1 (sau M0 ổn định) / Sản phẩm bàn giao: Bản build M1 trên Production + Biên bản Go-live M1 / (M1 Production Build + Go-live Minutes) / PERT (person-day): MO=0.5, ML=1, MP=2, EST=1.1, Tăng thêm=0.1, EST chốt=1.2 / Thời gian theo WBS: 18/02/2027 - 18/02/2027 / Sản phẩm bàn giao: Bản build M1 trên Production + Biên bản Go-live M1 (M1 Production Build + Go-live Minutes)
- 129: Mô tả: Deploy M2 lên Production, chạy smoke test, go-live M2 - cột mốc M7 chính thức / Sản phẩm bàn giao: Bản build M2 trên Production + Biên bản Go-live M2 / (M2 Production Build + Go-live Minutes) / PERT (person-day): MO=0.5, ML=1, MP=2, EST=1.1, Tăng thêm=0.1, EST chốt=1.2 / Thời gian theo WBS: 19/02/2027 - 19/02/2027 / Sản phẩm bàn giao: Bản build M2 trên Production + Biên bản Go-live M2 (M2 Production Build + Go-live Minutes)
- 130: Cột mốc dự án. Mốc cam kết (Deadline): 19/02/2027.
- 131: Mô tả: Support tại chỗ hàng ngày trong 2 tuần đầu, xử lý issue Sev 1 ≤ 4h, monitoring 24/7 / Sản phẩm bàn giao: Nhật ký hyper-care / (Hyper-care Log) / PERT (person-day): MO=5, ML=7, MP=10, EST=7.2, Tăng thêm=0.7, EST chốt=7.9 / Thời gian theo WBS: 20/02/2027 - 28/02/2027 / Sản phẩm bàn giao: Nhật ký hyper-care (Hyper-care Log)
- 132: Mô tả: Chuyển giao chính thức, đội IT khách hàng ký nhận biên bản chuyển giao vận hành / Sản phẩm bàn giao: Biên bản chuyển giao vận hành có ký nhận / (Signed Operations Handover Minutes) / PERT (person-day): MO=1, ML=2, MP=3, EST=2, Tăng thêm=0.2, EST chốt=2.2 / Thời gian theo WBS: 22/02/2027 - 24/02/2027 / Sản phẩm bàn giao: Biên bản chuyển giao vận hành có ký nhận (Signed Operations Handover Minutes)
- 133: Mô tả: Tài liệu quản trị hệ thống cho đội IT khách hàng: cài đặt, backup, restore, xử lý sự cố / Sản phẩm bàn giao: Tài liệu quản trị hệ thống / (Admin Guide + Operation Runbook) / PERT (person-day): MO=1.5, ML=2.5, MP=4, EST=2.6, Tăng thêm=0, EST chốt=2.6 / Thời gian theo WBS: 15/02/2027 - 20/02/2027 / Sản phẩm bàn giao: Tài liệu quản trị hệ thống (Admin Guide + Operation Runbook)

| ID | WBS | Task | Duration | Start | Finish | Total slack | Constraint | Resources | Work | Cost | Người thực hiện |
| --- | --- | --- | --- | --- | --- | --- | --- | --- | --- | --- | --- |
| 134 | D | **D. NHÓM QUY TRÌNH GIÁM SÁT VÀ ĐIỀU KHIỂN (MONITORING & CONTROLLING) — Xuyên suốt** | 127d | 2026-09-02 | 2027-02-25 | 0.6d |  |  | 162.4h | 34,840,150 |  |
| 135 | D.1 | **D.1. Giám sát tiến độ và chi phí bằng EVM (hàng tháng, 6 kỳ)** | 107d | 2026-09-30 | 2027-02-25 | 0.6d |  |  | 38.4h | 8,728,500 |  |
| 136 | 110 | Thu thập PV/EV/AC hàng tháng (6 kỳ) | 107d | 2026-09-30 | 2027-02-25 | 0.6d | start no earlier than 2026-09-30 | Lê Xuân Bách [0.9%] | 8h | 1,518,000 | Lê Xuân Bách |
| 137 | 111 | Tính SPI, CPI, SV, CV, EAC, VAC, TCPI | 106d | 2026-10-01 | 2027-02-25 | 0.6d | start no earlier than 2026-10-01 | Trần Đức Cường [0.9%] | 8h | 1,897,500 | Trần Đức Cường |
| 138 | 112 | Lập báo cáo EVM tháng (6 kỳ) | 104d | 2026-10-05 | 2027-02-25 | 0.6d | start no earlier than 2026-10-05 | Trần Đức Cường [1.5%] | 12.8h | 3,036,000 | Trần Đức Cường |
| 139 | 113 | Xử lý cảnh báo khi SPI/CPI < 0,9 | 106d | 2026-10-01 | 2027-02-25 | 0.6d | start no earlier than 2026-10-01 | Trần Đức Cường [1.1%] | 9.6h | 2,277,000 | Trần Đức Cường |
| 140 | D.2 | **D.2. Giám sát rủi ro (định kỳ 2 tuần)** | 96d | 2026-10-15 | 2027-02-25 | 0.6d |  |  | 23.2h | 5,047,350 |  |
| 141 | 114 | Chủ trì họp rà soát Risk Register 2 tuần/lần | 96d | 2026-10-15 | 2027-02-25 | 0.6d | start no earlier than 2026-10-15 | Trần Đức Cường [1%] | 8h | 1,897,500 | Trần Đức Cường |
| 142 | 115 | Cập nhật Risk Register (12 phiên bản) | 96d | 2026-10-15 | 2027-02-25 | 0.6d | start no earlier than 2026-10-15 | Nguyễn Phương Thảo [0.9%] | 7.2h | 1,252,350 | Nguyễn Phương Thảo |
| 143 | 116 | Báo cáo rủi ro nhóm A gửi Ban Chỉ đạo | 96d | 2026-10-15 | 2027-02-25 | 0.6d | start no earlier than 2026-10-15 | Trần Đức Cường [1%] | 8h | 1,897,500 | Trần Đức Cường |
| 144 | D.3 | **D.3. Quản lý thay đổi qua CCB (theo yêu cầu, dự kiến 5-8 phiên)** | 99d | 2026-10-12 | 2027-02-25 | 0.6d |  |  | 33.6h | 7,524,100 |  |
| 145 | 117 | Tiếp nhận Change Request | 99d | 2026-10-12 | 2027-02-25 | 0.6d | start no earlier than 2026-10-12 | Trần Đức Cường [0.9%] | 7.2h | 1,707,750 | Trần Đức Cường |
| 146 | 118 | Phân tích tác động (Impact Analysis) | 99d | 2026-10-12 | 2027-02-25 | 0.6d | start no earlier than 2026-10-12 | Bùi Tiến Thành [1.2%] | 9.6h | 1,821,600 | Bùi Tiến Thành |
| 147 | 119 | Chủ trì họp CCB phê duyệt | 99d | 2026-10-12 | 2027-02-25 | 0.6d | start no earlier than 2026-10-12 | Trần Đức Cường [1.1%]; Họp Ban Chỉ đạo - CCB - nghiệm thu | 8.8h | 2,097,250 | Trần Đức Cường |
| 148 | 120 | Cập nhật baseline sau CR được duyệt | 99d | 2026-10-12 | 2027-02-25 | 0.6d | start no earlier than 2026-10-12 | Trần Đức Cường [1%] | 8h | 1,897,500 | Trần Đức Cường |
| 149 | D.4 | **D.4. Kiểm soát chất lượng deliverable** | 127d | 2026-09-02 | 2027-02-25 | 0.6d |  |  | 28.8h | 6,031,400 |  |
| 150 | 121 | Kiểm tra deliverable theo Quality Plan | 119d | 2026-09-14 | 2027-02-25 | 0.6d | start no earlier than 2026-09-14 | Trần Đức Cường [0.8%] | 8h | 1,897,500 | Trần Đức Cường |
| 151 | 122 | Thẩm định peer review 100% deliverable | 119d | 2026-09-14 | 2027-02-25 | 0.6d | start no earlier than 2026-09-14 | Nguyễn Phương Thảo [0.8%] | 8h | 1,391,500 | Nguyễn Phương Thảo |
| 152 | 123 | Cập nhật Defect Log nội bộ | 127d | 2026-09-02 | 2027-02-25 | 0.6d | start no earlier than 2026-09-02 | Nguyễn Phương Thảo [0.5%]; Văn phòng phẩm | 4.8h | 844,900 | Nguyễn Phương Thảo |
| 153 | 124 | Lập biên bản nghiệm thu nội bộ | 119d | 2026-09-14 | 2027-02-25 | 0.6d | start no earlier than 2026-09-14 | Trần Đức Cường [0.8%] | 8h | 1,897,500 | Trần Đức Cường |
| 154 | D.5 | **D.5. Truyền thông và báo cáo (theo nhịp điệu)** | 124d | 2026-09-07 | 2027-02-25 | 0.6d |  |  | 38.4h | 7,508,800 |  |
| 155 | 125 | Chủ trì họp giao ban nội bộ hàng tuần | 121d | 2026-09-07 | 2027-02-22 | 3.6d | start no earlier than 2026-09-07 | Trần Đức Cường [0.5%]; Chi phí quản lý dự án (5%) | 4.8h | 1,148,500 | Trần Đức Cường |
| 156 | 126 | Báo cáo tiến độ 2 tuần gửi khách hàng | 96d | 2026-10-12 | 2027-02-22 | 3.6d | start no earlier than 2026-10-12 | Mai Công Trà Giang [1%] | 8h | 1,391,500 | Mai Công Trà Giang |
| 157 | 127 | Báo cáo tháng gửi Ban Chỉ đạo | 104d | 2026-10-05 | 2027-02-25 | 0.6d | start no earlier than 2026-10-05 | Trần Đức Cường [1%] | 8h | 1,897,500 | Trần Đức Cường |
| 158 | 128 | Báo cáo cột mốc gửi Sponsor | 95d | 2026-10-12 | 2027-02-19 | 4.6d | start no earlier than 2026-10-12 | Mai Công Trà Giang [1.1%] | 8h | 1,391,500 | Mai Công Trà Giang |
| 159 | 129 | Tổ chức demo cho khách hàng | 27d | 2027-01-07 | 2027-02-12 | 9.6d | start no earlier than 2027-01-07 | Mai Công Trà Giang [4.4%]; Tổ chức demo | 9.6h | 1,679,800 | Mai Công Trà Giang |

Notes:
- 135: Phân công: Trần Đức Cường (chủ trì) / Lê Xuân Bách (phối hợp cung cấp dữ liệu kỹ thuật)
- 136: Mô tả: Thu thập Planned Value, Earned Value, Actual Cost từ Jira và sổ chi phí; tổng 6 kỳ tháng / Sản phẩm bàn giao: Bảng dữ liệu EVM tháng / (Monthly EVM Data Sheets) / PERT (person-day): MO=0.5, ML=1, MP=1.5, EST=1, Tăng thêm=0, EST chốt=1.0 / Thời gian theo WBS: Định kỳ cuối tháng: 30/09, 31/10, 30/11, 31/12/2026, 31/01/2027 và 25/02/2027 (kỳ 6, trước nghiệm thu) / Công việc dàn trải (level of effort): không tham gia đường găng. / Sản phẩm bàn giao: Bảng dữ liệu EVM tháng (Monthly EVM Data Sheets)
- 137: Mô tả: Tính các chỉ số EVM hàng tháng, cập nhật S-curve thực tế so với baseline / Sản phẩm bàn giao: Bảng chỉ số EVM + S-curve cập nhật / (EVM Indicators + Updated S-curve) / PERT (person-day): MO=0.5, ML=1, MP=1.5, EST=1, Tăng thêm=0, EST chốt=1.0 / Thời gian theo WBS: Định kỳ đầu tháng sau: 01-02/10, 01-02/11, 01-02/12/2026, 01-02/01, 01-02/02/2027 và 25/02/2027 (kỳ 6) / Công việc dàn trải (level of effort): không tham gia đường găng. / Sản phẩm bàn giao: Bảng chỉ số EVM + S-curve cập nhật (EVM Indicators + Updated S-curve)
- 138: Mô tả: Báo cáo EVM có bảng chỉ số + biểu đồ xu hướng gửi Ban Chỉ đạo hàng tháng / Sản phẩm bàn giao: Báo cáo EVM tháng / (Monthly EVM Report) / PERT (person-day): MO=1, ML=1.5, MP=2.5, EST=1.6, Tăng thêm=0, EST chốt=1.6 / Thời gian theo WBS: Định kỳ 03-05 đầu tháng sau: 03/10, 03/11, 03/12/2026, 03/01, 03/02/2027 và 25/02/2027 (kỳ 6, lập cùng hồ sơ quyết toán) / Công việc dàn trải (level of effort): không tham gia đường găng. / Sản phẩm bàn giao: Báo cáo EVM tháng (Monthly EVM Report)
- 139: Mô tả: Kích hoạt quy trình xử lý sai lệch, họp giải trình, đề xuất biện pháp điều chỉnh / Sản phẩm bàn giao: Nhật ký sai lệch + Biện pháp điều khiển / (Variance Log + Corrective Actions) / PERT (person-day): MO=0.5, ML=1, MP=2, EST=1.1, Tăng thêm=0.1, EST chốt=1.2 / Thời gian theo WBS: Theo yêu cầu khi có cảnh báo (dự kiến 2-3 lần trong 6 tháng) / Công việc dàn trải (level of effort): không tham gia đường găng. / Sản phẩm bàn giao: Nhật ký sai lệch + Biện pháp điều khiển (Variance Log + Corrective Actions)
- 140: Phân công: Trần Đức Cường (chủ trì) / Nguyễn Phương Thảo (phối hợp cập nhật Risk Register)
- 141: Mô tả: Họp risk review 2 tuần/lần với cả nhóm (~12 phiên), cập nhật xác suất và mức ảnh hưởng / Sản phẩm bàn giao: Biên bản họp rà soát rủi ro / (Risk Review Meeting Minutes) / PERT (person-day): MO=0.5, ML=1, MP=1.5, EST=1, Tăng thêm=0, EST chốt=1.0 / Thời gian theo WBS: Định kỳ 2 tuần: dự kiến các ngày 15 và 30 hàng tháng từ 10/2026 đến 02/2027 / Công việc dàn trải (level of effort): không tham gia đường găng. / Sản phẩm bàn giao: Biên bản họp rà soát rủi ro (Risk Review Meeting Minutes)
- 142: Mô tả: Cập nhật xác suất, mức ảnh hưởng, trạng thái ứng phó, ghi nhận rủi ro đã đóng / Sản phẩm bàn giao: Sổ đăng ký rủi ro cập nhật / (Updated Risk Register) / PERT (person-day): MO=0.5, ML=1, MP=1, EST=0.9, Tăng thêm=0, EST chốt=0.9 / Thời gian theo WBS: Định kỳ 2 tuần sau họp rà soát / Công việc dàn trải (level of effort): không tham gia đường găng. / Sản phẩm bàn giao: Sổ đăng ký rủi ro cập nhật (Updated Risk Register)
- 143: Mô tả: Báo cáo các rủi ro điểm ≥15 kèm phương án ứng phó cho Ban Chỉ đạo (khi có) / Sản phẩm bàn giao: Báo cáo rủi ro nhóm A / (Group A Risk Report) / PERT (person-day): MO=0.5, ML=1, MP=1.5, EST=1, Tăng thêm=0, EST chốt=1.0 / Thời gian theo WBS: Theo yêu cầu khi có rủi ro nhóm A (dự kiến 3-5 lần trong 6 tháng) / Công việc dàn trải (level of effort): không tham gia đường găng. / Sản phẩm bàn giao: Báo cáo rủi ro nhóm A (Group A Risk Report)
- 144: Phân công: Trần Đức Cường (chủ trì CCB) / Bùi Tiến Thành (phối hợp Impact Analysis kỹ thuật)
- 145: Mô tả: Receive CR qua Jira từ khách hàng và nội bộ, phân loại theo scope/schedule/cost/quality / Sản phẩm bàn giao: Change Log (nhật ký thay đổi) / (Change Log) / PERT (person-day): MO=0.5, ML=1, MP=1, EST=0.9, Tăng thêm=0, EST chốt=0.9 / Thời gian theo WBS: Theo yêu cầu trong toàn dự án / Công việc dàn trải (level of effort): không tham gia đường găng. / Sản phẩm bàn giao: Change Log (nhật ký thay đổi) (Change Log)
- 146: Mô tả: Phân tích tác động của CR đến scope/time/cost/quality/risk, đề xuất phương án / Sản phẩm bàn giao: Báo cáo Impact Analysis cho từng CR / (Impact Analysis Report per CR) / PERT (person-day): MO=0.5, ML=1, MP=2, EST=1.1, Tăng thêm=0.1, EST chốt=1.2 / Thời gian theo WBS: Theo yêu cầu trong toàn dự án / Công việc dàn trải (level of effort): không tham gia đường găng. / Sản phẩm bàn giao: Báo cáo Impact Analysis cho từng CR (Impact Analysis Report per CR)
- 147: Mô tả: Tổ chức họp CCB có đại diện khách hàng, trình CR và impact analysis, ra quyết định / Sản phẩm bàn giao: Biên bản họp CCB / (CCB Meeting Minutes) / PERT (person-day): MO=0.5, ML=1, MP=1.5, EST=1, Tăng thêm=0.1, EST chốt=1.1 / Thời gian theo WBS: Theo yêu cầu (dự kiến 5-8 phiên trong 6 tháng) / Công việc dàn trải (level of effort): không tham gia đường găng. / Sản phẩm bàn giao: Biên bản họp CCB (CCB Meeting Minutes)
- 148: Mô tả: Update Scope/Schedule/Cost baseline theo CR đã duyệt, thông báo toàn nhóm / Sản phẩm bàn giao: Baseline cập nhật + Thông báo thay đổi / (Updated Baselines + Change Notification) / PERT (person-day): MO=0.5, ML=1, MP=1.5, EST=1, Tăng thêm=0, EST chốt=1.0 / Thời gian theo WBS: Sau mỗi CR được duyệt / Công việc dàn trải (level of effort): không tham gia đường găng. / Sản phẩm bàn giao: Baseline cập nhật + Thông báo thay đổi (Updated Baselines + Change Notification)
- 149: Phân công: Trần Đức Cường (chủ trì rà soát tổng thể) / Nguyễn Phương Thảo (phối hợp peer review chi tiết)
- 150: Mô tả: Rà soát deliverable theo checklist trong Quality Management Plan trước khi bàn giao / Sản phẩm bàn giao: Checklist nghiệm thu deliverable / (Deliverable Acceptance Checklist) / PERT (person-day): MO=0.5, ML=1, MP=1.5, EST=1, Tăng thêm=0, EST chốt=1.0 / Thời gian theo WBS: Sau mỗi deliverable hoàn thành trong toàn dự án / Công việc dàn trải (level of effort): không tham gia đường găng. / Sản phẩm bàn giao: Checklist nghiệm thu deliverable (Deliverable Acceptance Checklist)
- 151: Mô tả: Peer review giữa các thành viên, ghi nhận vào peer review checklist / Sản phẩm bàn giao: Peer Review Log / (Peer Review Log) / PERT (person-day): MO=0.5, ML=1, MP=1.5, EST=1, Tăng thêm=0, EST chốt=1.0 / Thời gian theo WBS: Sau mỗi deliverable hoàn thành trong toàn dự án / Công việc dàn trải (level of effort): không tham gia đường găng. / Sản phẩm bàn giao: Peer Review Log (Peer Review Log)
- 152: Mô tả: Ghi nhận defect từ nội bộ và khách hàng, theo dõi trạng thái xử lý / Sản phẩm bàn giao: Defect Log nội bộ / (Internal Defect Log) / PERT (person-day): MO=0.5, ML=0.5, MP=1, EST=0.6, Tăng thêm=0, EST chốt=0.6 / Thời gian theo WBS: Xuyên suốt dự án / Công việc dàn trải (level of effort): không tham gia đường găng. / Sản phẩm bàn giao: Defect Log nội bộ (Internal Defect Log)
- 153: Mô tả: 100% deliverable có biên bản nghiệm thu nội bộ trước khi bàn giao chính thức / Sản phẩm bàn giao: Biên bản nghiệm thu nội bộ / (Internal Acceptance Minutes) / PERT (person-day): MO=0.5, ML=1, MP=1.5, EST=1, Tăng thêm=0, EST chốt=1.0 / Thời gian theo WBS: Sau mỗi deliverable hoàn thành / Công việc dàn trải (level of effort): không tham gia đường găng. / Sản phẩm bàn giao: Biên bản nghiệm thu nội bộ (Internal Acceptance Minutes)
- 154: Phân công: Trần Đức Cường (chủ trì báo cáo nội bộ & Ban Chỉ đạo) / Mai Công Trà Giang (phối hợp truyền thông với khách hàng)
- 155: Mô tả: Họp stand-up nội bộ hàng tuần (~24 phiên), cập nhật tiến độ, xử lý vướng mắc / Sản phẩm bàn giao: Biên bản họp tuần / (Weekly Stand-up Minutes) / PERT (person-day): MO=0.5, ML=0.5, MP=1, EST=0.6, Tăng thêm=0, EST chốt=0.6 / Thời gian theo WBS: Định kỳ hàng thứ Hai từ 07/09/2026 đến 22/02/2027 (~24 phiên) / Công việc dàn trải (level of effort): không tham gia đường găng. / Sản phẩm bàn giao: Biên bản họp tuần (Weekly Stand-up Minutes)
- 156: Mô tả: Báo cáo 2 tuần/lần gửi Product Owner của khách hàng (~12 lần) / Sản phẩm bàn giao: Báo cáo tiến độ 2 tuần / (Bi-weekly Progress Report) / PERT (person-day): MO=0.5, ML=1, MP=1.5, EST=1, Tăng thêm=0, EST chốt=1.0 / Thời gian theo WBS: Định kỳ 2 tuần từ 12/10/2026 đến 22/02/2027 / Công việc dàn trải (level of effort): không tham gia đường găng. / Sản phẩm bàn giao: Báo cáo tiến độ 2 tuần (Bi-weekly Progress Report)
- 157: Mô tả: Báo cáo tháng có EVM, Risk, Change Log gửi Ban Chỉ đạo (6 lần) / Sản phẩm bàn giao: Báo cáo tháng gửi Ban Chỉ đạo / (Monthly Report to Steering Committee) / PERT (person-day): MO=0.5, ML=1, MP=1.5, EST=1, Tăng thêm=0, EST chốt=1.0 / Thời gian theo WBS: Định kỳ 05 hàng tháng: 05/10, 05/11, 05/12/2026, 05/01, 05/02/2027 và báo cáo cuối kỳ 26/02/2027 / Công việc dàn trải (level of effort): không tham gia đường găng. / Sản phẩm bàn giao: Báo cáo tháng gửi Ban Chỉ đạo (Monthly Report to Steering Committee)
- 158: Mô tả: Báo cáo tại các cột mốc chính: end Planning, end Design, go-live (3 lần) / Sản phẩm bàn giao: Báo cáo cột mốc / (Milestone Report) / PERT (person-day): MO=0.5, ML=1, MP=1.5, EST=1, Tăng thêm=0, EST chốt=1.0 / Thời gian theo WBS: Ba mốc: 09/10/2026 (end Planning), 25/12/2026 (end Design), 19/02/2027 (go-live) / Công việc dàn trải (level of effort): không tham gia đường găng. / Sản phẩm bàn giao: Báo cáo cột mốc (Milestone Report)
- 159: Mô tả: Tổ chức demo cho khách hàng sau mỗi increment và UAT (3 internal + 1 UAT) / Sản phẩm bàn giao: Biên bản demo / (Demo Minutes) / PERT (person-day): MO=0.5, ML=1, MP=2, EST=1.1, Tăng thêm=0.1, EST chốt=1.2 / Thời gian theo WBS: 07/01, 18/01, 28/01/2027 (internal demos) và 12/02/2027 (UAT demo) / Công việc dàn trải (level of effort): không tham gia đường găng. / Sản phẩm bàn giao: Biên bản demo (Demo Minutes)

| ID | WBS | Task | Type | Duration | Start | Finish | Predecessors | Total slack | Free slack | Deadline | Resources | Work | Cost | Người thực hiện |
| --- | --- | --- | --- | --- | --- | --- | --- | --- | --- | --- | --- | --- | --- | --- |
| 160 | E | **E. NHÓM QUY TRÌNH KẾT THÚC (CLOSING PROCESS GROUP)** |  | 8d | 2027-02-16 | 2027-02-26 |  | 0d |  |  |  | 69.6h | 15,152,050 |  |
| 161 | E.1 | **E.1. Nghiệm thu chính thức và bàn giao hồ sơ dự án** |  | 4.7d | 2027-02-19 | 2027-02-26 |  | 0d |  |  |  | 45.6h | 9,965,550 |  |
| 162 | 130 | Nghiệm thu tổng thể với khách hàng |  | 1.7d | 2027-02-19 | 2027-02-23 | 130, 125 | 0d |  |  | Mai Công Trà Giang | 13.6h | 2,365,550 | Mai Công Trà Giang |
| 163 | 131 | Đóng gói toàn bộ deliverable |  | 1d | 2027-02-23 | 2027-02-24 | 162 | 0d |  |  | Trần Đức Cường; In ấn hồ sơ quản trị dự án | 8h | 1,907,500 | Trần Đức Cường |
| 164 | 132 | Lập hồ sơ quyết toán chi phí |  | 1d | 2027-02-23 | 2027-02-24 | 162 | 0d |  |  | Trần Đức Cường | 8h | 1,897,500 | Trần Đức Cường |
| 165 | 133 | Ký Biên bản nghiệm thu chính thức (M8) |  | 1.1d | 2027-02-24 | 2027-02-25 | 132, 163, 164 | 0d |  |  | Trần Đức Cường | 8.8h | 2,087,250 | Trần Đức Cường |
| 166 | 134 | Đóng hợp đồng và chuyển sang bảo hành |  | 0.9d | 2027-02-25 | 2027-02-26 | 165 | 0d |  |  | Trần Đức Cường | 7.2h | 1,707,750 | Trần Đức Cường |
| 167 | M8 | M8 - Nghiệm thu chính thức (kết thúc dự án) | milestone | 0d | 2027-02-26 | 2027-02-26 | 131, 166, 171 | 0d |  | 2027-02-26 |  |  |  |  |
| 168 | E.2 | **E.2. Tổng kết Lessons Learned** |  | 3d | 2027-02-16 | 2027-02-19 |  | 5d |  |  |  | 24h | 5,186,500 |  |
| 169 | 135 | Phân tích sai lệch tổng thể của dự án |  | 1d | 2027-02-16 | 2027-02-17 | 130 | 5d | 0d |  | Trần Đức Cường | 8h | 1,897,500 | Trần Đức Cường |
| 170 | 136 | Ghi nhận Lessons Learned |  | 1d | 2027-02-17 | 2027-02-18 | 169 | 5d | 0d |  | Trần Đức Cường | 8h | 1,897,500 | Trần Đức Cường |
| 171 | 137 | Cập nhật Knowledge Base tái sử dụng |  | 1d | 2027-02-18 | 2027-02-19 | 170 | 5d |  |  | Nguyễn Phương Thảo | 8h | 1,391,500 | Nguyễn Phương Thảo |

Notes:
- 161: Phân công: Trần Đức Cường (chủ trì) / Mai Công Trà Giang (phối hợp làm việc với khách hàng)
- 162: Mô tả: Rà soát toàn bộ deliverable với khách hàng, xử lý các vấn đề còn tồn đọng / Sản phẩm bàn giao: Biên bản nghiệm thu tổng thể / (Overall Acceptance Minutes) / PERT (person-day): MO=1, ML=1.5, MP=2.5, EST=1.6, Tăng thêm=0.1, EST chốt=1.7 / Thời gian theo WBS: 23/02/2027 - 24/02/2027 / Sản phẩm bàn giao: Biên bản nghiệm thu tổng thể (Overall Acceptance Minutes)
- 163: Mô tả: Đóng gói hồ sơ dự án hoàn chỉnh (5 nhóm A/B/C/D/E, 18 deliverable) theo cấu trúc chuẩn / Sản phẩm bàn giao: Hồ sơ dự án hoàn chỉnh / (Complete Project Dossier) / PERT (person-day): MO=0.5, ML=1, MP=1.5, EST=1, Tăng thêm=0, EST chốt=1.0 / Thời gian theo WBS: 24/02/2027 - 25/02/2027 / Sản phẩm bàn giao: Hồ sơ dự án hoàn chỉnh (Complete Project Dossier)
- 164: Mô tả: So sánh AC vs Cost Baseline, giải trình sai lệch từng mục chi, đề xuất phương án / Sản phẩm bàn giao: Hồ sơ quyết toán chi phí / (Cost Settlement Dossier) / PERT (person-day): MO=0.5, ML=1, MP=1.5, EST=1, Tăng thêm=0, EST chốt=1.0 / Thời gian theo WBS: 25/02/2027 - 26/02/2027 / Sản phẩm bàn giao: Hồ sơ quyết toán chi phí (Cost Settlement Dossier)
- 165: Mô tả: Ban Chỉ đạo ký biên bản nghiệm thu chính thức - cột mốc M8, đóng dự án / Sản phẩm bàn giao: Biên bản nghiệm thu chính thức có ký của Ban Chỉ đạo / (Signed Final Acceptance Minutes) / PERT (person-day): MO=0.5, ML=1, MP=1.5, EST=1, Tăng thêm=0.1, EST chốt=1.1 / Thời gian theo WBS: 25/02/2027 - 26/02/2027 / Sản phẩm bàn giao: Biên bản nghiệm thu chính thức có ký của Ban Chỉ đạo (Signed Final Acceptance Minutes)
- 166: Mô tả: Ký biên bản đóng hợp đồng, giải phóng cam kết sang giai đoạn bảo hành hậu dự án / Sản phẩm bàn giao: Biên bản đóng hợp đồng / (Contract Closure Minutes) / PERT (person-day): MO=0.5, ML=1, MP=1, EST=0.9, Tăng thêm=0, EST chốt=0.9 / Thời gian theo WBS: 26/02/2027 - 26/02/2027 / Sản phẩm bàn giao: Biên bản đóng hợp đồng (Contract Closure Minutes)
- 167: Cột mốc dự án. Mốc cam kết (Deadline): 26/02/2027.
- 168: Phân công: Trần Đức Cường (chủ trì) / Nguyễn Phương Thảo (phối hợp cập nhật Knowledge Base)
- 169: Mô tả: Phân tích SPI/CPI cuối kỳ, nguyên nhân sai lệch tiến độ và chi phí so với baseline / Sản phẩm bàn giao: Báo cáo phân tích sai lệch tổng thể / (Overall Variance Analysis Report) / PERT (person-day): MO=0.5, ML=1, MP=1.5, EST=1, Tăng thêm=0, EST chốt=1.0 / Thời gian theo WBS: 24/02/2027 - 25/02/2027 / Sản phẩm bàn giao: Báo cáo phân tích sai lệch tổng thể (Overall Variance Analysis Report)
- 170: Mô tả: Ghi nhận những gì đúng/sai của kế hoạch, kiến nghị cho các dự án HRMS tương lai / Sản phẩm bàn giao: Báo cáo Lessons Learned / (Lessons Learned Report) / PERT (person-day): MO=0.5, ML=1, MP=1.5, EST=1, Tăng thêm=0, EST chốt=1.0 / Thời gian theo WBS: 25/02/2027 - 26/02/2027 / Sản phẩm bàn giao: Báo cáo Lessons Learned (Lessons Learned Report)
- 171: Mô tả: Bổ sung các template, checklist, process vào knowledge base cho dự án tương lai / Sản phẩm bàn giao: Knowledge Base cập nhật / (Updated Knowledge Base) / PERT (person-day): MO=0.5, ML=1, MP=1.5, EST=1, Tăng thêm=0, EST chốt=1.0 / Thời gian theo WBS: 26/02/2027 - 26/02/2027 / Sản phẩm bàn giao: Knowledge Base cập nhật (Updated Knowledge Base)
