# Dự án Quản lý Cửa hàng Thiết bị Máy tính

Schedule from MS Project, 2026-09-01 to 2027-02-18, costs in ₫.

## Calendars

- Standard: Mon-Fri 08:00-12:00, 13:00-17:00; Sat-Sun off.

## Resources

| Resource | Rate |
| --- | --- |
| Nguyễn Thế Dũng | 100000 |
| Thuê ngoài - Lập trình | 171961 |
| Thuê ngoài - Phân tích | 171961 |
| Thuê ngoài - Thiết kế UI | 171961 |
| Trần Đình Hảo | 150000 |
| Trần Đức Khánh | 100000 |
| Trịnh Kim Nam | 100000 |
| Trịnh Tuấn Linh | 150000 |
| Võ Hoàng Dương | 200000 |
| Máy chủ server | 80000000 |
| Máy tính phát triển | 15000000 |
| Thiết bị mạng | 25000000 |
| Phần mềm bản quyền | 30000000 |
| Thiết bị kiểm thử | 7500000 |
| Vật tư tiêu hao | 5000000 |
| Đi lại khảo sát cửa hàng |  |
| In tài liệu SRS HDSD |  |
| Điện Internet |  |
| In tài liệu chung |  |
| Đào tạo nhân viên sử dụng |  |
| Truyền thông giới thiệu hệ thống |  |
| Bảo trì hỗ trợ 6 tháng đầu |  |
| Dự phòng rủi ro |  |

## Schedule

| ID | WBS | Task | Duration | Start | Finish | Predecessors | Total slack | Free slack | Resources | Work | Cost |
| --- | --- | --- | --- | --- | --- | --- | --- | --- | --- | --- | --- |
| 1 | 1 | **Khảo sát yêu cầu** | 30d | 2026-09-01 | 2026-10-12 |  | 0d |  |  | 320h | 60,477,439.2 |
| 2 | 1.1 | Khảo sát hiện trạng | 4.5d | 2026-09-01 | 2026-09-07 |  | 0d |  | Nguyễn Thế Dũng; Đi lại khảo sát cửa hàng [0.1%] | 36h | 10,266,333.33 |
| 3 | 1.2 | Hợp nhất hiện trạng | 4.5d | 2026-09-03 | 2026-09-09 | 2SS+2d | 0d |  | Nguyễn Thế Dũng | 36h | 3,600,000 |
| 4 | 1.3 | Phân tích hiện trạng | 4.5d | 2026-09-07 | 2026-09-11 | 3SS+2d | 0d |  | Nguyễn Thế Dũng; Đi lại khảo sát cửa hàng [0.1%] | 36h | 10,266,333.33 |
| 5 | 1.4 | Đưa ra báo cáo đặc tả yêu cầu | 5d | 2026-09-11 | 2026-09-18 | 4 | 12.5d |  | Thuê ngoài - Phân tích; In tài liệu chung [0.1%] | 40h | 10,878,439.2 |
| 6 | 1.5 | Mời khách hàng tham vấn | 17.5d | 2026-09-11 | 2026-10-06 | 4 | 0d |  | Trần Đức Khánh; Đi lại khảo sát cửa hàng [0.1%] | 140h | 20,666,333.33 |
| 7 | 1.6 | Chỉnh sửa lại yêu cầu phần mềm | 4d | 2026-10-07 | 2026-10-12 | 5, 6 | 0d |  | Trần Đình Hảo | 32h | 4,800,000 |
| 8 | 2 | **Phân tích thiết kế hệ thống** | 51.5d | 2026-10-13 | 2026-12-23 |  | 0d |  |  | 1555.2h | 240,031,215.27 |
| 9 | 2.1 | Xác định ma trận yêu cầu | 3.5d | 2026-10-13 | 2026-10-16 | 7 | 0d |  | Trần Đức Khánh | 28h | 11,800,000 |
| 10 | 2.2 | Thiết kế kiến trúc hệ thống | 3.5d | 2026-10-14 | 2026-10-19 | 9SS+1d | 0d |  | Trần Đức Khánh | 28h | 2,800,000 |
| 11 | 2.3 | **Thiết kế biểu đồ UC của hệ thống** | 10.5d | 2026-10-19 | 2026-11-02 |  | 0d |  |  | 84h | 10,400,000 |
| 12 | 2.3.1 | Xác định và phân tích Actor của hệ thống | 3.5d | 2026-10-19 | 2026-10-22 | 10 | 0d |  | Trần Đức Khánh; Điện Internet [0.1%] | 28h | 4,800,000 |
| 13 | 2.3.2 | Xác định và phân tích các User Case | 3.5d | 2026-10-23 | 2026-10-28 | 12 | 0d |  | Trần Đức Khánh | 28h | 2,800,000 |
| 14 | 2.3.3 | Vẽ biểu đồ User Case tổng quát | 3.5d | 2026-10-28 | 2026-11-02 | 13 | 0d |  | Trần Đức Khánh | 28h | 2,800,000 |
| 15 | 2.4 | **Đặc tả Use Case** | 8d | 2026-11-03 | 2026-11-12 |  | 60.5d |  |  | 64h | 13,005,502.75 |
| 16 | 2.4.1 | Use Case Đăng nhập | 1d | 2026-11-03 | 2026-11-03 | 14 | 60.5d | 0d | Thuê ngoài - Phân tích; Điện Internet [0.1%] | 8h | 3,375,687.84 |
| 17 | 2.4.2 | Use Case Đăng xuất | 1d | 2026-11-04 | 2026-11-04 | 16 | 60.5d | 0d | Thuê ngoài - Phân tích | 8h | 1,375,687.84 |
| 18 | 2.4.3 | Use Case Đổi mật khẩu | 1d | 2026-11-05 | 2026-11-05 | 17 | 60.5d | 0d | Thuê ngoài - Phân tích | 8h | 1,375,687.84 |
| 19 | 2.4.4 | Use Case Đặt hàng | 1d | 2026-11-06 | 2026-11-06 | 18 | 60.5d | 0d | Thuê ngoài - Phân tích | 8h | 1,375,687.84 |
| 20 | 2.4.5 | Use Case bán hàng online | 1d | 2026-11-09 | 2026-11-09 | 19 | 60.5d | 0d | Thuê ngoài - Phân tích | 8h | 1,375,687.84 |
| 21 | 2.4.6 | Use Case quản lý đơn hàng | 1d | 2026-11-10 | 2026-11-10 | 20 | 60.5d | 0d | Thuê ngoài - Phân tích | 8h | 1,375,687.84 |
| 22 | 2.4.7 | Use Case quản lý xuất/nhập kho | 1d | 2026-11-11 | 2026-11-11 | 21 | 60.5d | 0d | Thuê ngoài - Phân tích | 8h | 1,375,687.84 |
| 23 | 2.4.8 | Use Case báo cáo tài chính | 1d | 2026-11-12 | 2026-11-12 | 22 | 60.5d | 0d | Thuê ngoài - Phân tích | 8h | 1,375,687.84 |
| 24 | 2.5 | **Xác định biểu đồ lớp** | 7.5d | 2026-11-13 | 2026-11-24 |  | 60.5d |  |  | 100h | 14,878,439.22 |
| 25 | 2.5.1 | Biểu đồ lớp Đăng nhập | 1d | 2026-11-13 | 2026-11-13 | 23 | 65d | 0d | Thuê ngoài - Phân tích; Điện Internet [0.1%] | 8h | 3,375,687.84 |
| 26 | 2.5.2 | Biểu đồ lớp Đăng xuất | 1d | 2026-11-16 | 2026-11-16 | 25 | 65d | 0d | Thuê ngoài - Phân tích | 8h | 1,375,687.84 |
| 27 | 2.5.3 | Biểu đồ lớp Đổi mật khẩu | 1d | 2026-11-17 | 2026-11-17 | 26 | 65d | 0d | Thuê ngoài - Phân tích | 8h | 1,375,687.84 |
| 28 | 2.5.4 | Biểu đồ lớp Tìm kiếm sản phẩm | 1d | 2026-11-18 | 2026-11-18 | 27 | 65d | 0d | Thuê ngoài - Phân tích | 8h | 1,375,687.84 |
| 29 | 2.5.5 | Biểu đồ lớp Thêm sản phẩm | 1d | 2026-11-19 | 2026-11-19 | 28 | 65d |  | Thuê ngoài - Phân tích | 8h | 1,375,687.84 |
| 30 | 2.5.6 | Biểu đồ lớp Sửa sản phẩm | 1.5d | 2026-11-13 | 2026-11-16 | 23 | 60.5d | 0d | Trần Đức Khánh | 12h | 1,200,000 |
| 31 | 2.5.7 | Biểu đồ lớp Tìm kiếm đơn hàng | 1.5d | 2026-11-16 | 2026-11-17 | 30 | 60.5d | 0d | Trần Đức Khánh | 12h | 1,200,000 |
| 32 | 2.5.8 | Biểu đồ lớp Cập nhật đơn hàng | 1.5d | 2026-11-18 | 2026-11-19 | 31 | 60.5d | 0d | Trần Đức Khánh | 12h | 1,200,000 |
| 33 | 2.5.9 | Biểu đồ lớp Quản lý kho | 1.5d | 2026-11-19 | 2026-11-20 | 32 | 60.5d | 0d | Trần Đức Khánh | 12h | 1,200,000 |
| 34 | 2.5.10 | Biểu đồ lớp Xuất báo cáo | 1.5d | 2026-11-23 | 2026-11-24 | 33 | 60.5d | 19d | Trần Đức Khánh | 12h | 1,200,000 |

Notes:
- 2: Khảo sát hiện trạng quy mô các cửa hàng bán thiết bị máy tính, số lượng sản phẩm trung b́nh, số lượng khách hàng trung b́nh, quy tŕnh quản lư cửa hàng hiện tại / Chi phí trực tiếp: / Đi lại, khảo sát: 3,333,333 ₫
- 3: Tổng hợp và hợp nhật các kết luận của khi khảo sát
- 4: Thảo luận, phân tích và đưa ra được các yêu cầu cho dự án / Chi phí trực tiếp: / Đi lại, khảo sát: 3,333,333 ₫
- 5: Triển khai các yêu cầu thành tài liệu phân tích yêu cầu để báo cáo khách hàng / Chi phí trực tiếp: / In ấn tài liệu GĐ1: 2,000,000 ₫
- 6: Khảo sát ư kiến khách hàng, nhằm t́m ra được những thiếu sót và đáp ứng triệt để yêu cầu của khách hàng / Chi phí trực tiếp: / Đi lại, khảo sát: 3,333,333 ₫
- 7: Chỉnh sửa lại các ư kiến mà khách hàng góp ư khi tham vấn
- 9: Lập bảng xác định các công việc và người thực hiện công việc đó. / Chi phí trực tiếp: / Visual Studio Professional 2022 (license): 4,000,000 ₫ / Microsoft 365 Business Basic (1 năm, 5 users): 5,000,000 ₫
- 10: Nhằm đưa ra cái nh́n tổng quan về việc triển khai cơ sở hạ tầng cho dự án.
- 12: Xác định được những tác nhân tham gia dự án / Chi phí trực tiếp: / Điện, Internet: 1,000,000 ţ
- 13: Xác định những chức năng mŕ dự án cần thực hiện
- 14: Xác định được những chức năng của hệ thống vŕ mối quan hệ một cách tổng quát
- 16: Xác định yęu cầu phi chức năng / Chi phí trực tiếp: / Điện, Internet: 1,000,000 ţ
- 17: Xác định yęu cầu bảo mật
- 18: Xác định nghiệp vụ
- 19: Xác định các tięu chí đặt hŕng
- 20: Xác định yếu tố của chức năng bán hŕng online
- 21: Xác định các yếu tố của chức năng quản lý đơn hŕng
- 22: Xác định yếu tố của chức năng quản lý tồn kho
- 23: Xác định yếu tố của chức năng báo cáo vŕ thống kę
- 25: Xây dựng mô h́nh lớp bao gồm các thuộc tính và các lớp của nghiệp vụ Đăng nhập / Chi phí trực tiếp: / Điện, Internet: 1,000,000 ₫
- 26: Xây dựng mô h́nh lớp bao gồm các thuộc tính và các lớp của nghiệp vụ Đăng xuất
- 27: Xây dựng mô h́nh lớp bao gồm các thuộc tính và các lớp của nghiệp vụ Đổi mật khẩu
- 28: Xây dựng mô h́nh lớp bao gồm các thuộc tính và các lớp của nghiệp vụ T́m kiếm sản phẩm
- 29: Xây dựng mô h́nh lớp bao gồm các thuộc tính và các lớp của nghiệp vụ Thêm sản phẩm
- 30: Xây dựng mô h́nh lớp bao gồm các thuộc tính và các lớp của nghiệp vụ Sửa sản phẩm
- 31: Xây dựng mô h́nh lớp bao gồm các thuộc tính và các lớp của nghiệp vụ T́m kiếm đơn hàng
- 32: Xây dựng mô h́nh lớp bao gồm các thuộc tính và các lớp của nghiệp vụ Cập nhật đơn hàng
- 33: Xây dựng mô h́nh lớp bao gồm các thuộc tính và các lớp của nghiệp vụ Quản lư kho
- 34: Xây dựng mô h́nh lớp bao gồm các thuộc tính và các lớp của nghiệp vụ Xuất báo cáo

| ID | WBS | Task | Duration | Start | Finish | Predecessors | Total slack | Free slack | Resources | Work | Cost |
| --- | --- | --- | --- | --- | --- | --- | --- | --- | --- | --- | --- |
| 35 | 2.6 | **Xác định biểu đồ tuần tự** | 33d | 2026-11-03 | 2026-12-17 |  | 41.5d |  |  | 300h | 32,000,000 |
| 36 | 2.6.1 | Biểu đồ tuần tự Đăng nhập | 1.5d | 2026-11-03 | 2026-11-04 | 14 | 41.5d | 0d | Trần Đức Khánh; Điện Internet [0.1%] | 12h | 3,200,000 |
| 37 | 2.6.2 | Biểu đồ tuần tự Đăng xuất | 1.5d | 2026-11-04 | 2026-11-05 | 36 | 41.5d | 0d | Trần Đức Khánh | 12h | 1,200,000 |
| 38 | 2.6.3 | Biểu đồ tuần tự Đổi mật khẩu | 1.5d | 2026-11-06 | 2026-11-09 | 37 | 41.5d | 0d | Trần Đức Khánh | 12h | 1,200,000 |
| 39 | 2.6.4 | Biểu đồ tuần tự Đặt hàng | 1d | 2026-11-03 | 2026-11-03 | 14 | 45d | 0d | Trịnh Kim Nam | 8h | 800,000 |
| 40 | 2.6.5 | Biểu đồ tuần tự Tìm kiếm sản phẩm | 1d | 2026-11-04 | 2026-11-04 | 39 | 45d | 0d | Trịnh Kim Nam | 8h | 800,000 |
| 41 | 2.6.6 | Biểu đồ tuần tự Sửa sản phẩm | 1d | 2026-11-05 | 2026-11-05 | 40 | 45d | 0d | Trịnh Kim Nam | 8h | 800,000 |
| 42 | 2.6.7 | Biểu đồ tuần tự Tìm kiếm đơn hàng | 5d | 2026-11-06 | 2026-11-12 | 41 | 45d | 0d | Trịnh Kim Nam | 40h | 4,000,000 |
| 43 | 2.6.8 | Biểu đồ tuần tự Cập nhật đơn hàng | 5d | 2026-11-13 | 2026-11-19 | 42 | 45d | 0d | Trịnh Kim Nam | 40h | 4,000,000 |
| 44 | 2.6.9 | Biểu đồ tuần tự bán hàng online | 5d | 2026-11-20 | 2026-11-26 | 43 | 45d | 0d | Trịnh Kim Nam | 40h | 4,000,000 |
| 45 | 2.6.10 | Biểu đồ tuần tự xuất/nhập kho | 5d | 2026-11-27 | 2026-12-03 | 44 | 45d | 0d | Trịnh Kim Nam | 40h | 4,000,000 |
| 46 | 2.6.11 | Biểu đồ tuần tự báo cáo tài chính | 5d | 2026-12-04 | 2026-12-10 | 45 | 45d | 0d | Trịnh Kim Nam | 40h | 4,000,000 |
| 47 | 2.6.12 | Biểu đồ tuần tự Xem báo cáo | 5d | 2026-12-11 | 2026-12-17 | 46 | 45d |  | Trịnh Kim Nam | 40h | 4,000,000 |
| 48 | 2.7 | **Xác định sơ đồ hoạt động** | 30d | 2026-11-09 | 2026-12-21 |  | 41.5d |  |  | 240h | 26,000,000 |
| 49 | 2.7.1 | Sơ đồ hoạt động Đăng nhập | 2.5d | 2026-11-09 | 2026-11-11 | 38 | 41.5d | 0d | Trịnh Kim Nam; Điện Internet [0.1%] | 20h | 4,000,000 |
| 50 | 2.7.2 | Sơ đồ hoạt động Đăng xuất | 2.5d | 2026-11-12 | 2026-11-16 | 49 | 41.5d | 0d | Trịnh Kim Nam | 20h | 2,000,000 |
| 51 | 2.7.3 | Sơ đồ hoạt động Đổi mật khẩu | 2.5d | 2026-11-16 | 2026-11-18 | 50 | 41.5d | 0d | Trịnh Kim Nam | 20h | 2,000,000 |
| 52 | 2.7.4 | Sơ đồ hoạt động Đặt hàng | 2.5d | 2026-11-19 | 2026-11-23 | 51 | 41.5d | 0d | Trịnh Kim Nam | 20h | 2,000,000 |
| 53 | 2.7.5 | Sơ đồ hoạt động Tìm kiếm sản phẩm | 2.5d | 2026-11-23 | 2026-11-25 | 52 | 41.5d | 0d | Trịnh Kim Nam | 20h | 2,000,000 |
| 54 | 2.7.6 | Sơ đồ hoạt động Sửa sản phẩm | 2.5d | 2026-11-26 | 2026-11-30 | 53 | 41.5d | 0d | Trịnh Kim Nam | 20h | 2,000,000 |
| 55 | 2.7.7 | Sơ đồ hoạt động Tìm kiếm đơn hàng | 2.5d | 2026-11-30 | 2026-12-02 | 54 | 41.5d | 0d | Trịnh Kim Nam | 20h | 2,000,000 |
| 56 | 2.7.8 | Sơ đồ hoạt động Cập nhật đơn hàng | 2.5d | 2026-12-03 | 2026-12-07 | 55 | 41.5d | 0d | Trịnh Kim Nam | 20h | 2,000,000 |
| 57 | 2.7.9 | Sơ đồ hoạt động Bán hàng online | 2.5d | 2026-12-07 | 2026-12-09 | 56 | 41.5d | 0d | Trịnh Kim Nam | 20h | 2,000,000 |
| 58 | 2.7.10 | Sơ đồ hoạt động Xuất/Nhập kho | 2.5d | 2026-12-10 | 2026-12-14 | 57 | 41.5d | 0d | Trịnh Kim Nam | 20h | 2,000,000 |
| 59 | 2.7.11 | Sơ đồ hoạt động Báo cáo tài chính | 2.5d | 2026-12-14 | 2026-12-16 | 58 | 41.5d | 0d | Trịnh Kim Nam | 20h | 2,000,000 |
| 60 | 2.7.12 | Sơ đồ hoạt động Xem báo cáo | 2.5d | 2026-12-17 | 2026-12-21 | 59 | 41.5d | 0d | Trịnh Kim Nam | 20h | 2,000,000 |

Notes:
- 36: Xây dựng các bước trong quy tŕnh khi Đăng nhập / Chi phí trực tiếp: / Điện, Internet: 1,000,000 ₫
- 37: Xây dựng các bước trong quy tŕnh khi Đăng xuất
- 38: Xây dựng các bước trong quy tŕnh khi Đổi mật khẩu
- 39: Xây dựng các bước trong quy tŕnh khi Đặt hàng
- 40: Xây dựng các bước trong quy tŕnh khi T́m kiếm sản phẩm
- 41: Xây dựng các bước trong quy tŕnh khi Sửa sản phẩm
- 42: Xây dựng các bước trong quy tŕnh khi T́m kiếm đơn hàng
- 43: Xây dựng các bước trong quy tŕnh khi Cập nhật đơn hàng
- 44: Xây dựng các bước trong quy tŕnh khi Bán hàng online
- 45: Xây dựng tŕnh tự các bước khi quản lư xuất/nhập kho
- 46: Xây dựng tŕnh tự các bước khi báo cáo tài chính
- 47: Xây dựng các bước trong quy tŕnh khi Xem báo cáo
- 49: Xây dựng các bước hoạt động cụ thể khi Đăng nhập / Chi phí trực tiếp: / Điện, Internet: 1,000,000 ₫
- 50: Xây dựng các bước hoạt động cụ thể khi Đăng xuất
- 51: Xây dựng các bước hoạt động cụ thể khi Đổi mật khẩu
- 52: Xây dựng các bước hoạt động cụ thể khi Đặt hàng
- 53: Xây dựng các bước hoạt động cụ thể khi T́m kiếm sản phẩm
- 54: Xây dựng các bước hoạt động cụ thể khi Sửa sản phẩm
- 55: Xây dựng các bước hoạt động cụ thể khi T́m kiếm đơn hàng
- 56: Xây dựng các bước hoạt động cụ thể khi Cập nhật đơn hàng
- 57: Xây dựng các bước hoạt động cụ thể khi Quản lư kho
- 58: Xây dựng các bước hoạt động cụ thể khi Liệt kê phiếu nhập xuất
- 59: Xây dựng các bước hoạt động cụ thể khi T́m kiếm tài khoản
- 60: Xây dựng các bước hoạt động cụ thể khi Xem báo cáo

| ID | WBS | Task | Duration | Start | Finish | Predecessors | Total slack | Free slack | Resources | Work | Cost |
| --- | --- | --- | --- | --- | --- | --- | --- | --- | --- | --- | --- |
| 61 | 2.8 | **Thiết kế giao diện** | 31.6d | 2026-11-03 | 2026-12-16 |  | 44.4d |  |  | 695.2h | 123,547,273.3 |
| 62 | 2.8.1 | Thiết kế giao diện Trang chủ | 7.9d | 2026-11-03 | 2026-11-12 | 14 | 44.4d | 0d | Thuê ngoài - Thiết kế UI; Điện Internet [0.1%] | 63.2h | 14,867,933.94 |
| 63 | 2.8.2 | Thiết kế giao diện Trang liệt kê sản phẩm | 7.9d | 2026-11-12 | 2026-11-24 | 62 | 44.4d | 0d | Thuê ngoài - Thiết kế UI | 63.2h | 10,867,933.94 |
| 64 | 2.8.3 | Thiết kế giao diện Trang Quản lý sản phẩm | 7.9d | 2026-11-24 | 2026-12-04 | 63 | 44.4d | 0d | Thuê ngoài - Thiết kế UI | 63.2h | 10,867,933.94 |
| 65 | 2.8.4 | Thiết kế giao diện Danh mục hàng | 7.9d | 2026-12-04 | 2026-12-16 | 64 | 44.4d | 2.9d | Thuê ngoài - Thiết kế UI | 63.2h | 10,867,933.94 |
| 66 | 2.8.5 | Thiết kế giao diện Quản lý đơn hàng | 7.9d | 2026-11-03 | 2026-11-12 | 14 | 44.4d | 0d | Thuê ngoài - Thiết kế UI | 63.2h | 10,867,933.94 |
| 67 | 2.8.6 | Thiết kế giao diện Quản lý kho | 7.9d | 2026-11-12 | 2026-11-24 | 66 | 44.4d | 0d | Thuê ngoài - Thiết kế UI | 63.2h | 10,867,933.94 |
| 68 | 2.8.7 | Thiết kế giao diện Thay đổi thông tin tài khoản | 7.9d | 2026-11-24 | 2026-12-04 | 67 | 44.4d | 0d | Thuê ngoài - Thiết kế UI | 63.2h | 10,867,933.94 |
| 69 | 2.8.8 | Thiết kế giao diện cho phần Xem xuất báo cáo | 7.9d | 2026-12-04 | 2026-12-16 | 68 | 44.4d | 2.9d | Thuê ngoài - Thiết kế UI | 63.2h | 10,867,933.94 |
| 70 | 2.8.9 | Thiết kế giao diện Trang đăng xuất | 7.9d | 2026-11-03 | 2026-11-12 | 14 | 52.3d | 0d | Thuê ngoài - Thiết kế UI | 63.2h | 10,867,933.94 |
| 71 | 2.8.10 | Thiết kế giao diện Trang Báo cáo | 7.9d | 2026-11-12 | 2026-11-24 | 70 | 52.3d | 0d | Thuê ngoài - Thiết kế UI | 63.2h | 10,867,933.94 |
| 72 | 2.8.11 | Thiết kế giao diện Trang Đổi mật khẩu | 7.9d | 2026-11-24 | 2026-12-04 | 71 | 52.3d | 10.8d | Thuê ngoài - Thiết kế UI | 63.2h | 10,867,933.94 |
| 73 | 2.9 | Mời khách hàng tham vấn giao diện | 1d | 2026-12-21 | 2026-12-22 | 34, 60, 65, 69, 72 | 41.5d | 0d | Trịnh Kim Nam | 8h | 800,000 |
| 74 | 2.10 | Chỉnh sửa theo yêu cầu | 1d | 2026-12-22 | 2026-12-23 | 73 | 41.5d |  | Trịnh Kim Nam; In tài liệu SRS HDSD [0.1%] | 8h | 4,800,000 |
| 75 | 3 | **Xây dựng chương trình** | 72d | 2026-11-03 | 2027-02-10 |  | 0d |  |  | 2448h | 543,490,344.8 |
| 76 | 3.1 | Thiết kế CSDL | 29.5d | 2026-11-03 | 2026-12-14 | 14 | 0d |  | Nguyễn Thế Dũng | 236h | 116,100,000 |
| 77 | 3.2 | Xây dựng module tầng Data Access | 25d | 2026-11-19 | 2026-12-23 | 76SS+12d | 0d |  | Thuê ngoài - Lập trình | 200h | 34,392,196 |
| 78 | 3.3 | Xây dựng module tầng ADO | 56d | 2026-11-19 | 2027-02-04 | 76SS+12d | 10d | 0d | Võ Hoàng Dương | 448h | 89,600,000 |
| 79 | 3.4 | Xây dựng các chức năng phần Quản trị | 47.5d | 2026-11-24 | 2027-01-28 | 76SS+15d | 15.5d | 0d | Trần Đình Hảo | 380h | 95,500,000 |
| 80 | 3.5 | **Xây dựng chức năng phần người dùng** | 50d | 2026-12-03 | 2027-02-10 |  | 0d |  |  | 1120h | 198,298,148.8 |
| 81 | 3.5.1 | Đăng ký/Đăng nhập | 20d | 2026-12-03 | 2026-12-30 | 77SS+10d | 0d |  | Trịnh Tuấn Linh | 160h | 42,000,000 |
| 82 | 3.5.2 | Tìm kiếm & lọc sản phẩm | 20d | 2026-12-17 | 2027-01-13 | 81SS+10d | 0d |  | Trịnh Tuấn Linh | 160h | 24,000,000 |
| 83 | 3.5.3 | Giỏ hàng & Đặt hàng | 30d | 2026-12-31 | 2027-02-10 | 82SS+10d | 0d |  | Trịnh Tuấn Linh | 240h | 36,000,000 |
| 84 | 3.5.4 | Thanh toán trực tuyến | 20d | 2026-12-03 | 2026-12-30 | 77SS+10d | 5d | 0d | Thuê ngoài - Lập trình | 160h | 27,513,756.8 |
| 85 | 3.5.5 | Quản lý tài khoản cá nhân | 20d | 2026-12-17 | 2027-01-13 | 84SS+10d | 5d | 0d | Thuê ngoài - Lập trình | 160h | 27,513,756.8 |
| 86 | 3.5.6 | Đánh giá & bình luận sản phẩm | 20d | 2026-12-31 | 2027-01-27 | 85SS+10d | 5d | 0d | Thuê ngoài - Lập trình | 160h | 27,513,756.8 |
| 87 | 3.5.7 | Xem lịch sử đơn hàng | 10d | 2027-01-07 | 2027-01-20 | 86SS+5d | 5d |  | Thuê ngoài - Lập trình | 80h | 13,756,878.4 |
| 88 | 3.6 | Viết hướng dẫn sử dụng | 8d | 2026-12-22 | 2026-12-31 | 79SS+20d | 35d |  | Trần Đình Hảo | 64h | 9,600,000 |

Notes:
- 62: Bản thử Thiết kế giao diện Trang chủ / Chi phí trực tiếp: / Figma Professional (1 năm, 2 editor seats): 2,000,000 ₫ / Điện, Internet: 1,000,000 ₫
- 63: Bản thử Thiết kế giao diện Trang liệt kê sản phẩm
- 64: Bản thử Thiết kế giao diện Trang Quản lư sản phẩm
- 65: Bản thử Thiết kế giao diện Danh mục hàng
- 66: Bản thử Thiết kế giao diện Quản lư đơn hàng
- 67: Bản thử Thiết kế giao diện Quản lư kho
- 68: Bản thử Thiết kế giao diện Thay đổi thông tin tài khoản
- 69: Bản thử / Thiết kế giao diện cho phần Xem xuất báo cáo
- 70: Bản thử / Thiết kế giao diện Trang đăng xuất
- 71: Bản thử Thiết kế giao diện Trang Báo cáo
- 72: Bản thử Thiết kế giao diện Trang Đổi mật khẩu
- 73: Hỏi ư kiến cuối cùng của khách hàng về giao diện chương tŕnh
- 74: Chỉnh sửa theo những ư kiến của khách hàng, làm cam kết để bảo đảm khi nghiệm thu / Chi phí trực tiếp: / In ấn tài liệu GĐ2: 2,000,000 ₫
- 76: Xây dựng cơ sở dữ liệu cho dự án / Chi phí trực tiếp: / Máy chủ Dell PowerEdge T150 (Xeon E-2314, 16GB ECC, 2TB SATA): 38,000,000 ₫ / UPS APC Smart-UPS 1500VA (SMT1500I): 8,500,000 ₫ / Ổ cứng SSD Samsung 870 EVO 1TB (cho server): 7,000,000 ₫ / RAM DDR4 ECC 16GB bổ sung (server): 6,000,000 ₫ / Tủ rack 12U + phụ kiện lắp đặt: 7,000,000 ₫ / Windows Server 2022 Standard (license): 7,000,000 ₫ / Microsoft SQL Server 2022 Standard (1 license): 12,000,000 ₫ / Visual Studio Professional 2022 (license): 4,000,000 ₫ / GitLab Premium Self-Managed (1 năm): 3,000,000 ₫
- 77: Xây dựng tầng giao tiếp trực tiếp với CSDL
- 78: Xây dựng tầng giao tiếp gián tiếp với CSDL
- 79: Xây dựng các chức năng liên quan cho người quản trị hệ thống phần mềm / Chi phí trực tiếp: / HDD WD Red Plus 4TB (lưu trữ/backup): 6,500,000 ₫ / PC phát triển (Core i5-13400, 16GB, SSD 512GB, màn h́nh 24" IPS): 18,000,000 ₫ / Bàn phím cơ + chuột không dây Logitech: 4,500,000 ₫ / Tai nghe có mic + Webcam Logitech C920: 4,500,000 ₫ / Ổ cứng di động Seagate 2TB (sao lưu dữ liệu): 3,000,000 ₫ / USB Kingston DataTraveler 64GB: 1,000,000 ₫ / Dây nguồn, dây tín hiệu, ổ cắm điện dự pḥng: 1,000,000 ₫
- 81: Xây dựng phần đăng kư, đăng nhập cho người dùng và quản trị viên / Chi phí trực tiếp: / PC phát triển (Core i5-13400, 16GB, SSD 512GB, màn h́nh 24" IPS): 18,000,000 ₫
- 82: Xây dựng chức năng t́m kiếm và lọc sản phẩm theo cấu h́nh, giá, hăng
- 83: Xây dựng chức năng giỏ hàng và quy tŕnh đặt hàng
- 84: Tích hợp cổng thanh toán trực tuyến (COD, thẻ, ví điện tử)
- 85: Xây dựng chức năng xem/sửa thông tin tài khoản, lịch sử đơn hàng
- 86: Xây dựng chức năng đánh giá sao và b́nh luận cho sản phẩm
- 87: Xây dựng chức năng hiển thị lịch sử và trạng thái đơn hàng cho khách hàng
- 88: Viết tài liệu hướng dẫn sử dụng chương tŕnh

| ID | WBS | Task | Duration | Start | Finish | Predecessors | Total slack | Resources | Work | Cost |
| --- | --- | --- | --- | --- | --- | --- | --- | --- | --- | --- |
| 89 | 4 | **Kiểm thử chương trình** | 32.5d | 2026-12-31 | 2027-02-15 |  | 0d |  | 304h | 46,800,000 |
| 90 | 4.1 | **Kiểm thử chức năng** | 32.5d | 2026-12-31 | 2027-02-15 |  | 0d |  | 236h | 38,600,000 |
| 91 | 4.1.1 | Kiểm thử các chức năng phần quản trị | 12d | 2026-12-31 | 2027-01-15 | 79SS+25d, 78SS+30d | 18d | Nguyễn Thế Dũng | 96h | 15,600,000 |
| 92 | 4.1.2 | Kiểm thử chức năng phần người dùng | 17.5d | 2027-01-21 | 2027-02-15 | 83SS+15d, 87SS+5d | 0d | Trần Đức Khánh | 140h | 23,000,000 |
| 93 | 4.2 | Kiểm thử toàn cục | 5d | 2027-02-02 | 2027-02-08 | 91SS+5d, 92SS+8d | 0d | Nguyễn Thế Dũng | 40h | 4,000,000 |
| 94 | 4.3 | Sửa lỗi chương trình | 3.5d | 2027-02-04 | 2027-02-09 | 93SS+2d | 0d | Trần Đình Hảo | 28h | 4,200,000 |
| 95 | 5 | **Triển khai hệ thống** | 10d | 2027-02-05 | 2027-02-18 |  | 0d |  | 148h | 201,200,000 |
| 96 | 5.1 | Triển khai trong mạng nội bộ | 5d | 2027-02-05 | 2027-02-11 | 94SS+1d | 0d | Võ Hoàng Dương | 40h | 41,000,000 |
| 97 | 5.2 | Triển khai ra toàn cục | 5d | 2027-02-09 | 2027-02-15 | 96SS+2d | 0d | Võ Hoàng Dương; Đào tạo nhân viên sử dụng [0.1%]; Truyền thông giới thiệu hệ thống [0.1%] | 40h | 52,000,000 |
| 98 | 5.3 | Báo cáo chương trình | 3.5d | 2027-02-11 | 2027-02-16 | 97SS+2d | 0d | Trần Đình Hảo; Dự phòng rủi ro [0.1%] | 28h | 64,200,000 |
| 99 | 5.4 | Đào tạo nhân lực sử dụng chương trình | 5d | 2027-02-12 | 2027-02-18 | 98SS+1d | 0d | Nguyễn Thế Dũng; Bảo trì hỗ trợ 6 tháng đầu [0.1%] | 40h | 44,000,000 |
| 100 | 51 | Bảo trì hệ thống | 0.6d | 2026-09-01 | 2026-09-01 |  | 122.4d |  |  |  |

Notes:
- 91: T́m kiếm những thiếu sót và lỗi trong phần quản trị / Chi phí trực tiếp: / PC kiểm thử (Core i3-13100, 8GB, SSD 256GB, màn h́nh 22"): 6,000,000 ₫
- 92: Kiểm tra lỗi các chức năng phần người dùng / Chi phí trực tiếp: / PC kiểm thử (Core i3-13100, 8GB, SSD 256GB, màn h́nh 22"): 6,000,000 ₫ / Điện thoại Android Samsung Galaxy A15 (kiểm thử mobile): 3,000,000 ₫
- 93: Thử lỗi tổng quát toàn chương tŕnh
- 94: Sửa tất cả các lỗi đă được t́m thấy
- 96: Triển khai ứng dụng tại cửa hàng / Chi phí trực tiếp: / Router MikroTik hAP ax³: 4,500,000 ₫ / Switch TP-Link TL-SG1024D 24-port Gigabit: 3,500,000 ₫ / Access Point TP-Link EAP615-Wall (Wi-Fi 6): 5,000,000 ₫ / Cáp mạng Cat6 UTP (305m) + đầu RJ45 + tool bấm: 3,000,000 ₫ / Máy in HP LaserJet M211dw: 5,000,000 ₫ / Máy quét mă vạch Honeywell Voyager 1450g (USB): 4,000,000 ₫ / Đào tạo nhân viên: 8,000,000 ₫
- 97: Triển khai ứng dụng tại các mô h́nh cửa hàng tương tự / Chi phí trực tiếp: / Đào tạo nhân viên: 8,000,000 ₫ / Truyền thông: 14,000,000 ₫
- 98: Báo cáo nghiệm thu chương tŕnh / Chi phí trực tiếp: / Dự pḥng rủi ro: 30,000,000 ₫
- 99: Hướng dẫn sử dụng chương trěnh, đŕo tạo cán bộ, nghiệm thu chương trěnh / Chi phí trực tiếp: / Bảo trě 6 tháng: 20,000,000 ţ
- 100: Cử nhân viên bảo dưỡng, bảo tŕ hệ thống khi chạy chương tŕnh
