# Quản lý dự án phát triển và triển khai hệ thống quản lý tủ đồ thông minh Smartbox

Schedule from MS Project, 2026-09-08 to 2027-02-26, costs in ₫.
Baseline MS Project: WBS, lịch, PERT effort, nguồn lực, chi phí, rủi ro và milestone nghiệm thu
Đại học Bách khoa Hà Nội – Trường Công nghệ Thông tin và Truyền thông
BASELINE CNTT2026_N05 – SMARTBOX / Phạm vi IN: khảo sát–phân tích–thiết kế–phát triển phần mềm/CSDL; mô phỏng OTP/QR, thanh toán và trạng thái tủ; Unit/Integration/System/Acceptance Testing; triển khai demo và hồ sơ quản trị. / Phạm vi OUT: lắp tủ phần cứng thật tại Ocean Park; tích hợp cổng thanh toán/SMS thật; vận hành thương mại; cam kết hạ tầng chính thức của Ban quản lý tòa nhà. / Quy ước lịch: 7 ngày/tuần, 08:00–12:00 & 13:00–17:00. Duration = ngày lịch baseline; Work/Effort = ngày công PERT quy đổi, hai khái niệm được quản lý riêng. / PERT: EST = (MO + 4×ML + MP)/6; Effort chốt = EST × 1,10. Tổng effort baseline = 190,85 ngày công. / Cost baseline = 1.000.000.000 VND: nhân công 250M; hạ tầng/thiết bị 300M; chi khác 400M; dự phòng rủi ro 50M. Dự phòng được tách tại milestone Gate từng giai đoạn. / Quality baseline: / - 100% yêu cầu baseline có mã và truy vết yêu cầu ↔ use case ↔ test case/evidence. / - 100% kịch bản gửi–nhận, OTP/QR, COD/phí, thanh toán, phân quyền đạt UAT. / - System/UAT pass ≥95%; không còn lỗi Critical/High mở tại nghiệm thu. / - Không cấp trùng ngăn hiệu lực; payment chống ghi nhận lặp; audit log cho điều chỉnh. / - Deliverable bắt buộc có phiên bản, người duyệt và trạng thái. / Risk Register ưu tiên: / R1 Scope/yêu cầu tăng sau baseline (P4×I4=16) – Owner Khánh – khóa SRS; thay đổi qua CR và đánh giá time/cost. / R2 Chậm phê duyệt vị trí/hạ tầng triển khai thật (3×4=12) – Khánh – giữ phạm vi demo, triển khai thật là điều kiện ngoài phạm vi. / R3 OTP/QR/payment mock tích hợp không ổn định (3×4=12) – Hiếu – chuẩn hóa interface, mock trước, fallback test data. / R4 Sai lệch trạng thái ngăn/giao dịch/thanh toán (3×5=15) – Đức Anh – constraint CSDL, idempotency, transaction, integration test. / R5 Trễ nhánh găng (3×4=12) – Dương – review milestone hàng tuần, ưu tiên WBS găng, cân bằng nguồn lực. / R6 Quá tải/xung đột lịch học (3×3=9) – Khánh – backup, review chéo, chia nhỏ deliverable. / R7 Lỗi nghiêm trọng phát hiện muộn (3×4=12) – Đức Anh – shift-left, RTM, code review, regression sớm. / R8 Mất mạng/môi trường lỗi ngày nghiệm thu (2×5=10) – Khánh – backup DB/config, smoke test, local/offline demo. / Change Control: Ghi nhận CR → phân tích scope/schedule/cost/quality/risk → chấp thuận/hoãn/từ chối → cập nhật baseline & phiên bản → truyền thông và kiểm tra hậu thay đổi.
BASELINE CNTT2026_N05 SMARTBOX / Phạm vi IN: khảo sátphân tíchthiết kếphát triển phần mềm/CSDL; mô phỏng OTP/QR, thanh toán và trạng thái tủ; Unit/Integration/System/Acceptance Testing; triển khai demo và hồ sơ quản trị. / Phạm vi OUT: lắp tủ phần cứng thật tại Ocean Park; tích hợp cổng thanh toán/SMS thật; vận hành thương mại; cam kết hạ tầng chính thức của Ban quản lý tòa nhà. / Quy ước lịch: 7 ngày/tuần, 08:0012:00 & 13:0017:00. Duration = ngày lịch baseline; Work/Effort = ngày công PERT quy đổi, hai khái niệm được quản lý riêng. / PERT: EST = (MO + 4×ML + MP)/6; Effort chốt = EST × 1,10. Tổng effort baseline = 190,85 ngày công. / Cost baseline = 1.000.000.000 VND: nhân công 250M; hạ tầng/thiết bị 300M; chi khác 400M; dự phòng rủi ro 50M. Dự phòng được tách tại milestone Gate từng giai đoạn. / Quality baseline: / - 100% yêu cầu baseline có mã và truy vết yêu cầu ↔ use case ↔ test case/evidence. / - 100% kịch bản gửinhận, OTP/QR, COD/phí, thanh toán, phân quyền đạt UAT. / - System/UAT pass ≥95%; không còn lỗi Critical/High mở tại nghiệm thu. / - Không cấp trùng ngăn hiệu lực; payment chống ghi nhận lặp; audit log cho điều chỉnh. / - Deliverable bắt buộc có phiên bản, người duyệt và trạng thái. / Risk Register ưu tiên: / R1 Scope/yêu cầu tăng sau baseline (P4×I4=16) Owner Khánh khóa SRS; thay đổi qua CR và đánh giá time/cost. / R2 Chậm phê duyệt vị trí/hạ tầng triển khai thật (3×4=12) Khánh giữ phạm vi demo, triển khai thật là điều kiện ngoài phạm vi. / R3 OTP/QR/payment mock tích hợp không ổn định (3×4=12) Hiếu chuẩn hóa interface, mock trước, fallback test data. / R4 Sai lệch trạng thái ngăn/giao dịch/thanh toán (3×5=15) Đức Anh constraint CSDL, idempotency, transaction, integration test. / R5 Trễ nhánh găng (3×4=12) Dương review milestone hàng tuần, ưu tiên WBS găng, cân bằng nguồn lực. / R6 Quá tải/xung đột lịch học (3×3=9) Khánh backup, review chéo, chia nhỏ deliverable. / R7 Lỗi nghiêm trọng phát hiện muộn (3×4=12) Đức Anh shift-left, RTM, code review, regression sớm. / R8 Mất mạng/môi trường lỗi ngày nghiệm thu (2×5=10) Khánh backup DB/config, smoke test, local/offline demo. / Change Control: Ghi nhận CR → phân tích scope/schedule/cost/quality/risk → chấp thuận/hoãn/từ chối → cập nhật baseline & phiên bản → truyền thông và kiểm tra hậu thay đổi.

## Calendars

- Standard: Mon-Fri 08:00-12:00, 13:00-17:00; Sat-Sun off.

## Resources

| Resource | Group | Rate | Notes |
| --- | --- | --- | --- |
| Hoàng Đàm Khánh | Project Manager / Quản trị & Deployment | 163741 | PM; Charter/stakeholder; điều phối tích hợp/báo cáo; change control; nghiệm thu và đóng dự án. |
| Nguyễn Trọng Hiếu | Phân tích / Kỹ thuật / Unit Test | 163741 | Phân tích yêu cầu; kiến trúc/API; luồng gửinhận; Unit Testing; hỗ trợ Integration. |
| Nguyễn Hồng Dương | Scope / WBS / Tiến độ / Regression | 163741 | Scope Statement; WBS/PERT/Gantt; prototype; thuê ngăn/CODphí; regression và theo dõi tiến độ. |
| Phạm Đức Anh | Rủi ro / Chi phí / Hạ tầng / UAT | 163741 | Risk Register/dự toán; CSDL/trạng thái; hạ tầng; System/UAT; tài liệu và quản lý phiên bản. |

## Schedule

| ID | WBS | Task | Type | Duration | Start | Finish | Predecessors | Baseline start | Baseline finish | Baseline duration | Total slack | Deadline | Resources | Work | Cost | Baseline cost | Giai đoạn | Owner / Phụ trách chính | WBS ID | Logic phụ thuộc nguồn | Risk IDs |
| --- | --- | --- | --- | --- | --- | --- | --- | --- | --- | --- | --- | --- | --- | --- | --- | --- | --- | --- | --- | --- | --- |
| 1 | 1 | **SCOPE – KHỞI ĐỘNG & PHẠM VI** |  | 18d | 2026-09-08 | 2026-09-25 |  | 2026-09-08 | 2026-09-25 | 18d | 0d |  |  | 202.4h | 33,641,210.37 | 831,412.1 | Scope | Hoàng Đàm Khánh |  |  |  |
| 2 | 1.1 | Khởi động & thiết lập quản trị dự án |  | 6d | 2026-09-08 | 2026-09-13 |  | 2026-09-08 | 2026-09-13 | 6d | 0d |  | Hoàng Đàm Khánh; Nguyễn Trọng Hiếu [31.4%] | 63.07h | 10,676,609.03 | 453,266.09 | 1. Scope | Hoàng Đàm Khánh | 1.1 | Từ đầu | R6 |
| 3 | 1.2 | Khảo sát, xác định phạm vi & WBS |  | 12d | 2026-09-14 | 2026-09-25 | 2 | 2026-09-14 | 2026-09-25 | 12d | 0d |  | Hoàng Đàm Khánh [0.8%]; Nguyễn Hồng Dương; Phạm Đức Anh [4.7%] | 101.2h | 16,670,605.19 | 265,706.05 | 1. Scope | Nguyễn Hồng Dương | 1.2 | Sau 1.1 | R1,R5 |
| 4 | 1.3 | Dự toán chi phí & rủi ro ban đầu |  | 5d | 2026-09-14 | 2026-09-18 | 2 | 2026-09-14 | 2026-09-18 | 5d | 7d |  | Phạm Đức Anh [95.3%] | 38.13h | 6,243,996.16 | 62,439.96 | 1. Scope | Phạm Đức Anh | 1.3 | Sau 1.1 | R1,R5,R6 |
| 5 | GATE-1 | Gate 1 – Review/Phê duyệt kết thúc Scope | milestone | 0d | 2026-09-25 | 2026-09-25 | 3, 4 | 2026-09-25 | 2026-09-25 | 0d | 0d | 2026-09-25 |  |  | 50,000 | 50,000 | Scope | Hoàng Đàm Khánh | GATE-1 | Sau 1.2, 1.3 | R1–R8 (review theo phase) |
| 6 | 2 | **ANALYSIS – PHÂN TÍCH YÊU CẦU** |  | 28d | 2026-09-26 | 2026-10-23 |  | 2026-09-26 | 2026-10-23 | 28d | 0d |  |  | 240.53h | 39,985,206.53 | 993,852.07 | Analysis | Hoàng Đàm Khánh |  |  |  |
| 7 | 2.1 | Tổng hợp khảo sát & mô hình nghiệp vụ |  | 7d | 2026-09-26 | 2026-10-02 | 5 | 2026-09-26 | 2026-10-02 | 7d | 0d |  | Nguyễn Trọng Hiếu; Nguyễn Hồng Dương [10%] | 61.6h | 10,186,455.33 | 200,864.55 | 2. Analysis | Nguyễn Trọng Hiếu | 2.1 | Sau 1.2 | R1 |
| 8 | 2.2 | Phân tích use case & yêu cầu hệ thống |  | 17d | 2026-10-03 | 2026-10-19 | 7 | 2026-10-03 | 2026-10-19 | 17d | 0d |  | Nguyễn Trọng Hiếu; Phạm Đức Anh [4.6%] | 142.27h | 23,494,908.74 | 432,949.09 | 2. Analysis | Nguyễn Trọng Hiếu | 2.2 | Sau 2.1 | R1,R3 |
| 9 | 2.3 | Hoàn thiện SRS & ma trận truy vết |  | 4d | 2026-10-20 | 2026-10-23 | 8 | 2026-10-20 | 2026-10-23 | 4d | 0d |  | Hoàng Đàm Khánh; Phạm Đức Anh [14.6%] | 36.67h | 6,253,842.46 | 310,038.42 | 2. Analysis | Hoàng Đàm Khánh | 2.3 | Sau 2.2 | R1,R5 |
| 10 | GATE-2 | Gate 2 – Review/Phê duyệt kết thúc Analysis | milestone | 0d | 2026-10-23 | 2026-10-23 | 9 | 2026-10-23 | 2026-10-23 | 0d | 0d | 2026-10-23 |  |  | 50,000 | 50,000 | Analysis | Hoàng Đàm Khánh | GATE-2 | Sau 2.3 | R1–R8 (review theo phase) |
| 11 | 3 | **DESIGN – THIẾT KẾ HỆ THỐNG** |  | 28d | 2026-10-24 | 2026-11-20 |  | 2026-10-24 | 2026-11-20 | 28d | 0d |  |  | 244.93h | 41,425,667.63 | 1,721,056.68 | Design | Hoàng Đàm Khánh |  |  |  |
| 12 | 3.1 | Thiết kế kiến trúc & API |  | 8d | 2026-10-24 | 2026-10-31 | 10 | 2026-10-24 | 2026-10-31 | 8d | 5d |  | Nguyễn Trọng Hiếu [87.1%] | 55.73h | 9,475,840.54 | 441,258.41 | 3. Design | Nguyễn Trọng Hiếu | 3.1 | Sau 2.3 | R3 |
| 13 | 3.2 | Thiết kế CSDL, trạng thái & tích hợp nghiệp vụ |  | 13d | 2026-10-24 | 2026-11-05 | 10 | 2026-10-24 | 2026-11-05 | 13d | 0d |  | Phạm Đức Anh [97.3%] | 101.2h | 16,920,605.19 | 515,706.05 | 3. Design | Phạm Đức Anh | 3.2 | Song song 3.1 | R3,R4,R5 |
| 14 | 3.3 | Thiết kế prototype & chốt baseline |  | 15d | 2026-11-06 | 2026-11-20 | 12, 13 | 2026-11-06 | 2026-11-20 | 15d | 0d |  | Nguyễn Hồng Dương [73.3%] | 88h | 14,959,221.9 | 694,092.22 | 3. Design | Nguyễn Hồng Dương | 3.3 | Sau 3.1, 3.2 | R1,R5 |
| 15 | GATE-3 | Gate 3 – Review/Phê duyệt kết thúc Design | milestone | 0d | 2026-11-20 | 2026-11-20 | 14 | 2026-11-20 | 2026-11-20 | 0d | 0d | 2026-11-20 |  |  | 70,000 | 70,000 | Design | Hoàng Đàm Khánh | GATE-3 | Sau 3.3 | R1–R8 (review theo phase) |
| 16 | 4 | **DEVELOPMENT – PHÁT TRIỂN HỆ THỐNG** |  | 56d | 2026-11-21 | 2027-01-15 |  | 2026-11-21 | 2027-01-15 | 56d | 0d |  |  | 459.07h | 77,718,107.59 | 3,301,681.08 | Development | Hoàng Đàm Khánh |  |  |  |
| 17 | 4.1 | Thiết lập nền tảng phát triển & dữ liệu |  | 15d | 2026-11-21 | 2026-12-05 | 15 | 2026-11-21 | 2026-12-05 | 15d | 0d |  | Phạm Đức Anh [96.6%] | 115.87h | 20,197,142.17 | 1,414,721.42 | 4. Development | Phạm Đức Anh | 4.1 | Sau 3.3 | R4,R5 |
| 18 | 4.2 | Phát triển luồng gửi – nhận hàng |  | 14d | 2026-12-06 | 2026-12-19 | 17 | 2026-12-06 | 2026-12-19 | 14d | 3d |  | Nguyễn Trọng Hiếu [81.2%] | 90.93h | 15,414,529.3 | 673,895.29 | 4. Development | Nguyễn Trọng Hiếu | 4.2 | Sau 4.1 | R3 |
| 19 | 4.3 | Phát triển thuê ngăn, COD/phí & thanh toán |  | 17d | 2026-12-06 | 2026-12-22 | 17 | 2026-12-06 | 2026-12-22 | 17d | 0d |  | Nguyễn Hồng Dương [79.8%] | 108.53h | 17,896,373.68 | 302,713.74 | 4. Development | Nguyễn Hồng Dương | 4.3 | Sau 4.1 | R3,R4,R5 |
| 20 | 4.4 | Thông báo, sự cố, báo cáo & tích hợp |  | 24d | 2026-12-23 | 2027-01-15 | 18, 19 | 2026-12-23 | 2027-01-15 | 24d | 0d |  | Hoàng Đàm Khánh [74.9%] | 143.73h | 24,060,062.44 | 760,350.62 | 4. Development | Hoàng Đàm Khánh | 4.4 | Sau 4.2, 4.3 | R3,R4,R5,R7 |
| 21 | GATE-4 | Gate 4 – Review/Phê duyệt kết thúc Development | milestone | 0d | 2027-01-15 | 2027-01-15 | 20 | 2027-01-15 | 2027-01-15 | 0d | 0d | 2027-01-15 |  |  | 150,000 | 150,000 | Development | Hoàng Đàm Khánh | GATE-4 | Sau 4.4 | R1–R8 (review theo phase) |
| 22 | 5 | **TESTING – KIỂM THỬ & ĐẢM BẢO CHẤT LƯỢNG** |  | 21d | 2027-01-16 | 2027-02-05 |  | 2027-01-16 | 2027-02-05 | 21d | 0d |  |  | 244.93h | 41,605,667.63 | 1,901,056.68 | Testing | Hoàng Đàm Khánh |  |  |  |
| 23 | 5.1 | Chuẩn bị kiểm thử & Unit Testing |  | 4d | 2027-01-16 | 2027-01-19 | 21 | 2027-01-16 | 2027-01-19 | 4d | 0d |  | Nguyễn Trọng Hiếu; Nguyễn Hồng Dương [65%] | 52.8h | 9,195,533.14 | 636,455.33 | 5. Testing | Nguyễn Trọng Hiếu | 5.1 | Sau 4.4 | R7 |
| 24 | 5.2 | Integration/System/NFR & Acceptance Testing |  | 12d | 2027-01-20 | 2027-01-31 | 23 | 2027-01-20 | 2027-01-31 | 12d | 0d |  | Hoàng Đàm Khánh [14.2%]; Nguyễn Trọng Hiếu [18.3%]; Nguyễn Hồng Dương [1.9%]; Phạm Đức Anh | 129.07h | 21,983,525.46 | 1,061,335.25 | 5. Testing | Phạm Đức Anh | 5.2 | Sau 5.1 | R3,R4,R7 |
| 25 | 5.3 | Sửa lỗi, regression & báo cáo kiểm thử |  | 5d | 2027-02-01 | 2027-02-05 | 24 | 2027-02-01 | 2027-02-05 | 5d | 0d |  | Hoàng Đàm Khánh [48%]; Nguyễn Hồng Dương; Phạm Đức Anh [9.6%] | 63.07h | 10,326,609.03 | 103,266.09 | 5. Testing | Nguyễn Hồng Dương | 5.3 | Sau 5.2 | R5,R7 |
| 26 | GATE-5 | Gate 5 – Review/Phê duyệt kết thúc Testing | milestone | 0d | 2027-02-05 | 2027-02-05 | 25 | 2027-02-05 | 2027-02-05 | 0d | 0d | 2027-02-05 |  |  | 100,000 | 100,000 | Testing | Hoàng Đàm Khánh | GATE-5 | Sau 5.3 | R1–R8 (review theo phase) |

Notes:
- 1: Giai đoạn 1 Scope / Baseline: 08/09/2026 25/09/2026 (18 ngày lịch). / Đầu ra bắt buộc: Charter, Stakeholder Register, Scope Statement, WBS và baseline ban đầu / Effort: 25.30 ngày công; Cost baseline: 83,141,210 VND. / Dự phòng rủi ro 5,000,000 VND được tách tại Gate 1 và chỉ sử dụng khi được PM/nhóm phê duyệt. / Gate Scope: Charter, stakeholder, Scope Statement, WBS và baseline được review/chốt. / Deliverable / Đầu ra: Charter, Stakeholder Register, Scope Statement, WBS và baseline ban đầu / Tiêu chí nghiệm thu / Evidence: Gate Scope: Charter, stakeholder, Scope Statement, WBS và baseline được review/chốt.
- 2: WBS 1.1 Khởi động & thiết lập quản trị dự án / Mô tả/đầu ra: Charter, Stakeholder Register, quy ước quản trị / Logic nguồn workbook: Từ đầu. Trong file MS Project, Gate cuối phase được thêm để kiểm soát milestone nhưng không làm đổi ngày baseline. / PERT: MO=4.00; ML=7.00; MP=11.00; EST=7.17; Effort chốt +10%=7.88 ngày công. / Duration baseline=6 ngày lịch; Work được quản lý riêng theo effort. / Người phụ trách chính: Hoàng Đàm Khánh. Resource Assignment có thể gồm hỗ trợ chéo để bảo đảm không quá tải nhưng tổng effort từng thành viên vẫn khớp workbook. / Chi phí nhân công: 10,326,609 VND. Fixed Cost phi nhân công: 35,000,000 VND. Chi khác 35,0 tr.đ: khảo sát/liên lạc 10,0 + kickoff/quản trị tài liệu 25,0. / Risk IDs: R6 / Tiêu chí/evidence: Charter + Stakeholder Register có phiên bản, chủ trì PM và được nhóm rà soát. / Deliverable / Đầu ra: Charter, Stakeholder Register, quy ước quản trị / Tiêu chí nghiệm thu / Evidence: Charter + Stakeholder Register có phiên bản, chủ trì PM và được nhóm rà soát.
- 3: WBS 1.2 Khảo sát, xác định phạm vi & WBS / Mô tả/đầu ra: Scope Statement, WBS, PERT/baseline / Logic nguồn workbook: Sau 1.1. Trong file MS Project, Gate cuối phase được thêm để kiểm soát milestone nhưng không làm đổi ngày baseline. / PERT: MO=7.00; ML=11.00; MP=18.00; EST=11.50; Effort chốt +10%=12.65 ngày công. / Duration baseline=12 ngày lịch; Work được quản lý riêng theo effort. / Người phụ trách chính: Nguyễn Hồng Dương. Resource Assignment có thể gồm hỗ trợ chéo để bảo đảm không quá tải nhưng tổng effort từng thành viên vẫn khớp workbook. / Chi phí nhân công: 16,570,605 VND. Fixed Cost phi nhân công: 10,000,000 VND. Chi khác 10,0 tr.đ: phần phân bổ khảo sát/nghiệp vụ cho Scope/WBS. / Risk IDs: R1,R5 / Tiêu chí/evidence: Scope IN/OUT, tiêu chí chấp nhận, WBS/PERT/Gantt và baseline nhất quán. / Deliverable / Đầu ra: Scope Statement, WBS, PERT/baseline / Tiêu chí nghiệm thu / Evidence: Scope IN/OUT, tiêu chí chấp nhận, WBS/PERT/Gantt và baseline nhất quán.
- 4: WBS 1.3 Dự toán chi phí & rủi ro ban đầu / Mô tả/đầu ra: Dự toán sơ bộ, Risk Register v1 / Logic nguồn workbook: Sau 1.1. Trong file MS Project, Gate cuối phase được thêm để kiểm soát milestone nhưng không làm đổi ngày baseline. / PERT: MO=2.00; ML=4.00; MP=8.00; EST=4.33; Effort chốt +10%=4.77 ngày công. / Duration baseline=5 ngày lịch; Work được quản lý riêng theo effort. / Người phụ trách chính: Phạm Đức Anh. Resource Assignment có thể gồm hỗ trợ chéo để bảo đảm không quá tải nhưng tổng effort từng thành viên vẫn khớp workbook. / Chi phí nhân công: 6,243,996 VND. Fixed Cost phi nhân công: 0 VND. Không gắn chi phí phi nhân công trực tiếp; dự phòng Scope tách tại Gate 1. / Risk IDs: R1,R5,R6 / Tiêu chí/evidence: Dự toán khớp 1 tỷ; Risk Register có P/I/Owner/ứng phó. / Deliverable / Đầu ra: Dự toán sơ bộ, Risk Register v1 / Tiêu chí nghiệm thu / Evidence: Dự toán khớp 1 tỷ; Risk Register có P/I/Owner/ứng phó.
- 5: Milestone kiểm soát cuối giai đoạn Scope. / Gate Scope: Charter, stakeholder, Scope Statement, WBS và baseline được review/chốt. / Budget dự phòng rủi ro tại gate: 5,000,000 VND. Đây là cost reserve trong baseline, không mặc định là chi phí thực tế đã phát sinh. / Chỉ chuyển sang phase kế tiếp khi deliverable tối thiểu được review và có trạng thái baseline. / Deliverable / Đầu ra: Milestone review / phê duyệt phase / Tiêu chí nghiệm thu / Evidence: Gate Scope: Charter, stakeholder, Scope Statement, WBS và baseline được review/chốt.
- 6: Giai đoạn 2 Analysis / Baseline: 26/09/2026 23/10/2026 (28 ngày lịch). / Đầu ra bắt buộc: Báo cáo khảo sát, SRS, use case/quy trình, ma trận truy vết / Effort: 30.07 ngày công; Cost baseline: 99,385,207 VND. / Dự phòng rủi ro 5,000,000 VND được tách tại Gate 2 và chỉ sử dụng khi được PM/nhóm phê duyệt. / Gate Analysis: SRS/RTM baseline; 100% yêu cầu có mã và truy vết. / Deliverable / Đầu ra: Báo cáo khảo sát, SRS, use case/quy trình, ma trận truy vết / Tiêu chí nghiệm thu / Evidence: Gate Analysis: SRS/RTM baseline; 100% yêu cầu có mã và truy vết.
- 7: WBS 2.1 Tổng hợp khảo sát & mô hình nghiệp vụ / Mô tả/đầu ra: Mô hình AS-IS/TO-BE / Logic nguồn workbook: Sau 1.2. Trong file MS Project, Gate cuối phase được thêm để kiểm soát milestone nhưng không làm đổi ngày baseline. / PERT: MO=4.00; ML=7.00; MP=10.00; EST=7.00; Effort chốt +10%=7.70 ngày công. / Duration baseline=7 ngày lịch; Work được quản lý riêng theo effort. / Người phụ trách chính: Nguyễn Trọng Hiếu. Resource Assignment có thể gồm hỗ trợ chéo để bảo đảm không quá tải nhưng tổng effort từng thành viên vẫn khớp workbook. / Chi phí nhân công: 10,086,455 VND. Fixed Cost phi nhân công: 10,000,000 VND. Chi khác 10,0 tr.đ: phần khảo sát bổ sung/chuẩn hóa dữ liệu yêu cầu. / Risk IDs: R1 / Tiêu chí/evidence: AS-IS/TO-BE phản ánh khảo sát và vấn đề nghiệp vụ. / Deliverable / Đầu ra: Mô hình AS-IS/TO-BE / Tiêu chí nghiệm thu / Evidence: AS-IS/TO-BE phản ánh khảo sát và vấn đề nghiệp vụ.
- 8: WBS 2.2 Phân tích use case & yêu cầu hệ thống / Mô tả/đầu ra: Actor, use case, FR/NFR, quy tắc dữ liệu / Logic nguồn workbook: Sau 2.1. Trong file MS Project, Gate cuối phase được thêm để kiểm soát milestone nhưng không làm đổi ngày baseline. / PERT: MO=10.00; ML=16.00; MP=23.00; EST=16.17; Effort chốt +10%=17.78 ngày công. / Duration baseline=17 ngày lịch; Work được quản lý riêng theo effort. / Người phụ trách chính: Nguyễn Trọng Hiếu. Resource Assignment có thể gồm hỗ trợ chéo để bảo đảm không quá tải nhưng tổng effort từng thành viên vẫn khớp workbook. / Chi phí nhân công: 23,294,909 VND. Fixed Cost phi nhân công: 20,000,000 VND. Chi khác 20,0 tr.đ: khảo sát bổ sung 10,0 + hỗ trợ mô hình hóa use case/SRS 10,0. / Risk IDs: R1,R3 / Tiêu chí/evidence: Actor/use case/FR/NFR/quy tắc dữ liệu đủ cho luồng cốt lõi. / Deliverable / Đầu ra: Actor, use case, FR/NFR, quy tắc dữ liệu / Tiêu chí nghiệm thu / Evidence: Actor/use case/FR/NFR/quy tắc dữ liệu đủ cho luồng cốt lõi.
- 9: WBS 2.3 Hoàn thiện SRS & ma trận truy vết / Mô tả/đầu ra: SRS, RTM, baseline yêu cầu / Logic nguồn workbook: Sau 2.2. Trong file MS Project, Gate cuối phase được thêm để kiểm soát milestone nhưng không làm đổi ngày baseline. / PERT: MO=3.00; ML=4.00; MP=6.00; EST=4.17; Effort chốt +10%=4.58 ngày công. / Duration baseline=4 ngày lịch; Work được quản lý riêng theo effort. / Người phụ trách chính: Hoàng Đàm Khánh. Resource Assignment có thể gồm hỗ trợ chéo để bảo đảm không quá tải nhưng tổng effort từng thành viên vẫn khớp workbook. / Chi phí nhân công: 6,003,842 VND. Fixed Cost phi nhân công: 25,000,000 VND. Chi khác 25,0 tr.đ: hỗ trợ SRS/RTM 10,0 + hoàn thiện/in baseline yêu cầu 15,0. / Risk IDs: R1,R5 / Tiêu chí/evidence: 100% yêu cầu baseline có mã và liên kết use case/test case trong RTM. / Deliverable / Đầu ra: SRS, RTM, baseline yêu cầu / Tiêu chí nghiệm thu / Evidence: 100% yêu cầu baseline có mã và liên kết use case/test case trong RTM.
- 10: Milestone kiểm soát cuối giai đoạn Analysis. / Gate Analysis: SRS/RTM baseline; 100% yêu cầu có mã và truy vết. / Budget dự phòng rủi ro tại gate: 5,000,000 VND. Đây là cost reserve trong baseline, không mặc định là chi phí thực tế đã phát sinh. / Chỉ chuyển sang phase kế tiếp khi deliverable tối thiểu được review và có trạng thái baseline. / Deliverable / Đầu ra: Milestone review / phê duyệt phase / Tiêu chí nghiệm thu / Evidence: Gate Analysis: SRS/RTM baseline; 100% yêu cầu có mã và truy vết.
- 11: Giai đoạn 3 Design / Baseline: 24/10/2026 20/11/2026 (28 ngày lịch). / Đầu ra bắt buộc: Kiến trúc, ERD/CSDL, API, prototype, đặc tả tích hợp mock / Effort: 30.62 ngày công; Cost baseline: 172,105,668 VND. / Dự phòng rủi ro 7,000,000 VND được tách tại Gate 3 và chỉ sử dụng khi được PM/nhóm phê duyệt. / Gate Design: kiến trúc, ERD/CSDL, API và prototype được chốt trước Development. / Deliverable / Đầu ra: Kiến trúc, ERD/CSDL, API, prototype, đặc tả tích hợp mock / Tiêu chí nghiệm thu / Evidence: Gate Design: kiến trúc, ERD/CSDL, API và prototype được chốt trước Development.
- 12: WBS 3.1 Thiết kế kiến trúc & API / Mô tả/đầu ra: Kiến trúc hệ thống, API chính / Logic nguồn workbook: Sau 2.3. Trong file MS Project, Gate cuối phase được thêm để kiểm soát milestone nhưng không làm đổi ngày baseline. / PERT: MO=4.00; ML=6.00; MP=10.00; EST=6.33; Effort chốt +10%=6.97 ngày công. / Duration baseline=8 ngày lịch; Work được quản lý riêng theo effort. / Người phụ trách chính: Nguyễn Trọng Hiếu. Resource Assignment có thể gồm hỗ trợ chéo để bảo đảm không quá tải nhưng tổng effort từng thành viên vẫn khớp workbook. / Chi phí nhân công: 9,125,841 VND. Fixed Cost phi nhân công: 35,000,000 VND. 35,0 tr.đ: Cloud/VPS thiết kế 30,0 + rà soát kiến trúc/CSDL/prototype 5,0. / Risk IDs: R3 / Tiêu chí/evidence: Kiến trúc/API được review; ranh giới module và xử lý lỗi rõ. / Deliverable / Đầu ra: Kiến trúc hệ thống, API chính / Tiêu chí nghiệm thu / Evidence: Kiến trúc/API được review; ranh giới module và xử lý lỗi rõ.
- 13: WBS 3.2 Thiết kế CSDL, trạng thái & tích hợp nghiệp vụ / Mô tả/đầu ra: ERD/CSDL, trạng thái, OTP/QRCOD/phí / Logic nguồn workbook: Song song 3.1. Trong file MS Project, Gate cuối phase được thêm để kiểm soát milestone nhưng không làm đổi ngày baseline. / PERT: MO=6.00; ML=11.00; MP=19.00; EST=11.50; Effort chốt +10%=12.65 ngày công. / Duration baseline=13 ngày lịch; Work được quản lý riêng theo effort. / Người phụ trách chính: Phạm Đức Anh. Resource Assignment có thể gồm hỗ trợ chéo để bảo đảm không quá tải nhưng tổng effort từng thành viên vẫn khớp workbook. / Chi phí nhân công: 16,570,605 VND. Fixed Cost phi nhân công: 35,000,000 VND. 35,0 tr.đ: dịch vụ CSDL/API mock 30,0 + rà soát thiết kế 5,0. / Risk IDs: R3,R4,R5 / Tiêu chí/evidence: ERD/trạng thái đảm bảo không cấp trùng ngăn, idempotency thanh toán và audit. / Deliverable / Đầu ra: ERD/CSDL, trạng thái, OTP/QR–COD/phí / Tiêu chí nghiệm thu / Evidence: ERD/trạng thái đảm bảo không cấp trùng ngăn, idempotency thanh toán và audit.
- 14: WBS 3.3 Thiết kế prototype & chốt baseline / Mô tả/đầu ra: Prototype, design baseline / Logic nguồn workbook: Sau 3.1, 3.2. Trong file MS Project, Gate cuối phase được thêm để kiểm soát milestone nhưng không làm đổi ngày baseline. / PERT: MO=5.00; ML=10.00; MP=15.00; EST=10.00; Effort chốt +10%=11.00 ngày công. / Duration baseline=15 ngày lịch; Work được quản lý riêng theo effort. / Người phụ trách chính: Nguyễn Hồng Dương. Resource Assignment có thể gồm hỗ trợ chéo để bảo đảm không quá tải nhưng tổng effort từng thành viên vẫn khớp workbook. / Chi phí nhân công: 14,409,222 VND. Fixed Cost phi nhân công: 55,000,000 VND. 55,0 tr.đ: UX/UI & prototype 50,0 + rà soát thiết kế 5,0. / Risk IDs: R1,R5 / Tiêu chí/evidence: Prototype được review theo SRS; design baseline sẵn sàng phát triển. / Deliverable / Đầu ra: Prototype, design baseline / Tiêu chí nghiệm thu / Evidence: Prototype được review theo SRS; design baseline sẵn sàng phát triển.
- 15: Milestone kiểm soát cuối giai đoạn Design. / Gate Design: kiến trúc, ERD/CSDL, API và prototype được chốt trước Development. / Budget dự phòng rủi ro tại gate: 7,000,000 VND. Đây là cost reserve trong baseline, không mặc định là chi phí thực tế đã phát sinh. / Chỉ chuyển sang phase kế tiếp khi deliverable tối thiểu được review và có trạng thái baseline. / Deliverable / Đầu ra: Milestone review / phê duyệt phase / Tiêu chí nghiệm thu / Evidence: Gate Design: kiến trúc, ERD/CSDL, API và prototype được chốt trước Development.
- 16: Giai đoạn 4 Development / Baseline: 21/11/2026 15/01/2027 (56 ngày lịch). / Đầu ra bắt buộc: Source code, CSDL/dữ liệu demo và các module chạy được / Effort: 57.38 ngày công; Cost baseline: 330,168,108 VND. / Dự phòng rủi ro 15,000,000 VND được tách tại Gate 4 và chỉ sử dụng khi được PM/nhóm phê duyệt. / Gate Development: integrated build chạy được luồng chính và sẵn sàng kiểm thử hệ thống. / Deliverable / Đầu ra: Source code, CSDL/dữ liệu demo và các module chạy được / Tiêu chí nghiệm thu / Evidence: Gate Development: integrated build chạy được luồng chính và sẵn sàng kiểm thử hệ thống.
- 17: WBS 4.1 Thiết lập nền tảng phát triển & dữ liệu / Mô tả/đầu ra: Repo, CSDL, dữ liệu mẫu, RBAC, trạm/ngăn / Logic nguồn workbook: Sau 3.3. Trong file MS Project, Gate cuối phase được thêm để kiểm soát milestone nhưng không làm đổi ngày baseline. / PERT: MO=7.00; ML=13.00; MP=20.00; EST=13.17; Effort chốt +10%=14.48 ngày công. / Duration baseline=15 ngày lịch; Work được quản lý riêng theo effort. / Người phụ trách chính: Phạm Đức Anh. Resource Assignment có thể gồm hỗ trợ chéo để bảo đảm không quá tải nhưng tổng effort từng thành viên vẫn khớp workbook. / Chi phí nhân công: 18,972,142 VND. Fixed Cost phi nhân công: 122,500,000 VND. 122,5 tr.đ: mô phỏng IoT/ngăn tủ 80,0 + mạng/lưu trữ 30,0 + hỗ trợ tích hợp 12,5. / Risk IDs: R4,R5 / Tiêu chí/evidence: Repo/migration/dữ liệu mẫu/RBAC/trạm-ngăn chạy smoke test. / Deliverable / Đầu ra: Repo, CSDL, dữ liệu mẫu, RBAC, trạm/ngăn / Tiêu chí nghiệm thu / Evidence: Repo/migration/dữ liệu mẫu/RBAC/trạm-ngăn chạy smoke test.
- 18: WBS 4.2 Phát triển luồng gửi nhận hàng / Mô tả/đầu ra: Luồng gửi/nhận, OTP/QR, mở ngăn / Logic nguồn workbook: Sau 4.1. Trong file MS Project, Gate cuối phase được thêm để kiểm soát milestone nhưng không làm đổi ngày baseline. / PERT: MO=6.00; ML=10.00; MP=16.00; EST=10.33; Effort chốt +10%=11.37 ngày công. / Duration baseline=14 ngày lịch; Work được quản lý riêng theo effort. / Người phụ trách chính: Nguyễn Trọng Hiếu. Resource Assignment có thể gồm hỗ trợ chéo để bảo đảm không quá tải nhưng tổng effort từng thành viên vẫn khớp workbook. / Chi phí nhân công: 14,889,529 VND. Fixed Cost phi nhân công: 52,500,000 VND. 52,5 tr.đ: thiết bị QR/điện thoại 40,0 + hỗ trợ tích hợp 12,5. / Risk IDs: R3 / Tiêu chí/evidence: Luồng gửinhận, OTP/QR và mở ngăn chạy end-to-end trong demo. / Deliverable / Đầu ra: Luồng gửi/nhận, OTP/QR, mở ngăn / Tiêu chí nghiệm thu / Evidence: Luồng gửi–nhận, OTP/QR và mở ngăn chạy end-to-end trong demo.
- 19: WBS 4.3 Phát triển thuê ngăn, COD/phí & thanh toán / Mô tả/đầu ra: Thuê ngăn, quá hạn, payment mock, đối soát / Logic nguồn workbook: Sau 4.1. Trong file MS Project, Gate cuối phase được thêm để kiểm soát milestone nhưng không làm đổi ngày baseline. / PERT: MO=6.00; ML=12.00; MP=20.00; EST=12.33; Effort chốt +10%=13.57 ngày công. / Duration baseline=17 ngày lịch; Work được quản lý riêng theo effort. / Người phụ trách chính: Nguyễn Hồng Dương. Resource Assignment có thể gồm hỗ trợ chéo để bảo đảm không quá tải nhưng tổng effort từng thành viên vẫn khớp workbook. / Chi phí nhân công: 17,771,374 VND. Fixed Cost phi nhân công: 12,500,000 VND. 12,5 tr.đ: phần hỗ trợ tích hợp/mock dịch vụ. / Risk IDs: R3,R4,R5 / Tiêu chí/evidence: Thuê ngăn/COD/phí/payment mock/đối soát chạy đúng; không ghi nhận lặp. / Deliverable / Đầu ra: Thuê ngăn, quá hạn, payment mock, đối soát / Tiêu chí nghiệm thu / Evidence: Thuê ngăn/COD/phí/payment mock/đối soát chạy đúng; không ghi nhận lặp.
- 20: WBS 4.4 Thông báo, sự cố, báo cáo & tích hợp / Mô tả/đầu ra: Notification, audit log, báo cáo, integrated build / Logic nguồn workbook: Sau 4.2, 4.3. Trong file MS Project, Gate cuối phase được thêm để kiểm soát milestone nhưng không làm đổi ngày baseline. / PERT: MO=9.00; ML=16.00; MP=25.00; EST=16.33; Effort chốt +10%=17.97 ngày công. / Duration baseline=24 ngày lịch; Work được quản lý riêng theo effort. / Người phụ trách chính: Hoàng Đàm Khánh. Resource Assignment có thể gồm hỗ trợ chéo để bảo đảm không quá tải nhưng tổng effort từng thành viên vẫn khớp workbook. / Chi phí nhân công: 23,535,062 VND. Fixed Cost phi nhân công: 52,500,000 VND. 52,5 tr.đ: CI/CD/monitoring 20,0 + hỗ trợ tích hợp 12,5 + code review/tài liệu 20,0. / Risk IDs: R3,R4,R5,R7 / Tiêu chí/evidence: Integrated build ổn định; notification/audit/report và code review hoàn tất. / Deliverable / Đầu ra: Notification, audit log, báo cáo, integrated build / Tiêu chí nghiệm thu / Evidence: Integrated build ổn định; notification/audit/report và code review hoàn tất.
- 21: Milestone kiểm soát cuối giai đoạn Development. / Gate Development: integrated build chạy được luồng chính và sẵn sàng kiểm thử hệ thống. / Budget dự phòng rủi ro tại gate: 15,000,000 VND. Đây là cost reserve trong baseline, không mặc định là chi phí thực tế đã phát sinh. / Chỉ chuyển sang phase kế tiếp khi deliverable tối thiểu được review và có trạng thái baseline. / Deliverable / Đầu ra: Milestone review / phê duyệt phase / Tiêu chí nghiệm thu / Evidence: Gate Development: integrated build chạy được luồng chính và sẵn sàng kiểm thử hệ thống.
- 22: Giai đoạn 5 Testing / Baseline: 16/01/2027 05/02/2027 (21 ngày lịch). / Đầu ra bắt buộc: Test Plan, test case/evidence, defect log và báo cáo kiểm thử 4 mức / Effort: 30.62 ngày công; Cost baseline: 190,105,668 VND. / Dự phòng rủi ro 10,000,000 VND được tách tại Gate 5 và chỉ sử dụng khi được PM/nhóm phê duyệt. / Gate Testing: System/UAT pass ≥95%, không còn lỗi Critical/High mở tại điểm nghiệm thu. / Deliverable / Đầu ra: Test Plan, test case/evidence, defect log và báo cáo kiểm thử 4 mức / Tiêu chí nghiệm thu / Evidence: Gate Testing: System/UAT pass ≥95%, không còn lỗi Critical/High mở tại điểm nghiệm thu.
- 23: WBS 5.1 Chuẩn bị kiểm thử & Unit Testing / Mô tả/đầu ra: Test Plan, test data, Unit evidence / Logic nguồn workbook: Sau 4.4. Trong file MS Project, Gate cuối phase được thêm để kiểm soát milestone nhưng không làm đổi ngày baseline. / PERT: MO=3.00; ML=6.00; MP=9.00; EST=6.00; Effort chốt +10%=6.60 ngày công. / Duration baseline=4 ngày lịch; Work được quản lý riêng theo effort. / Người phụ trách chính: Nguyễn Trọng Hiếu. Resource Assignment có thể gồm hỗ trợ chéo để bảo đảm không quá tải nhưng tổng effort từng thành viên vẫn khớp workbook. / Chi phí nhân công: 8,645,533 VND. Fixed Cost phi nhân công: 55,000,000 VND. 55,0 tr.đ: công cụ Unit/Integration 20,0 + kiểm thử chuyên sâu 35,0. / Risk IDs: R7 / Tiêu chí/evidence: Test Plan, test data, traceability và Unit evidence đầy đủ. / Deliverable / Đầu ra: Test Plan, test data, Unit evidence / Tiêu chí nghiệm thu / Evidence: Test Plan, test data, traceability và Unit evidence đầy đủ.
- 24: WBS 5.2 Integration/System/NFR & Acceptance Testing / Mô tả/đầu ra: Integration/System/UAT evidence / Logic nguồn workbook: Sau 5.1. Trong file MS Project, Gate cuối phase được thêm để kiểm soát milestone nhưng không làm đổi ngày baseline. / PERT: MO=8.00; ML=14.00; MP=24.00; EST=14.67; Effort chốt +10%=16.13 ngày công. / Duration baseline=12 ngày lịch; Work được quản lý riêng theo effort. / Người phụ trách chính: Phạm Đức Anh. Resource Assignment có thể gồm hỗ trợ chéo để bảo đảm không quá tải nhưng tổng effort từng thành viên vẫn khớp workbook. / Chi phí nhân công: 21,133,525 VND. Fixed Cost phi nhân công: 85,000,000 VND. 85,0 tr.đ: bảo mật/hiệu năng 20,0 + kiểm thử chuyên sâu 35,0 + UAT/test data 30,0. / Risk IDs: R3,R4,R7 / Tiêu chí/evidence: System/UAT pass ≥95%; 100% luồng nghiệp vụ trọng yếu đạt UAT; không còn Critical/High mở. / Deliverable / Đầu ra: Integration/System/UAT evidence / Tiêu chí nghiệm thu / Evidence: System/UAT pass ≥95%; 100% luồng nghiệp vụ trọng yếu đạt UAT; không còn Critical/High mở.
- 25: WBS 5.3 Sửa lỗi, regression & báo cáo kiểm thử / Mô tả/đầu ra: Defect log, regression, báo cáo chất lượng / Logic nguồn workbook: Sau 5.2. Trong file MS Project, Gate cuối phase được thêm để kiểm soát milestone nhưng không làm đổi ngày baseline. / PERT: MO=4.00; ML=7.00; MP=11.00; EST=7.17; Effort chốt +10%=7.88 ngày công. / Duration baseline=5 ngày lịch; Work được quản lý riêng theo effort. / Người phụ trách chính: Nguyễn Hồng Dương. Resource Assignment có thể gồm hỗ trợ chéo để bảo đảm không quá tải nhưng tổng effort từng thành viên vẫn khớp workbook. / Chi phí nhân công: 10,326,609 VND. Fixed Cost phi nhân công: 0 VND. Không gắn chi phí phi nhân công trực tiếp; dự phòng Testing tách tại Gate 5. / Risk IDs: R5,R7 / Tiêu chí/evidence: Regression hoàn tất; defect log và quality report được chốt. / Deliverable / Đầu ra: Defect log, regression, báo cáo chất lượng / Tiêu chí nghiệm thu / Evidence: Regression hoàn tất; defect log và quality report được chốt.
- 26: Milestone kiểm soát cuối giai đoạn Testing. / Gate Testing: System/UAT pass ≥95%, không còn lỗi Critical/High mở tại điểm nghiệm thu. / Budget dự phòng rủi ro tại gate: 10,000,000 VND. Đây là cost reserve trong baseline, không mặc định là chi phí thực tế đã phát sinh. / Chỉ chuyển sang phase kế tiếp khi deliverable tối thiểu được review và có trạng thái baseline. / Deliverable / Đầu ra: Milestone review / phê duyệt phase / Tiêu chí nghiệm thu / Evidence: Gate Testing: System/UAT pass ≥95%, không còn lỗi Critical/High mở tại điểm nghiệm thu.

| ID | WBS | Task | Type | Duration | Start | Finish | Predecessors | Baseline start | Baseline finish | Baseline duration | Total slack | Deadline | Resources | Work | Cost | Baseline cost | Giai đoạn | Deliverable / Đầu ra | Owner / Phụ trách chính | WBS ID | Logic phụ thuộc nguồn | Risk IDs |
| --- | --- | --- | --- | --- | --- | --- | --- | --- | --- | --- | --- | --- | --- | --- | --- | --- | --- | --- | --- | --- | --- | --- |
| 27 | 6 | **DEPLOYMENT – TRIỂN KHAI DEMO, NGHIỆM THU & ĐÓNG DỰ ÁN** |  | 21d | 2027-02-06 | 2027-02-26 |  | 2027-02-06 | 2027-02-26 | 21d | 0d |  |  | 134.93h | 23,124,140.25 | 1,250,941.4 | Deployment | Bản demo, HDSD, dữ liệu mẫu, nghiệm thu, báo cáo và slide | Hoàng Đàm Khánh |  |  |  |
| 28 | 6.1 | Đóng gói, triển khai demo & smoke test |  | 12d | 2027-02-06 | 2027-02-17 | 26 | 2027-02-06 | 2027-02-17 | 12d | 0d |  | Hoàng Đàm Khánh [58.1%] | 55.73h | 9,542,507.21 | 507,925.08 | 6. Deployment | Bản demo triển khai, smoke test | Hoàng Đàm Khánh | 6.1 | Sau 5.3 | R2,R5,R8 |
| 29 | 6.2 | Hoàn thiện hướng dẫn & kịch bản trình bày |  | 9d | 2027-02-06 | 2027-02-14 | 26 | 2027-02-06 | 2027-02-14 | 9d | 3d |  | Hoàng Đàm Khánh [41.9%]; Phạm Đức Anh [19.2%] | 44h | 7,521,277.62 | 388,712.78 | 6. Deployment | HDSD, kịch bản demo, slide | Hoàng Đàm Khánh | 6.2 | Song song 6.1 | R6 |
| 30 | 6.3 | Nghiệm thu, bàn giao & đóng dự án |  | 9d | 2027-02-18 | 2027-02-26 | 28, 29 | 2027-02-18 | 2027-02-26 | 9d | 0d |  | Hoàng Đàm Khánh [48.9%] | 35.2h | 5,980,355.42 | 274,303.55 | 6. Deployment | Biên bản nghiệm thu, báo cáo cuối, lessons learned | Hoàng Đàm Khánh | 6.3 | Sau 6.1, 6.2 | R2,R5,R8 |
| 31 | GATE-6 | Gate 6 – Review/Phê duyệt kết thúc Deployment | milestone | 0d | 2027-02-26 | 2027-02-26 | 30 | 2027-02-26 | 2027-02-26 | 0d | 0d | 2027-02-26 |  |  | 80,000 | 80,000 | Deployment | Milestone review / phê duyệt phase | Hoàng Đàm Khánh | GATE-6 | Sau 6.3 | R1–R8 (review theo phase) |

Notes:
- 27: Giai đoạn 6 Deployment / Baseline: 06/02/2027 26/02/2027 (21 ngày lịch). / Đầu ra bắt buộc: Bản demo, HDSD, dữ liệu mẫu, nghiệm thu, báo cáo và slide / Effort: 16.87 ngày công; Cost baseline: 125,094,140 VND. / Dự phòng rủi ro 8,000,000 VND được tách tại Gate 6 và chỉ sử dụng khi được PM/nhóm phê duyệt. / Gate Deployment: demo + HDSD + smoke test + biên bản nghiệm thu + lessons learned/báo cáo cuối. / Tiêu chí nghiệm thu / Evidence: Gate Deployment: demo + HDSD + smoke test + biên bản nghiệm thu + lessons learned/báo cáo cuối.
- 28: WBS 6.1 Đóng gói, triển khai demo & smoke test / Mô tả/đầu ra: Bản demo triển khai, smoke test / Logic nguồn workbook: Sau 5.3. Trong file MS Project, Gate cuối phase được thêm để kiểm soát milestone nhưng không làm đổi ngày baseline. / PERT: MO=3.00; ML=6.00; MP=11.00; EST=6.33; Effort chốt +10%=6.97 ngày công. / Duration baseline=12 ngày lịch; Work được quản lý riêng theo effort. / Người phụ trách chính: Hoàng Đàm Khánh. Resource Assignment có thể gồm hỗ trợ chéo để bảo đảm không quá tải nhưng tổng effort từng thành viên vẫn khớp workbook. / Chi phí nhân công: 9,125,841 VND. Fixed Cost phi nhân công: 41,666,667 VND. 41.666.667 đ: Cloud/VPS demo/backup 30,0 tr.đ + phần tổ chức demo/nghiệm thu 11.666.667 đ. / Risk IDs: R2,R5,R8 / Tiêu chí/evidence: Deploy demo thành công; backup/config và smoke test đạt. / Tiêu chí nghiệm thu / Evidence: Deploy demo thành công; backup/config và smoke test đạt.
- 29: WBS 6.2 Hoàn thiện hướng dẫn & kịch bản trình bày / Mô tả/đầu ra: HDSD, kịch bản demo, slide / Logic nguồn workbook: Song song 6.1. Trong file MS Project, Gate cuối phase được thêm để kiểm soát milestone nhưng không làm đổi ngày baseline. / PERT: MO=3.00; ML=5.00; MP=7.00; EST=5.00; Effort chốt +10%=5.50 ngày công. / Duration baseline=9 ngày lịch; Work được quản lý riêng theo effort. / Người phụ trách chính: Hoàng Đàm Khánh. Resource Assignment có thể gồm hỗ trợ chéo để bảo đảm không quá tải nhưng tổng effort từng thành viên vẫn khớp workbook. / Chi phí nhân công: 7,204,611 VND. Fixed Cost phi nhân công: 31,666,667 VND. 31.666.667 đ: đào tạo/HDSD 20,0 tr.đ + phần tổ chức demo/nghiệm thu 11.666.667 đ. / Risk IDs: R6 / Tiêu chí/evidence: HDSD, kịch bản demo, dữ liệu minh họa và slide hoàn chỉnh. / Tiêu chí nghiệm thu / Evidence: HDSD, kịch bản demo, dữ liệu minh họa và slide hoàn chỉnh.
- 30: WBS 6.3 Nghiệm thu, bàn giao & đóng dự án / Mô tả/đầu ra: Biên bản nghiệm thu, báo cáo cuối, lessons learned / Logic nguồn workbook: Sau 6.1, 6.2. Trong file MS Project, Gate cuối phase được thêm để kiểm soát milestone nhưng không làm đổi ngày baseline. / PERT: MO=2.00; ML=4.00; MP=6.00; EST=4.00; Effort chốt +10%=4.40 ngày công. / Duration baseline=9 ngày lịch; Work được quản lý riêng theo effort. / Người phụ trách chính: Hoàng Đàm Khánh. Resource Assignment có thể gồm hỗ trợ chéo để bảo đảm không quá tải nhưng tổng effort từng thành viên vẫn khớp workbook. / Chi phí nhân công: 5,763,689 VND. Fixed Cost phi nhân công: 21,666,666 VND. 21.666.666 đ: đóng hồ sơ/in ấn 10,0 tr.đ + phần tổ chức demo/nghiệm thu 11.666.666 đ. / Risk IDs: R2,R5,R8 / Tiêu chí/evidence: Đủ biên bản nghiệm thu, báo cáo cuối, lessons learned và lưu hồ sơ. / Tiêu chí nghiệm thu / Evidence: Đủ biên bản nghiệm thu, báo cáo cuối, lessons learned và lưu hồ sơ.
- 31: Milestone kiểm soát cuối giai đoạn Deployment. / Gate Deployment: demo + HDSD + smoke test + biên bản nghiệm thu + lessons learned/báo cáo cuối. / Budget dự phòng rủi ro tại gate: 8,000,000 VND. Đây là cost reserve trong baseline, không mặc định là chi phí thực tế đã phát sinh. / Chỉ chuyển sang phase kế tiếp khi deliverable tối thiểu được review và có trạng thái baseline. / Tiêu chí nghiệm thu / Evidence: Gate Deployment: demo + HDSD + smoke test + biên bản nghiệm thu + lessons learned/báo cáo cuối.
